# 0580-Security Technology Salutation after eliminating Passenger Checking Roles

Schedule from Primavera P6, 2026-11-01 to 2029-10-31, data date 2026-11-01, costs in SAR.
Must finish by 2029-10-31

## Calendars

- KSA Sun-Thu 8h (official holidays): Mon-Thu 08:00-12:00, 13:00-17:00; Fri-Sat off; Sun 08:00-12:00, 13:00-17:00. Exceptions (off unless hours are given): 2027-02-22, 2027-03-07 to 2027-03-11, 2027-05-16 to 2027-05-20, 2027-09-23, 2028-02-20 to 2028-02-24, 2028-04-30 to 2028-05-04, 2029-02-11 to 2029-02-15, 2029-02-22, 2029-04-22 to 2029-04-26, 2029-09-23.

## Resources

| Resource | Group | Unit | Rate |
| --- | --- | --- | --- |
| Contract cost (BOQ x payment milestones) | material | SAR |  |
| Progress weight (fair EPC distribution, SAR value) | material | SAR | 1 |

## Schedule

| ID | WBS | Activity | Type | Duration | Start | Finish | Predecessors | Total float | Free float | Resources | Cost | EPC phase | Area | Station | Railway | Discipline | Responsibility | Payment milestone | Design stage | Submittal or approval | Priority | Programme phase |
| --- | --- | --- | --- | --- | --- | --- | --- | --- | --- | --- | --- | --- | --- | --- | --- | --- | --- | --- | --- | --- | --- | --- |
|  | PM | **Project Management and Mobilization** |  |  | 2026-11-01 | 2029-10-31 |  |  |  |  |  |  |  |  |  |  |  |  |  |  |  |  |
|  | MOB | **Mobilization and baseline programme** |  |  | 2026-11-01 | 2027-03-21 |  |  |  |  |  |  |  |  |  |  |  |  |  |  |  |  |
| PRJ-A1010 |  | Performance security, insurance and key personnel approval |  | 10d | 2026-11-01 | 2026-11-12 | PRJ-M0000 | 56d | 20d | Contract cost (BOQ x payment milestones) [1859999 SAR]; Progress weight (fair EPC distribution, SAR value) [248000 SAR] | 248,000 | PMG | PRJ | PRJ | ALL | PM | ETECHS | MS1 | - | - | Standard | MOB |
| PRJ-A1020 |  | Initial baseline programme (Primavera) covering mobilization and survey |  | 7d | 2026-11-01 | 2026-11-09 | PRJ-M0000 | 44d | 0d | Contract cost (BOQ x payment milestones) [1239999 SAR]; Progress weight (fair EPC distribution, SAR value) [124000 SAR] | 124,000 | PMG | PRJ | PRJ | ALL | PM | ETECHS | MS1 | - | - | Standard | MOB |
| PRJ-A1040 |  | Mobilization: site establishment, offices, personnel and tools |  | 25d | 2026-11-08 | 2026-12-10 | PRJ-M0000 FS+5d | 36d | 0d | Contract cost (BOQ x payment milestones) [5579999 SAR]; Progress weight (fair EPC distribution, SAR value) [496000 SAR] | 496,000 | PMG | PRJ | PRJ | ALL | PM | ETECHS | MS1 | - | - | Standard | MOB |
| PRJ-A1050 |  | Mobilization submittals: QC programme and ITP, HSE, security, procurement and shipping plan |  | 20d | 2026-11-08 | 2026-12-03 | PRJ-M0000 FS+5d | 41d | 5d | Contract cost (BOQ x payment milestones) [3719999 SAR]; Progress weight (fair EPC distribution, SAR value) [372000 SAR] | 372,000 | PMG | PRJ | PRJ | ALL | PM | ETECHS | MS1 | - | Submittal | Standard | MOB |
| PRJ-A1030 |  | SAR review and approval of initial baseline |  | 15d | 2026-11-10 | 2026-11-30 | PRJ-A1020 | 44d | 8d | Contract cost (BOQ x payment milestones); Progress weight (fair EPC distribution, SAR value) [124000 SAR] | 124,000 | PMG | PRJ | PRJ | ALL | PM | SAR | MS1 | - | Approval | Standard | MOB |
| PRJ-A2010 |  | Detailed baseline programme (within 21 days after survey) |  | 15d | 2027-01-31 | 2027-02-18 | NRY-E1010, HMK-E1010, ERY-E1010 | 21d | 0d | Contract cost (BOQ x payment milestones); Progress weight (fair EPC distribution, SAR value) [186000 SAR] | 186,000 | PMG | PRJ | PRJ | ALL | PM | ETECHS | - | - | Submittal | Standard | PMG |
| PRJ-A2020 |  | SAR review and approval of detailed baseline |  | 15d | 2027-02-21 | 2027-03-21 | PRJ-A2010 | 21d | 0d | Contract cost (BOQ x payment milestones); Progress weight (fair EPC distribution, SAR value) [124000 SAR] | 124,000 | PMG | PRJ | PRJ | ALL | PM | SAR | - | - | Approval | Standard | PMG |
|  | MST | **Contract milestones** |  |  | 2026-11-01 | 2029-10-31 |  |  |  |  |  |  |  |  |  |  |  |  |  |  |  |  |
| PRJ-M0000 |  | Notice to Proceed - project start (1 Nov 2026, editable) | milestone | 0d | 2026-11-01 | 2026-11-01 |  | 0d |  |  |  | MS | PRJ | PRJ | ALL | PM | SAR | - | - | - | Standard | MS |
| PRJ-M1100 |  | MS1 Mobilization complete (payment milestone 20%) | milestone | 0d | 2026-12-10 | 2026-12-10 | PRJ-A1010, PRJ-A1030, PRJ-A1040, PRJ-A1050 | 36d | 15d |  |  | MS | PRJ | PRJ | ALL | PM | SAR | MS1 | - | - | Standard | MS |
| PRJ-M1150 |  | Mobilization and survey permits complete (end of month 2) | milestone | 0d | 2026-12-31 | 2026-12-31 | PRJ-M1100, PRJ-M0000 FS+45d, NRY-E1005, HMK-E1005, ERY-E1005 | 21d | 0d |  |  | MS | PRJ | PRJ | ALL | PM | ETECHS | - | - | - | Standard | MS |
| PRJ-M2100 |  | Detailed baseline programme approved | milestone | 0d | 2027-03-21 | 2027-03-21 | PRJ-A2020 | 21d | 0d |  |  | MS | PRJ | PRJ | ALL | PM | SAR | - | - | - | Standard | MS |
| PRJ-M1250 |  | Design complete - priority stations (end of month 6) | milestone | 0d | 2027-04-29 | 2027-04-29 | NRY-E1100, NRY-E1120, HMK-E1100, HMK-E1120, ERY-E1100, ERY-E1120, NRY-POC4100 | 626d |  |  |  | MS | PRJ | PRJ | ALL | PM | SAR | - | - | - | Standard | MS |
| PRJ-MX99 |  | Contract completion - end of 36-month term | milestone | 0d | 2029-10-31 | 2029-10-31 | PRJ-C1010, PRJ-M1250, PRJ-M0000 FS+750d | 0d |  |  |  | MS | PRJ | PRJ | ALL | PM | SAR | - | - | - | Standard | MS |
|  | CLO | **Closeout** |  |  | 2029-09-18 | 2029-10-02 |  |  |  |  |  |  |  |  |  |  |  |  |  |  |  |  |
| PRJ-C1010 |  | Contract closeout pack and handover documentation |  | 10d | 2029-09-18 | 2029-10-02 | NRY-T3100, HMK-T3100, ERY-T3100, HJD-T3100, EDM-T3100, NQS-T3100, EHF-T3100, NMJ-T3100, HKA-T3100, HMD-T3100, EAB-T3100, NHL-T3100, NJF-T3100, NQR-T3100 | 21d |  | Contract cost (BOQ x payment milestones); Progress weight (fair EPC distribution, SAR value) [805380 SAR] | 805,380 | PMG | PRJ | PRJ | ALL | PM | ETECHS | - | - | Submittal | Standard | PMG |
|  | ENG | **Engineering** |  |  | 2026-11-01 | 2029-08-27 |  |  |  |  |  |  |  |  |  |  |  |  |  |  |  |  |
|  | NRY | **Riyadh (Thumamah) (NSR)** |  |  | 2026-11-01 | 2028-01-17 |  |  |  |  |  |  |  |  |  |  |  |  |  |  |  |  |
| NRY-E1200 |  | MS2 Engineering submittal complete (10%) - Riyadh (Thumamah) | milestone | 0d | 2027-04-08 | 2027-04-08 | NRY-E1090, NRY-E1110, NRY-POC3020 | 435d | 15d |  |  | MS | NSR | NRY | NSR | DOCS | ETECHS | MS2 | - | - | Priority 1 | MS |
| NRY-POC4100 |  | POC approved - Riyadh (Thumamah) | milestone | 0d | 2027-04-25 | 2027-04-25 | NRY-POC4020 | 424d | 4d |  |  | MS | NSR | NRY | NSR | DOCS | SAR | - | POC | - | Priority 1 | POC |
| NRY-E1210 |  | MS3 Engineering approved by SAR (10%) - Riyadh (Thumamah) | milestone | 0d | 2027-04-29 | 2027-04-29 | NRY-E1020, NRY-E1040, NRY-E1060, NRY-E1080, NRY-E1100, NRY-E1120, NRY-E1200, NRY-POC4100 | 420d | 0d |  |  | MS | NSR | NRY | NSR | DOCS | SAR | MS3 | - | - | Priority 1 | MS |
|  | SRV | **Site survey and as-found verification** |  |  | 2026-11-01 | 2027-02-04 |  |  |  |  |  |  |  |  |  |  |  |  |  |  |  |  |
|  | SUB | **Submittal** |  |  | 2027-01-03 | 2027-01-14 |  |  |  |  |  |  |  |  |  |  |  |  |  |  |  |  |
| NRY-E1010 |  | Survey: submittal of site survey and as-found report - Riyadh (Thumamah) |  | 10d | 2027-01-03 | 2027-01-14 | NRY-E1005, PRJ-M1150 | 31d | 0d | Contract cost (BOQ x payment milestones) [14445 SAR]; Progress weight (fair EPC distribution, SAR value) [11160 SAR] | 11,160 | ENG | NSR | NRY | NSR | DOCS | ETECHS | MS2 | Survey | Submittal | Priority 1 | DES |

| ID | WBS | Activity | Duration | Start | Finish | Predecessors | Total float | Free float | Resources | Cost | Area | Station | Railway | Priority | Responsibility | Design stage | Submittal or approval | EPC phase | Discipline | Programme phase | Payment milestone |
| --- | --- | --- | --- | --- | --- | --- | --- | --- | --- | --- | --- | --- | --- | --- | --- | --- | --- | --- | --- | --- | --- |
|  | APR | **Approval** |  | 2027-01-17 | 2027-02-04 |  |  |  |  |  |  |  |  |  |  |  |  |  |  |  |  |
| NRY-E1020 |  | Survey: SAR approval of survey report - Riyadh (Thumamah) | 15d | 2027-01-17 | 2027-02-04 | NRY-E1010 | 474d | 54d | Contract cost (BOQ x payment milestones) [14793 SAR]; Progress weight (fair EPC distribution, SAR value) [16740 SAR] | 16,740 | NSR | NRY | NSR | Priority 1 | SAR | Survey | Approval | ENG | DOCS | DES | MS3 |
|  | PRM | **Site access permit** |  | 2026-11-01 | 2026-12-31 |  |  |  |  |  |  |  |  |  |  |  |  |  |  |  |  |
| NRY-E1005 |  | Survey: site access permit - application and approval (two months) - Riyadh (Thumamah) | 45d | 2026-11-01 | 2026-12-31 | PRJ-M0000 | 21d | 0d | Contract cost (BOQ x payment milestones) [6962 SAR]; Progress weight (fair EPC distribution, SAR value) [8060 SAR] | 8,060 | NSR | NRY | NSR | Priority 1 | SAR | Survey | Approval | ENG | DOCS | MOB | MS2 |
|  | CNC | **Concept design** |  | 2027-01-17 | 2027-02-16 |  |  |  |  |  |  |  |  |  |  |  |  |  |  |  |  |
|  | SUB | **Submittal** |  | 2027-01-17 | 2027-01-26 |  |  |  |  |  |  |  |  |  |  |  |  |  |  |  |  |
| NRY-E1030 |  | Concept design: submittal - Riyadh (Thumamah) | 8d | 2027-01-17 | 2027-01-26 | NRY-E1010 | 420d | 0d | Contract cost (BOQ x payment milestones) [28891 SAR]; Progress weight (fair EPC distribution, SAR value) [12400 SAR] | 12,400 | NSR | NRY | NSR | Priority 1 | ETECHS | Concept | Submittal | ENG | DOCS | DES | MS2 |
|  | APR | **Approval** |  | 2027-01-27 | 2027-02-16 |  |  |  |  |  |  |  |  |  |  |  |  |  |  |  |  |
| NRY-E1040 |  | Concept design: SAR review and approval - Riyadh (Thumamah) | 15d | 2027-01-27 | 2027-02-16 | NRY-E1030 | 466d | 46d | Contract cost (BOQ x payment milestones) [29587 SAR]; Progress weight (fair EPC distribution, SAR value) [22940 SAR] | 22,940 | NSR | NRY | NSR | Priority 1 | SAR | Concept | Approval | ENG | DOCS | DES | MS3 |
|  | PRE | **Preliminary (schematic) design** |  | 2027-01-27 | 2027-03-16 |  |  |  |  |  |  |  |  |  |  |  |  |  |  |  |  |
|  | SUB | **Submittal** |  | 2027-01-27 | 2027-02-15 |  |  |  |  |  |  |  |  |  |  |  |  |  |  |  |  |
| NRY-E1050 |  | Preliminary design: submittal - Riyadh (Thumamah) | 14d | 2027-01-27 | 2027-02-15 | NRY-E1030 | 420d | 0d | Contract cost (BOQ x payment milestones) [57781 SAR]; Progress weight (fair EPC distribution, SAR value) [31000 SAR] | 31,000 | NSR | NRY | NSR | Priority 1 | ETECHS | Preliminary | Submittal | ENG | DOCS | DES | MS2 |
|  | APR | **Approval** |  | 2027-02-16 | 2027-03-16 |  |  |  |  |  |  |  |  |  |  |  |  |  |  |  |  |
| NRY-E1060 |  | Preliminary design: SAR review and approval - Riyadh (Thumamah) | 15d | 2027-02-16 | 2027-03-16 | NRY-E1050 | 452d | 32d | Contract cost (BOQ x payment milestones) [59173 SAR]; Progress weight (fair EPC distribution, SAR value) [32860 SAR] | 32,860 | NSR | NRY | NSR | Priority 1 | SAR | Preliminary | Approval | ENG | DOCS | DES | MS3 |
|  | DET | **Detailed design** |  | 2027-02-16 | 2027-04-15 |  |  |  |  |  |  |  |  |  |  |  |  |  |  |  |  |
|  | SUB | **Submittal** |  | 2027-02-16 | 2027-03-25 |  |  |  |  |  |  |  |  |  |  |  |  |  |  |  |  |
| NRY-E1070 |  | Detailed design: submittal (drawings, BOQ, data sheets) - Riyadh (Thumamah) | 22d | 2027-02-16 | 2027-03-25 | NRY-E1050 | 420d | 0d | Contract cost (BOQ x payment milestones) [115562 SAR]; Progress weight (fair EPC distribution, SAR value) [63240 SAR] | 63,240 | NSR | NRY | NSR | Priority 1 | ETECHS | Detailed | Submittal | ENG | DOCS | DES | MS2 |
|  | APR | **Approval** |  | 2027-03-28 | 2027-04-15 |  |  |  |  |  |  |  |  |  |  |  |  |  |  |  |  |
| NRY-E1080 |  | Detailed design: SAR review and approval - Riyadh (Thumamah) | 15d | 2027-03-28 | 2027-04-15 | NRY-E1070 | 430d | 10d | Contract cost (BOQ x payment milestones) [118347 SAR]; Progress weight (fair EPC distribution, SAR value) [42780 SAR] | 42,780 | NSR | NRY | NSR | Priority 1 | SAR | Detailed | Approval | ENG | DOCS | DES | MS3 |
|  | IFC | **IFC and shop drawings** |  | 2027-03-28 | 2027-04-29 |  |  |  |  |  |  |  |  |  |  |  |  |  |  |  |  |
|  | SUB | **Submittal** |  | 2027-03-28 | 2027-04-08 |  |  |  |  |  |  |  |  |  |  |  |  |  |  |  |  |
| NRY-E1090 |  | IFC and shop drawings: submittal - Riyadh (Thumamah) | 10d | 2027-03-28 | 2027-04-08 | NRY-E1070 | 420d | 0d | Contract cost (BOQ x payment milestones) [57781 SAR]; Progress weight (fair EPC distribution, SAR value) [25420 SAR] | 25,420 | NSR | NRY | NSR | Priority 1 | ETECHS | IFC | Submittal | ENG | DOCS | DES | MS2 |
|  | APR | **Approval** |  | 2027-04-11 | 2027-04-29 |  |  |  |  |  |  |  |  |  |  |  |  |  |  |  |  |
| NRY-E1100 |  | IFC and shop drawings: SAR approval and release - Riyadh (Thumamah) | 15d | 2027-04-11 | 2027-04-29 | NRY-E1090 | 420d | 0d | Contract cost (BOQ x payment milestones) [59173 SAR]; Progress weight (fair EPC distribution, SAR value) [38440 SAR] | 38,440 | NSR | NRY | NSR | Priority 1 | SAR | IFC | Approval | ENG | DOCS | DES | MS3 |

| ID | WBS | Activity | Duration | Start | Finish | Predecessors | Total float | Free float | Resources | Cost | Area | Station | Railway | Priority | Responsibility | Design stage | Submittal or approval | EPC phase | Discipline | Programme phase | Payment milestone |
| --- | --- | --- | --- | --- | --- | --- | --- | --- | --- | --- | --- | --- | --- | --- | --- | --- | --- | --- | --- | --- | --- |
|  | HCS | **HCIS documentation (Stage 3 and 4)** |  | 2027-03-01 | 2027-04-29 |  |  |  |  |  |  |  |  |  |  |  |  |  |  |  |  |
|  | SUB | **Submittal** |  | 2027-03-01 | 2027-04-08 |  |  |  |  |  |  |  |  |  |  |  |  |  |  |  |  |
| NRY-E1110 |  | HCIS Stage 3 and 4 documents: preparation - Riyadh (Thumamah) | 24d | 2027-03-01 | 2027-04-08 | NRY-E1050 FS+8d, NRY-E1090 FF | 420d | 0d | Contract cost (BOQ x payment milestones) [14445 SAR]; Progress weight (fair EPC distribution, SAR value) [13020 SAR] | 13,020 | NSR | NRY | NSR | Priority 1 | ETECHS | HCIS | Submittal | ENG | DOCS | DES | MS2 |
|  | APR | **Approval** |  | 2027-04-11 | 2027-04-29 |  |  |  |  |  |  |  |  |  |  |  |  |  |  |  |  |
| NRY-E1120 |  | HCIS Stage 3 and 4 documents: SAR final review and HCIS submission - Riyadh (Thumamah) | 15d | 2027-04-11 | 2027-04-29 | NRY-E1110 | 420d | 0d | Contract cost (BOQ x payment milestones) [14793 SAR]; Progress weight (fair EPC distribution, SAR value) [8060 SAR] | 8,060 | NSR | NRY | NSR | Priority 1 | SAR/HCIS | HCIS | Approval | ENG | DOCS | DES | MS3 |
|  | ASB | **As-built and O&M documentation** |  | 2027-11-16 | 2028-01-17 |  |  |  |  |  |  |  |  |  |  |  |  |  |  |  |  |
|  | SUB | **Submittal** |  | 2027-11-16 | 2027-12-27 |  |  |  |  |  |  |  |  |  |  |  |  |  |  |  |  |
| NRY-E1130 |  | As-built and O&M documentation: submittal - Riyadh (Thumamah) | 30d | 2027-11-16 | 2027-12-27 | NRY-C2100 | 420d | 0d | Contract cost (BOQ x payment milestones) [52212 SAR]; Progress weight (fair EPC distribution, SAR value) [23560 SAR] | 23,560 | NSR | NRY | NSR | Priority 1 | ETECHS | As-built | Submittal | ENG | DOCS | COM | MS7 |
|  | APR | **Approval** |  | 2027-12-28 | 2028-01-17 |  |  |  |  |  |  |  |  |  |  |  |  |  |  |  |  |
| NRY-E1140 |  | As-built and O&M documentation: SAR review and approval - Riyadh (Thumamah) | 15d | 2027-12-28 | 2028-01-17 | NRY-E1130 | 420d | 0d | Contract cost (BOQ x payment milestones) [17404 SAR]; Progress weight (fair EPC distribution, SAR value) [11780 SAR] | 11,780 | NSR | NRY | NSR | Priority 1 | SAR | As-built | Approval | ENG | DOCS | COM | MS7 |
|  | POC | **Proof of concept (POC)** |  | 2027-01-03 | 2027-04-25 |  |  |  |  |  |  |  |  |  |  |  |  |  |  |  |  |
|  | PLN | **POC plan and test procedure** |  | 2027-01-03 | 2027-01-28 |  |  |  |  |  |  |  |  |  |  |  |  |  |  |  |  |
| NRY-POC1010 |  | POC plan and test procedure: submittal - Riyadh (Thumamah) | 5d | 2027-01-03 | 2027-01-07 | PRJ-M1150 | 424d | 0d | Contract cost (BOQ x payment milestones) [5221 SAR]; Progress weight (fair EPC distribution, SAR value) [2480 SAR] | 2,480 | NSR | NRY | NSR | Priority 1 | ETECHS | POC | Submittal | ENG | DOCS | POC | MS2 |
| NRY-POC1020 |  | POC plan: SAR and consultant review and approval (21 days) - Riyadh (Thumamah) | 15d | 2027-01-10 | 2027-01-28 | NRY-POC1010 | 424d | 0d | Contract cost (BOQ x payment milestones) [13923 SAR]; Progress weight (fair EPC distribution, SAR value) [6820 SAR] | 6,820 | NSR | NRY | NSR | Priority 1 | SAR | POC | Approval | ENG | DOCS | POC | MS3 |
|  | NET | **POC network** |  | 2027-01-31 | 2027-02-09 |  |  |  |  |  |  |  |  |  |  |  |  |  |  |  |  |
| NRY-POC2010 |  | POC network: install test bed and fibre/IP backbone - Riyadh (Thumamah) | 8d | 2027-01-31 | 2027-02-09 | NRY-POC1020 | 424d | 0d | Contract cost (BOQ x payment milestones) [6962 SAR]; Progress weight (fair EPC distribution, SAR value) [3720 SAR] | 3,720 | NSR | NRY | NSR | Priority 1 | ETECHS | POC | - | ENG | UPSNET | POC | MS2 |
|  | CAM | **POC CCTV** |  | 2027-02-10 | 2027-02-28 |  |  |  |  |  |  |  |  |  |  |  |  |  |  |  |  |
| NRY-POC2020 |  | POC CCTV: install and configure demonstration cameras and analytics - Riyadh (Thumamah) | 12d | 2027-02-10 | 2027-02-28 | NRY-POC2010 | 424d | 0d | Contract cost (BOQ x payment milestones) [10442 SAR]; Progress weight (fair EPC distribution, SAR value) [5580 SAR] | 5,580 | NSR | NRY | NSR | Priority 1 | ETECHS | POC | - | ENG | CCTV | POC | MS2 |
|  | INS | **POC inspection and access control** |  | 2027-02-10 | 2027-02-28 |  |  |  |  |  |  |  |  |  |  |  |  |  |  |  |  |
| NRY-POC2030 |  | POC inspection and access control: install and configure demonstration points - Riyadh (Thumamah) | 12d | 2027-02-10 | 2027-02-28 | NRY-POC2010 | 424d | 0d | Contract cost (BOQ x payment milestones) [10442 SAR]; Progress weight (fair EPC distribution, SAR value) [5580 SAR] | 5,580 | NSR | NRY | NSR | Priority 1 | ETECHS | POC | - | ENG | ACC | POC | MS2 |
|  | TST | **POC integrated test, inspection and approval** |  | 2027-03-01 | 2027-04-25 |  |  |  |  |  |  |  |  |  |  |  |  |  |  |  |  |
| NRY-POC3010 |  | POC integrated testing and demonstration (cameras, inspection, network) - Riyadh (Thumamah) | 8d | 2027-03-01 | 2027-03-17 | NRY-POC2020, NRY-POC2030 | 424d | 0d | Contract cost (BOQ x payment milestones) [12183 SAR]; Progress weight (fair EPC distribution, SAR value) [3720 SAR] | 3,720 | NSR | NRY | NSR | Priority 1 | ETECHS | POC | - | ENG | TC | POC | MS2 |
| NRY-POC3020 |  | POC test report: submittal - Riyadh (Thumamah) | 5d | 2027-03-18 | 2027-03-24 | NRY-POC3010 | 424d | 0d | Contract cost (BOQ x payment milestones) [6962 SAR]; Progress weight (fair EPC distribution, SAR value) [2480 SAR] | 2,480 | NSR | NRY | NSR | Priority 1 | ETECHS | POC | Submittal | ENG | DOCS | POC | MS2 |
| NRY-POC4010 |  | POC site inspection and witnessing with consultant - Riyadh (Thumamah) | 10d | 2027-03-25 | 2027-04-07 | NRY-POC3020 | 424d | 0d | Contract cost (BOQ x payment milestones) [17404 SAR]; Progress weight (fair EPC distribution, SAR value) [4340 SAR] | 4,340 | NSR | NRY | NSR | Priority 1 | SAR | POC | Approval | ENG | TC | POC | MS3 |
| NRY-POC4020 |  | POC approval by SAR and consultant (inspection and approval within one month) - Riyadh (Thumamah) | 12d | 2027-04-08 | 2027-04-25 | NRY-POC4010 | 424d | 0d | Contract cost (BOQ x payment milestones) [20885 SAR]; Progress weight (fair EPC distribution, SAR value) [5580 SAR] | 5,580 | NSR | NRY | NSR | Priority 1 | SAR | POC | Approval | ENG | DOCS | POC | MS3 |

| ID | WBS | Activity | Type | Duration | Start | Finish | Predecessors | Total float | Free float | Resources | Cost | Area | Station | Railway | Priority | EPC phase | Discipline | Responsibility | Design stage | Submittal or approval | Payment milestone | Programme phase |
| --- | --- | --- | --- | --- | --- | --- | --- | --- | --- | --- | --- | --- | --- | --- | --- | --- | --- | --- | --- | --- | --- | --- |
|  | HMK | **Makkah (HHR)** |  |  | 2026-11-01 | 2028-07-17 |  |  |  |  |  |  |  |  |  |  |  |  |  |  |  |  |
| HMK-E1200 |  | MS2 Engineering submittal complete (10%) - Makkah | milestone | 0d | 2027-04-08 | 2027-04-08 | HMK-E1090, HMK-E1110 | 315d | 15d |  |  | HHR | HMK | HHR | Priority 1 | MS | DOCS | ETECHS | - | - | MS2 | MS |
| HMK-E1210 |  | MS3 Engineering approved by SAR (10%) - Makkah | milestone | 0d | 2027-04-29 | 2027-04-29 | HMK-E1020, HMK-E1040, HMK-E1060, HMK-E1080, HMK-E1100, HMK-E1120, HMK-E1200 | 300d | 0d |  |  | HHR | HMK | HHR | Priority 1 | MS | DOCS | SAR | - | - | MS3 | MS |
|  | SRV | **Site survey and as-found verification** |  |  | 2026-11-01 | 2027-02-18 |  |  |  |  |  |  |  |  |  |  |  |  |  |  |  |  |
|  | SUB | **Submittal** |  |  | 2027-01-03 | 2027-01-28 |  |  |  |  |  |  |  |  |  |  |  |  |  |  |  |  |
| HMK-E1010 |  | Survey: submittal of site survey and as-found report - Makkah |  | 20d | 2027-01-03 | 2027-01-28 | HMK-E1005, PRJ-M1150 | 21d | 0d | Contract cost (BOQ x payment milestones) [47579 SAR]; Progress weight (fair EPC distribution, SAR value) [50220 SAR] | 50,220 | HHR | HMK | HHR | Priority 1 | ENG | DOCS | ETECHS | Survey | Submittal | MS2 | DES |
|  | APR | **Approval** |  |  | 2027-01-31 | 2027-02-18 |  |  |  |  |  |  |  |  |  |  |  |  |  |  |  |  |
| HMK-E1020 |  | Survey: SAR approval of survey report - Makkah |  | 15d | 2027-01-31 | 2027-02-18 | HMK-E1010 | 344d | 44d | Contract cost (BOQ x payment milestones) [48550 SAR]; Progress weight (fair EPC distribution, SAR value) [37820 SAR] | 37,820 | HHR | HMK | HHR | Priority 1 | ENG | DOCS | SAR | Survey | Approval | MS3 | DES |
|  | PRM | **Site access permit** |  |  | 2026-11-01 | 2026-12-31 |  |  |  |  |  |  |  |  |  |  |  |  |  |  |  |  |
| HMK-E1005 |  | Survey: site access permit - application and approval (two months) - Makkah |  | 45d | 2026-11-01 | 2026-12-31 | PRJ-M0000 | 21d | 0d | Contract cost (BOQ x payment milestones) [19420 SAR]; Progress weight (fair EPC distribution, SAR value) [22320 SAR] | 22,320 | HHR | HMK | HHR | Priority 1 | ENG | DOCS | SAR | Survey | Approval | MS2 | MOB |
|  | CNC | **Concept design** |  |  | 2027-01-31 | 2027-03-02 |  |  |  |  |  |  |  |  |  |  |  |  |  |  |  |  |
|  | SUB | **Submittal** |  |  | 2027-01-31 | 2027-02-08 |  |  |  |  |  |  |  |  |  |  |  |  |  |  |  |  |
| HMK-E1030 |  | Concept design: submittal - Makkah |  | 7d | 2027-01-31 | 2027-02-08 | HMK-E1010 | 300d | 0d | Contract cost (BOQ x payment milestones) [95159 SAR]; Progress weight (fair EPC distribution, SAR value) [34720 SAR] | 34,720 | HHR | HMK | HHR | Priority 1 | ENG | DOCS | ETECHS | Concept | Submittal | MS2 | DES |
|  | APR | **Approval** |  |  | 2027-02-09 | 2027-03-02 |  |  |  |  |  |  |  |  |  |  |  |  |  |  |  |  |
| HMK-E1040 |  | Concept design: SAR review and approval - Makkah |  | 15d | 2027-02-09 | 2027-03-02 | HMK-E1030 | 337d | 37d | Contract cost (BOQ x payment milestones) [97101 SAR]; Progress weight (fair EPC distribution, SAR value) [75020 SAR] | 75,020 | HHR | HMK | HHR | Priority 1 | ENG | DOCS | SAR | Concept | Approval | MS3 | DES |
|  | PRE | **Preliminary (schematic) design** |  |  | 2027-02-09 | 2027-03-24 |  |  |  |  |  |  |  |  |  |  |  |  |  |  |  |  |
|  | SUB | **Submittal** |  |  | 2027-02-09 | 2027-02-24 |  |  |  |  |  |  |  |  |  |  |  |  |  |  |  |  |
| HMK-E1050 |  | Preliminary design: submittal - Makkah |  | 11d | 2027-02-09 | 2027-02-24 | HMK-E1030 | 300d | 0d | Contract cost (BOQ x payment milestones) [190318 SAR]; Progress weight (fair EPC distribution, SAR value) [83700 SAR] | 83,700 | HHR | HMK | HHR | Priority 1 | ENG | DOCS | ETECHS | Preliminary | Submittal | MS2 | DES |
|  | APR | **Approval** |  |  | 2027-02-25 | 2027-03-24 |  |  |  |  |  |  |  |  |  |  |  |  |  |  |  |  |
| HMK-E1060 |  | Preliminary design: SAR review and approval - Makkah |  | 15d | 2027-02-25 | 2027-03-24 | HMK-E1050 | 326d | 26d | Contract cost (BOQ x payment milestones) [194202 SAR]; Progress weight (fair EPC distribution, SAR value) [114080 SAR] | 114,080 | HHR | HMK | HHR | Priority 1 | ENG | DOCS | SAR | Preliminary | Approval | MS3 | DES |
|  | DET | **Detailed design** |  |  | 2027-02-25 | 2027-04-19 |  |  |  |  |  |  |  |  |  |  |  |  |  |  |  |  |
|  | SUB | **Submittal** |  |  | 2027-02-25 | 2027-03-29 |  |  |  |  |  |  |  |  |  |  |  |  |  |  |  |  |
| HMK-E1070 |  | Detailed design: submittal (drawings, BOQ, data sheets) - Makkah |  | 18d | 2027-02-25 | 2027-03-29 | HMK-E1050 | 300d | 0d | Contract cost (BOQ x payment milestones) [380636 SAR]; Progress weight (fair EPC distribution, SAR value) [179180 SAR] | 179,180 | HHR | HMK | HHR | Priority 1 | ENG | DOCS | ETECHS | Detailed | Submittal | MS2 | DES |
|  | APR | **Approval** |  |  | 2027-03-30 | 2027-04-19 |  |  |  |  |  |  |  |  |  |  |  |  |  |  |  |  |
| HMK-E1080 |  | Detailed design: SAR review and approval - Makkah |  | 15d | 2027-03-30 | 2027-04-19 | HMK-E1070 | 308d | 8d | Contract cost (BOQ x payment milestones) [388404 SAR]; Progress weight (fair EPC distribution, SAR value) [149420 SAR] | 149,420 | HHR | HMK | HHR | Priority 1 | ENG | DOCS | SAR | Detailed | Approval | MS3 | DES |

| ID | WBS | Activity | Type | Duration | Start | Finish | Predecessors | Total float | Free float | Resources | Cost | Area | Station | Railway | Priority | Responsibility | Design stage | Submittal or approval | EPC phase | Discipline | Programme phase | Payment milestone |
| --- | --- | --- | --- | --- | --- | --- | --- | --- | --- | --- | --- | --- | --- | --- | --- | --- | --- | --- | --- | --- | --- | --- |
|  | IFC | **IFC and shop drawings** |  |  | 2027-03-30 | 2027-04-29 |  |  |  |  |  |  |  |  |  |  |  |  |  |  |  |  |
|  | SUB | **Submittal** |  |  | 2027-03-30 | 2027-04-08 |  |  |  |  |  |  |  |  |  |  |  |  |  |  |  |  |
| HMK-E1090 |  | IFC and shop drawings: submittal - Makkah |  | 8d | 2027-03-30 | 2027-04-08 | HMK-E1070 | 300d | 0d | Contract cost (BOQ x payment milestones) [190318 SAR]; Progress weight (fair EPC distribution, SAR value) [68820 SAR] | 68,820 | HHR | HMK | HHR | Priority 1 | ETECHS | IFC | Submittal | ENG | DOCS | DES | MS2 |
|  | APR | **Approval** |  |  | 2027-04-11 | 2027-04-29 |  |  |  |  |  |  |  |  |  |  |  |  |  |  |  |  |
| HMK-E1100 |  | IFC and shop drawings: SAR approval and release - Makkah |  | 15d | 2027-04-11 | 2027-04-29 | HMK-E1090 | 300d | 0d | Contract cost (BOQ x payment milestones) [194202 SAR]; Progress weight (fair EPC distribution, SAR value) [128960 SAR] | 128,960 | HHR | HMK | HHR | Priority 1 | SAR | IFC | Approval | ENG | DOCS | DES | MS3 |
|  | HCS | **HCIS documentation (Stage 3 and 4)** |  |  | 2027-03-15 | 2027-04-29 |  |  |  |  |  |  |  |  |  |  |  |  |  |  |  |  |
|  | SUB | **Submittal** |  |  | 2027-03-15 | 2027-04-08 |  |  |  |  |  |  |  |  |  |  |  |  |  |  |  |  |
| HMK-E1110 |  | HCIS Stage 3 and 4 documents: preparation - Makkah |  | 19d | 2027-03-15 | 2027-04-08 | HMK-E1050 FS+7d, HMK-E1090 FF | 300d | 0d | Contract cost (BOQ x payment milestones) [47579 SAR]; Progress weight (fair EPC distribution, SAR value) [36580 SAR] | 36,580 | HHR | HMK | HHR | Priority 1 | ETECHS | HCIS | Submittal | ENG | DOCS | DES | MS2 |
|  | APR | **Approval** |  |  | 2027-04-11 | 2027-04-29 |  |  |  |  |  |  |  |  |  |  |  |  |  |  |  |  |
| HMK-E1120 |  | HCIS Stage 3 and 4 documents: SAR final review and HCIS submission - Makkah |  | 15d | 2027-04-11 | 2027-04-29 | HMK-E1110 | 300d | 0d | Contract cost (BOQ x payment milestones) [48550 SAR]; Progress weight (fair EPC distribution, SAR value) [29140 SAR] | 29,140 | HHR | HMK | HHR | Priority 1 | SAR/HCIS | HCIS | Approval | ENG | DOCS | DES | MS3 |
|  | ASB | **As-built and O&M documentation** |  |  | 2028-04-25 | 2028-07-17 |  |  |  |  |  |  |  |  |  |  |  |  |  |  |  |  |
|  | SUB | **Submittal** |  |  | 2028-04-25 | 2028-06-26 |  |  |  |  |  |  |  |  |  |  |  |  |  |  |  |  |
| HMK-E1130 |  | As-built and O&M documentation: submittal - Makkah |  | 40d | 2028-04-25 | 2028-06-26 | HMK-C2100 | 300d | 0d | Contract cost (BOQ x payment milestones) [145651 SAR]; Progress weight (fair EPC distribution, SAR value) [79980 SAR] | 79,980 | HHR | HMK | HHR | Priority 1 | ETECHS | As-built | Submittal | ENG | DOCS | COM | MS7 |
|  | APR | **Approval** |  |  | 2028-06-27 | 2028-07-17 |  |  |  |  |  |  |  |  |  |  |  |  |  |  |  |  |
| HMK-E1140 |  | As-built and O&M documentation: SAR review and approval - Makkah |  | 15d | 2028-06-27 | 2028-07-17 | HMK-E1130 | 300d | 0d | Contract cost (BOQ x payment milestones) [48550 SAR]; Progress weight (fair EPC distribution, SAR value) [29760 SAR] | 29,760 | HHR | HMK | HHR | Priority 1 | SAR | As-built | Approval | ENG | DOCS | COM | MS7 |
|  | ERY | **Riyadh (Malaz) (EWR)** |  |  | 2026-11-01 | 2028-01-09 |  |  |  |  |  |  |  |  |  |  |  |  |  |  |  |  |
| ERY-E1200 |  | MS2 Engineering submittal complete (10%) - Riyadh (Malaz) | milestone | 0d | 2027-04-08 | 2027-04-08 | ERY-E1090, ERY-E1110 | 441d | 15d |  |  | EWR | ERY | EWR | Priority 2 | ETECHS | - | - | MS | DOCS | MS | MS2 |
| ERY-E1210 |  | MS3 Engineering approved by SAR (10%) - Riyadh (Malaz) | milestone | 0d | 2027-04-29 | 2027-04-29 | ERY-E1020, ERY-E1040, ERY-E1060, ERY-E1080, ERY-E1100, ERY-E1120, ERY-E1200 | 426d | 0d |  |  | EWR | ERY | EWR | Priority 2 | SAR | - | - | MS | DOCS | MS | MS3 |
|  | SRV | **Site survey and as-found verification** |  |  | 2026-11-01 | 2027-02-04 |  |  |  |  |  |  |  |  |  |  |  |  |  |  |  |  |
|  | SUB | **Submittal** |  |  | 2027-01-03 | 2027-01-14 |  |  |  |  |  |  |  |  |  |  |  |  |  |  |  |  |
| ERY-E1010 |  | Survey: submittal of site survey and as-found report - Riyadh (Malaz) |  | 10d | 2027-01-03 | 2027-01-14 | ERY-E1005, PRJ-M1150 | 31d | 0d | Contract cost (BOQ x payment milestones) [15148 SAR]; Progress weight (fair EPC distribution, SAR value) [11160 SAR] | 11,160 | EWR | ERY | EWR | Priority 2 | ETECHS | Survey | Submittal | ENG | DOCS | DES | MS2 |
|  | APR | **Approval** |  |  | 2027-01-17 | 2027-02-04 |  |  |  |  |  |  |  |  |  |  |  |  |  |  |  |  |
| ERY-E1020 |  | Survey: SAR approval of survey report - Riyadh (Malaz) |  | 15d | 2027-01-17 | 2027-02-04 | ERY-E1010 | 480d | 54d | Contract cost (BOQ x payment milestones) [15458 SAR]; Progress weight (fair EPC distribution, SAR value) [16740 SAR] | 16,740 | EWR | ERY | EWR | Priority 2 | SAR | Survey | Approval | ENG | DOCS | DES | MS3 |
|  | PRM | **Site access permit** |  |  | 2026-11-01 | 2026-12-31 |  |  |  |  |  |  |  |  |  |  |  |  |  |  |  |  |
| ERY-E1005 |  | Survey: site access permit - application and approval (two months) - Riyadh (Malaz) |  | 45d | 2026-11-01 | 2026-12-31 | PRJ-M0000 | 21d | 0d | Contract cost (BOQ x payment milestones) [6183 SAR]; Progress weight (fair EPC distribution, SAR value) [6820 SAR] | 6,820 | EWR | ERY | EWR | Priority 2 | SAR | Survey | Approval | ENG | DOCS | MOB | MS2 |

| ID | WBS | Activity | Duration | Start | Finish | Predecessors | Total float | Free float | Resources | Cost | Area | Station | Railway | Priority | Responsibility | Design stage | Submittal or approval | EPC phase | Discipline | Programme phase | Payment milestone |
| --- | --- | --- | --- | --- | --- | --- | --- | --- | --- | --- | --- | --- | --- | --- | --- | --- | --- | --- | --- | --- | --- |
|  | CNC | **Concept design** |  | 2027-01-17 | 2027-02-16 |  |  |  |  |  |  |  |  |  |  |  |  |  |  |  |  |
|  | SUB | **Submittal** |  | 2027-01-17 | 2027-01-26 |  |  |  |  |  |  |  |  |  |  |  |  |  |  |  |  |
| ERY-E1030 |  | Concept design: submittal - Riyadh (Malaz) | 8d | 2027-01-17 | 2027-01-26 | ERY-E1010 | 426d | 0d | Contract cost (BOQ x payment milestones) [30297 SAR]; Progress weight (fair EPC distribution, SAR value) [12400 SAR] | 12,400 | EWR | ERY | EWR | Priority 2 | ETECHS | Concept | Submittal | ENG | DOCS | DES | MS2 |
|  | APR | **Approval** |  | 2027-01-27 | 2027-02-16 |  |  |  |  |  |  |  |  |  |  |  |  |  |  |  |  |
| ERY-E1040 |  | Concept design: SAR review and approval - Riyadh (Malaz) | 15d | 2027-01-27 | 2027-02-16 | ERY-E1030 | 472d | 46d | Contract cost (BOQ x payment milestones) [30915 SAR]; Progress weight (fair EPC distribution, SAR value) [22940 SAR] | 22,940 | EWR | ERY | EWR | Priority 2 | SAR | Concept | Approval | ENG | DOCS | DES | MS3 |
|  | PRE | **Preliminary (schematic) design** |  | 2027-01-27 | 2027-03-16 |  |  |  |  |  |  |  |  |  |  |  |  |  |  |  |  |
|  | SUB | **Submittal** |  | 2027-01-27 | 2027-02-15 |  |  |  |  |  |  |  |  |  |  |  |  |  |  |  |  |
| ERY-E1050 |  | Preliminary design: submittal - Riyadh (Malaz) | 14d | 2027-01-27 | 2027-02-15 | ERY-E1030 | 426d | 0d | Contract cost (BOQ x payment milestones) [60594 SAR]; Progress weight (fair EPC distribution, SAR value) [30380 SAR] | 30,380 | EWR | ERY | EWR | Priority 2 | ETECHS | Preliminary | Submittal | ENG | DOCS | DES | MS2 |
|  | APR | **Approval** |  | 2027-02-16 | 2027-03-16 |  |  |  |  |  |  |  |  |  |  |  |  |  |  |  |  |
| ERY-E1060 |  | Preliminary design: SAR review and approval - Riyadh (Malaz) | 15d | 2027-02-16 | 2027-03-16 | ERY-E1050 | 458d | 32d | Contract cost (BOQ x payment milestones) [61830 SAR]; Progress weight (fair EPC distribution, SAR value) [32240 SAR] | 32,240 | EWR | ERY | EWR | Priority 2 | SAR | Preliminary | Approval | ENG | DOCS | DES | MS3 |
|  | DET | **Detailed design** |  | 2027-02-16 | 2027-04-15 |  |  |  |  |  |  |  |  |  |  |  |  |  |  |  |  |
|  | SUB | **Submittal** |  | 2027-02-16 | 2027-03-25 |  |  |  |  |  |  |  |  |  |  |  |  |  |  |  |  |
| ERY-E1070 |  | Detailed design: submittal (drawings, BOQ, data sheets) - Riyadh (Malaz) | 22d | 2027-02-16 | 2027-03-25 | ERY-E1050 | 426d | 0d | Contract cost (BOQ x payment milestones) [121188 SAR]; Progress weight (fair EPC distribution, SAR value) [62000 SAR] | 62,000 | EWR | ERY | EWR | Priority 2 | ETECHS | Detailed | Submittal | ENG | DOCS | DES | MS2 |
|  | APR | **Approval** |  | 2027-03-28 | 2027-04-15 |  |  |  |  |  |  |  |  |  |  |  |  |  |  |  |  |
| ERY-E1080 |  | Detailed design: SAR review and approval - Riyadh (Malaz) | 15d | 2027-03-28 | 2027-04-15 | ERY-E1070 | 436d | 10d | Contract cost (BOQ x payment milestones) [123661 SAR]; Progress weight (fair EPC distribution, SAR value) [42160 SAR] | 42,160 | EWR | ERY | EWR | Priority 2 | SAR | Detailed | Approval | ENG | DOCS | DES | MS3 |
|  | IFC | **IFC and shop drawings** |  | 2027-03-28 | 2027-04-29 |  |  |  |  |  |  |  |  |  |  |  |  |  |  |  |  |
|  | SUB | **Submittal** |  | 2027-03-28 | 2027-04-08 |  |  |  |  |  |  |  |  |  |  |  |  |  |  |  |  |
| ERY-E1090 |  | IFC and shop drawings: submittal - Riyadh (Malaz) | 10d | 2027-03-28 | 2027-04-08 | ERY-E1070 | 426d | 0d | Contract cost (BOQ x payment milestones) [60594 SAR]; Progress weight (fair EPC distribution, SAR value) [25420 SAR] | 25,420 | EWR | ERY | EWR | Priority 2 | ETECHS | IFC | Submittal | ENG | DOCS | DES | MS2 |
|  | APR | **Approval** |  | 2027-04-11 | 2027-04-29 |  |  |  |  |  |  |  |  |  |  |  |  |  |  |  |  |
| ERY-E1100 |  | IFC and shop drawings: SAR approval and release - Riyadh (Malaz) | 15d | 2027-04-11 | 2027-04-29 | ERY-E1090 | 426d | 0d | Contract cost (BOQ x payment milestones) [61830 SAR]; Progress weight (fair EPC distribution, SAR value) [37820 SAR] | 37,820 | EWR | ERY | EWR | Priority 2 | SAR | IFC | Approval | ENG | DOCS | DES | MS3 |
|  | HCS | **HCIS documentation (Stage 3 and 4)** |  | 2027-03-01 | 2027-04-29 |  |  |  |  |  |  |  |  |  |  |  |  |  |  |  |  |
|  | SUB | **Submittal** |  | 2027-03-01 | 2027-04-08 |  |  |  |  |  |  |  |  |  |  |  |  |  |  |  |  |
| ERY-E1110 |  | HCIS Stage 3 and 4 documents: preparation - Riyadh (Malaz) | 24d | 2027-03-01 | 2027-04-08 | ERY-E1050 FS+8d, ERY-E1090 FF | 426d | 0d | Contract cost (BOQ x payment milestones) [15148 SAR]; Progress weight (fair EPC distribution, SAR value) [13020 SAR] | 13,020 | EWR | ERY | EWR | Priority 2 | ETECHS | HCIS | Submittal | ENG | DOCS | DES | MS2 |
|  | APR | **Approval** |  | 2027-04-11 | 2027-04-29 |  |  |  |  |  |  |  |  |  |  |  |  |  |  |  |  |
| ERY-E1120 |  | HCIS Stage 3 and 4 documents: SAR final review and HCIS submission - Riyadh (Malaz) | 15d | 2027-04-11 | 2027-04-29 | ERY-E1110 | 426d | 0d | Contract cost (BOQ x payment milestones) [15458 SAR]; Progress weight (fair EPC distribution, SAR value) [8060 SAR] | 8,060 | EWR | ERY | EWR | Priority 2 | SAR/HCIS | HCIS | Approval | ENG | DOCS | DES | MS3 |

| ID | WBS | Activity | Type | Duration | Start | Finish | Predecessors | Total float | Free float | Resources | Cost | Area | Station | Railway | Priority | Responsibility | Design stage | Submittal or approval | EPC phase | Discipline | Programme phase | Payment milestone |
| --- | --- | --- | --- | --- | --- | --- | --- | --- | --- | --- | --- | --- | --- | --- | --- | --- | --- | --- | --- | --- | --- | --- |
|  | ASB | **As-built and O&M documentation** |  |  | 2027-11-08 | 2028-01-09 |  |  |  |  |  |  |  |  |  |  |  |  |  |  |  |  |
|  | SUB | **Submittal** |  |  | 2027-11-08 | 2027-12-19 |  |  |  |  |  |  |  |  |  |  |  |  |  |  |  |  |
| ERY-E1130 |  | As-built and O&M documentation: submittal - Riyadh (Malaz) |  | 30d | 2027-11-08 | 2027-12-19 | ERY-C2100 | 426d | 0d | Contract cost (BOQ x payment milestones) [46373 SAR]; Progress weight (fair EPC distribution, SAR value) [23560 SAR] | 23,560 | EWR | ERY | EWR | Priority 2 | ETECHS | As-built | Submittal | ENG | DOCS | COM | MS7 |
|  | APR | **Approval** |  |  | 2027-12-20 | 2028-01-09 |  |  |  |  |  |  |  |  |  |  |  |  |  |  |  |  |
| ERY-E1140 |  | As-built and O&M documentation: SAR review and approval - Riyadh (Malaz) |  | 15d | 2027-12-20 | 2028-01-09 | ERY-E1130 | 426d | 0d | Contract cost (BOQ x payment milestones) [15458 SAR]; Progress weight (fair EPC distribution, SAR value) [11780 SAR] | 11,780 | EWR | ERY | EWR | Priority 2 | SAR | As-built | Approval | ENG | DOCS | COM | MS7 |
|  | HJD | **Jeddah (HHR)** |  |  | 2027-03-22 | 2028-11-05 |  |  |  |  |  |  |  |  |  |  |  |  |  |  |  |  |
| HJD-E1200 |  | MS2 Engineering submittal complete (10%) - Jeddah | milestone | 0d | 2027-08-26 | 2027-08-26 | HJD-E1090, HJD-E1110 | 236d | 15d |  |  | HHR | HJD | HHR | Standard | ETECHS | - | - | MS | DOCS | MS | MS2 |
| HJD-E1210 |  | MS3 Engineering approved by SAR (10%) - Jeddah | milestone | 0d | 2027-09-16 | 2027-09-16 | HJD-E1020, HJD-E1040, HJD-E1060, HJD-E1080, HJD-E1100, HJD-E1120, HJD-E1200 | 221d | 0d |  |  | HHR | HJD | HHR | Standard | SAR | - | - | MS | DOCS | MS | MS3 |
|  | SRV | **Site survey and as-found verification** |  |  | 2027-03-22 | 2027-07-18 |  |  |  |  |  |  |  |  |  |  |  |  |  |  |  |  |
|  | SUB | **Submittal** |  |  | 2027-05-31 | 2027-06-27 |  |  |  |  |  |  |  |  |  |  |  |  |  |  |  |  |
| HJD-E1010 |  | Survey: submittal of site survey and as-found report - Jeddah |  | 20d | 2027-05-31 | 2027-06-27 | HJD-E1005 | 221d | 0d | Contract cost (BOQ x payment milestones) [46799 SAR]; Progress weight (fair EPC distribution, SAR value) [49600 SAR] | 49,600 | HHR | HJD | HHR | Standard | ETECHS | Survey | Submittal | ENG | DOCS | DES | MS2 |
|  | APR | **Approval** |  |  | 2027-06-28 | 2027-07-18 |  |  |  |  |  |  |  |  |  |  |  |  |  |  |  |  |
| HJD-E1020 |  | Survey: SAR approval of survey report - Jeddah |  | 15d | 2027-06-28 | 2027-07-18 | HJD-E1010 | 265d | 44d | Contract cost (BOQ x payment milestones) [47754 SAR]; Progress weight (fair EPC distribution, SAR value) [37200 SAR] | 37,200 | HHR | HJD | HHR | Standard | SAR | Survey | Approval | ENG | DOCS | DES | MS3 |
|  | PRM | **Site access permit** |  |  | 2027-03-22 | 2027-05-30 |  |  |  |  |  |  |  |  |  |  |  |  |  |  |  |  |
| HJD-E1005 |  | Survey: site access permit - application and approval (two months) - Jeddah |  | 45d | 2027-03-22 | 2027-05-30 | PRJ-M2100 | 221d | 0d | Contract cost (BOQ x payment milestones) [19102 SAR]; Progress weight (fair EPC distribution, SAR value) [21700 SAR] | 21,700 | HHR | HJD | HHR | Standard | SAR | Survey | Approval | ENG | DOCS | MOB | MS2 |
|  | CNC | **Concept design** |  |  | 2027-06-28 | 2027-07-27 |  |  |  |  |  |  |  |  |  |  |  |  |  |  |  |  |
|  | SUB | **Submittal** |  |  | 2027-06-28 | 2027-07-06 |  |  |  |  |  |  |  |  |  |  |  |  |  |  |  |  |
| HJD-E1030 |  | Concept design: submittal - Jeddah |  | 7d | 2027-06-28 | 2027-07-06 | HJD-E1010 | 221d | 0d | Contract cost (BOQ x payment milestones) [93599 SAR]; Progress weight (fair EPC distribution, SAR value) [34100 SAR] | 34,100 | HHR | HJD | HHR | Standard | ETECHS | Concept | Submittal | ENG | DOCS | DES | MS2 |
|  | APR | **Approval** |  |  | 2027-07-07 | 2027-07-27 |  |  |  |  |  |  |  |  |  |  |  |  |  |  |  |  |
| HJD-E1040 |  | Concept design: SAR review and approval - Jeddah |  | 15d | 2027-07-07 | 2027-07-27 | HJD-E1030 | 258d | 37d | Contract cost (BOQ x payment milestones) [95509 SAR]; Progress weight (fair EPC distribution, SAR value) [73780 SAR] | 73,780 | HHR | HJD | HHR | Standard | SAR | Concept | Approval | ENG | DOCS | DES | MS3 |
|  | PRE | **Preliminary (schematic) design** |  |  | 2027-07-07 | 2027-08-11 |  |  |  |  |  |  |  |  |  |  |  |  |  |  |  |  |
|  | SUB | **Submittal** |  |  | 2027-07-07 | 2027-07-21 |  |  |  |  |  |  |  |  |  |  |  |  |  |  |  |  |
| HJD-E1050 |  | Preliminary design: submittal - Jeddah |  | 11d | 2027-07-07 | 2027-07-21 | HJD-E1030 | 221d | 0d | Contract cost (BOQ x payment milestones) [187197 SAR]; Progress weight (fair EPC distribution, SAR value) [81840 SAR] | 81,840 | HHR | HJD | HHR | Standard | ETECHS | Preliminary | Submittal | ENG | DOCS | DES | MS2 |
|  | APR | **Approval** |  |  | 2027-07-22 | 2027-08-11 |  |  |  |  |  |  |  |  |  |  |  |  |  |  |  |  |
| HJD-E1060 |  | Preliminary design: SAR review and approval - Jeddah |  | 15d | 2027-07-22 | 2027-08-11 | HJD-E1050 | 247d | 26d | Contract cost (BOQ x payment milestones) [191018 SAR]; Progress weight (fair EPC distribution, SAR value) [112220 SAR] | 112,220 | HHR | HJD | HHR | Standard | SAR | Preliminary | Approval | ENG | DOCS | DES | MS3 |

| ID | WBS | Activity | Type | Duration | Start | Finish | Predecessors | Total float | Free float | Resources | Cost | Area | Station | Railway | Priority | Responsibility | Design stage | Submittal or approval | EPC phase | Discipline | Programme phase | Payment milestone |
| --- | --- | --- | --- | --- | --- | --- | --- | --- | --- | --- | --- | --- | --- | --- | --- | --- | --- | --- | --- | --- | --- | --- |
|  | DET | **Detailed design** |  |  | 2027-07-22 | 2027-09-06 |  |  |  |  |  |  |  |  |  |  |  |  |  |  |  |  |
|  | SUB | **Submittal** |  |  | 2027-07-22 | 2027-08-16 |  |  |  |  |  |  |  |  |  |  |  |  |  |  |  |  |
| HJD-E1070 |  | Detailed design: submittal (drawings, BOQ, data sheets) - Jeddah |  | 18d | 2027-07-22 | 2027-08-16 | HJD-E1050 | 221d | 0d | Contract cost (BOQ x payment milestones) [374395 SAR]; Progress weight (fair EPC distribution, SAR value) [176700 SAR] | 176,700 | HHR | HJD | HHR | Standard | ETECHS | Detailed | Submittal | ENG | DOCS | DES | MS2 |
|  | APR | **Approval** |  |  | 2027-08-17 | 2027-09-06 |  |  |  |  |  |  |  |  |  |  |  |  |  |  |  |  |
| HJD-E1080 |  | Detailed design: SAR review and approval - Jeddah |  | 15d | 2027-08-17 | 2027-09-06 | HJD-E1070 | 229d | 8d | Contract cost (BOQ x payment milestones) [382035 SAR]; Progress weight (fair EPC distribution, SAR value) [146940 SAR] | 146,940 | HHR | HJD | HHR | Standard | SAR | Detailed | Approval | ENG | DOCS | DES | MS3 |
|  | IFC | **IFC and shop drawings** |  |  | 2027-08-17 | 2027-09-16 |  |  |  |  |  |  |  |  |  |  |  |  |  |  |  |  |
|  | SUB | **Submittal** |  |  | 2027-08-17 | 2027-08-26 |  |  |  |  |  |  |  |  |  |  |  |  |  |  |  |  |
| HJD-E1090 |  | IFC and shop drawings: submittal - Jeddah |  | 8d | 2027-08-17 | 2027-08-26 | HJD-E1070 | 221d | 0d | Contract cost (BOQ x payment milestones) [187197 SAR]; Progress weight (fair EPC distribution, SAR value) [67580 SAR] | 67,580 | HHR | HJD | HHR | Standard | ETECHS | IFC | Submittal | ENG | DOCS | DES | MS2 |
|  | APR | **Approval** |  |  | 2027-08-29 | 2027-09-16 |  |  |  |  |  |  |  |  |  |  |  |  |  |  |  |  |
| HJD-E1100 |  | IFC and shop drawings: SAR approval and release - Jeddah |  | 15d | 2027-08-29 | 2027-09-16 | HJD-E1090 | 221d | 0d | Contract cost (BOQ x payment milestones) [191018 SAR]; Progress weight (fair EPC distribution, SAR value) [126480 SAR] | 126,480 | HHR | HJD | HHR | Standard | SAR | IFC | Approval | ENG | DOCS | DES | MS3 |
|  | HCS | **HCIS documentation (Stage 3 and 4)** |  |  | 2027-08-02 | 2027-09-16 |  |  |  |  |  |  |  |  |  |  |  |  |  |  |  |  |
|  | SUB | **Submittal** |  |  | 2027-08-02 | 2027-08-26 |  |  |  |  |  |  |  |  |  |  |  |  |  |  |  |  |
| HJD-E1110 |  | HCIS Stage 3 and 4 documents: preparation - Jeddah |  | 19d | 2027-08-02 | 2027-08-26 | HJD-E1050 FS+7d, HJD-E1090 FF | 221d | 0d | Contract cost (BOQ x payment milestones) [46799 SAR]; Progress weight (fair EPC distribution, SAR value) [35960 SAR] | 35,960 | HHR | HJD | HHR | Standard | ETECHS | HCIS | Submittal | ENG | DOCS | DES | MS2 |
|  | APR | **Approval** |  |  | 2027-08-29 | 2027-09-16 |  |  |  |  |  |  |  |  |  |  |  |  |  |  |  |  |
| HJD-E1120 |  | HCIS Stage 3 and 4 documents: SAR final review and HCIS submission - Jeddah |  | 15d | 2027-08-29 | 2027-09-16 | HJD-E1110 | 221d | 0d | Contract cost (BOQ x payment milestones) [47754 SAR]; Progress weight (fair EPC distribution, SAR value) [28520 SAR] | 28,520 | HHR | HJD | HHR | Standard | SAR/HCIS | HCIS | Approval | ENG | DOCS | DES | MS3 |
|  | ASB | **As-built and O&M documentation** |  |  | 2028-08-21 | 2028-11-05 |  |  |  |  |  |  |  |  |  |  |  |  |  |  |  |  |
|  | SUB | **Submittal** |  |  | 2028-08-21 | 2028-10-15 |  |  |  |  |  |  |  |  |  |  |  |  |  |  |  |  |
| HJD-E1130 |  | As-built and O&M documentation: submittal - Jeddah |  | 40d | 2028-08-21 | 2028-10-15 | HJD-C2100 | 221d | 0d | Contract cost (BOQ x payment milestones) [143263 SAR]; Progress weight (fair EPC distribution, SAR value) [78120 SAR] | 78,120 | HHR | HJD | HHR | Standard | ETECHS | As-built | Submittal | ENG | DOCS | COM | MS7 |
|  | APR | **Approval** |  |  | 2028-10-16 | 2028-11-05 |  |  |  |  |  |  |  |  |  |  |  |  |  |  |  |  |
| HJD-E1140 |  | As-built and O&M documentation: SAR review and approval - Jeddah |  | 15d | 2028-10-16 | 2028-11-05 | HJD-E1130 | 221d | 0d | Contract cost (BOQ x payment milestones) [47754 SAR]; Progress weight (fair EPC distribution, SAR value) [29140 SAR] | 29,140 | HHR | HJD | HHR | Standard | SAR | As-built | Approval | ENG | DOCS | COM | MS7 |
|  | EDM | **Dammam (EWR)** |  |  | 2027-05-13 | 2028-08-09 |  |  |  |  |  |  |  |  |  |  |  |  |  |  |  |  |
| EDM-E1200 |  | MS2 Engineering submittal complete (10%) - Dammam | milestone | 0d | 2027-10-20 | 2027-10-20 | EDM-E1090, EDM-E1110 | 298d | 15d |  |  | EWR | EDM | EWR | Standard | ETECHS | - | - | MS | DOCS | MS | MS2 |
| EDM-E1210 |  | MS3 Engineering approved by SAR (10%) - Dammam | milestone | 0d | 2027-11-10 | 2027-11-10 | EDM-E1020, EDM-E1040, EDM-E1060, EDM-E1080, EDM-E1100, EDM-E1120, EDM-E1200 | 283d | 0d |  |  | EWR | EDM | EWR | Standard | SAR | - | - | MS | DOCS | MS | MS3 |
|  | SRV | **Site survey and as-found verification** |  |  | 2027-05-13 | 2027-08-25 |  |  |  |  |  |  |  |  |  |  |  |  |  |  |  |  |
|  | SUB | **Submittal** |  |  | 2027-07-22 | 2027-08-04 |  |  |  |  |  |  |  |  |  |  |  |  |  |  |  |  |
| EDM-E1010 |  | Survey: submittal of site survey and as-found report - Dammam |  | 10d | 2027-07-22 | 2027-08-04 | EDM-E1005 | 283d | 0d | Contract cost (BOQ x payment milestones) [15619 SAR]; Progress weight (fair EPC distribution, SAR value) [11780 SAR] | 11,780 | EWR | EDM | EWR | Standard | ETECHS | Survey | Submittal | ENG | DOCS | DES | MS2 |

| ID | WBS | Activity | Duration | Start | Finish | Predecessors | Total float | Free float | Resources | Cost | Area | Station | Railway | Priority | Responsibility | Design stage | Submittal or approval | EPC phase | Discipline | Programme phase | Payment milestone |
| --- | --- | --- | --- | --- | --- | --- | --- | --- | --- | --- | --- | --- | --- | --- | --- | --- | --- | --- | --- | --- | --- |
|  | APR | **Approval** |  | 2027-08-05 | 2027-08-25 |  |  |  |  |  |  |  |  |  |  |  |  |  |  |  |  |
| EDM-E1020 |  | Survey: SAR approval of survey report - Dammam | 15d | 2027-08-05 | 2027-08-25 | EDM-E1010 | 337d | 54d | Contract cost (BOQ x payment milestones) [15938 SAR]; Progress weight (fair EPC distribution, SAR value) [17360 SAR] | 17,360 | EWR | EDM | EWR | Standard | SAR | Survey | Approval | ENG | DOCS | DES | MS3 |
|  | PRM | **Site access permit** |  | 2027-05-13 | 2027-07-21 |  |  |  |  |  |  |  |  |  |  |  |  |  |  |  |  |
| EDM-E1005 |  | Survey: site access permit - application and approval (two months) - Dammam | 45d | 2027-05-13 | 2027-07-21 | PRJ-M2100 FS+38d | 283d | 0d | Contract cost (BOQ x payment milestones) [6375 SAR]; Progress weight (fair EPC distribution, SAR value) [7440 SAR] | 7,440 | EWR | EDM | EWR | Standard | SAR | Survey | Approval | ENG | DOCS | MOB | MS2 |
|  | CNC | **Concept design** |  | 2027-08-05 | 2027-09-06 |  |  |  |  |  |  |  |  |  |  |  |  |  |  |  |  |
|  | SUB | **Submittal** |  | 2027-08-05 | 2027-08-16 |  |  |  |  |  |  |  |  |  |  |  |  |  |  |  |  |
| EDM-E1030 |  | Concept design: submittal - Dammam | 8d | 2027-08-05 | 2027-08-16 | EDM-E1010 | 283d | 0d | Contract cost (BOQ x payment milestones) [31238 SAR]; Progress weight (fair EPC distribution, SAR value) [12400 SAR] | 12,400 | EWR | EDM | EWR | Standard | ETECHS | Concept | Submittal | ENG | DOCS | DES | MS2 |
|  | APR | **Approval** |  | 2027-08-17 | 2027-09-06 |  |  |  |  |  |  |  |  |  |  |  |  |  |  |  |  |
| EDM-E1040 |  | Concept design: SAR review and approval - Dammam | 15d | 2027-08-17 | 2027-09-06 | EDM-E1030 | 329d | 46d | Contract cost (BOQ x payment milestones) [31875 SAR]; Progress weight (fair EPC distribution, SAR value) [23560 SAR] | 23,560 | EWR | EDM | EWR | Standard | SAR | Concept | Approval | ENG | DOCS | DES | MS3 |
|  | PRE | **Preliminary (schematic) design** |  | 2027-08-17 | 2027-09-27 |  |  |  |  |  |  |  |  |  |  |  |  |  |  |  |  |
|  | SUB | **Submittal** |  | 2027-08-17 | 2027-09-05 |  |  |  |  |  |  |  |  |  |  |  |  |  |  |  |  |
| EDM-E1050 |  | Preliminary design: submittal - Dammam | 14d | 2027-08-17 | 2027-09-05 | EDM-E1030 | 283d | 0d | Contract cost (BOQ x payment milestones) [62475 SAR]; Progress weight (fair EPC distribution, SAR value) [31000 SAR] | 31,000 | EWR | EDM | EWR | Standard | ETECHS | Preliminary | Submittal | ENG | DOCS | DES | MS2 |
|  | APR | **Approval** |  | 2027-09-06 | 2027-09-27 |  |  |  |  |  |  |  |  |  |  |  |  |  |  |  |  |
| EDM-E1060 |  | Preliminary design: SAR review and approval - Dammam | 15d | 2027-09-06 | 2027-09-27 | EDM-E1050 | 315d | 32d | Contract cost (BOQ x payment milestones) [63750 SAR]; Progress weight (fair EPC distribution, SAR value) [33480 SAR] | 33,480 | EWR | EDM | EWR | Standard | SAR | Preliminary | Approval | ENG | DOCS | DES | MS3 |
|  | DET | **Detailed design** |  | 2027-09-06 | 2027-10-27 |  |  |  |  |  |  |  |  |  |  |  |  |  |  |  |  |
|  | SUB | **Submittal** |  | 2027-09-06 | 2027-10-06 |  |  |  |  |  |  |  |  |  |  |  |  |  |  |  |  |
| EDM-E1070 |  | Detailed design: submittal (drawings, BOQ, data sheets) - Dammam | 22d | 2027-09-06 | 2027-10-06 | EDM-E1050 | 283d | 0d | Contract cost (BOQ x payment milestones) [124950 SAR]; Progress weight (fair EPC distribution, SAR value) [64480 SAR] | 64,480 | EWR | EDM | EWR | Standard | ETECHS | Detailed | Submittal | ENG | DOCS | DES | MS2 |
|  | APR | **Approval** |  | 2027-10-07 | 2027-10-27 |  |  |  |  |  |  |  |  |  |  |  |  |  |  |  |  |
| EDM-E1080 |  | Detailed design: SAR review and approval - Dammam | 15d | 2027-10-07 | 2027-10-27 | EDM-E1070 | 293d | 10d | Contract cost (BOQ x payment milestones) [127500 SAR]; Progress weight (fair EPC distribution, SAR value) [44020 SAR] | 44,020 | EWR | EDM | EWR | Standard | SAR | Detailed | Approval | ENG | DOCS | DES | MS3 |
|  | IFC | **IFC and shop drawings** |  | 2027-10-07 | 2027-11-10 |  |  |  |  |  |  |  |  |  |  |  |  |  |  |  |  |
|  | SUB | **Submittal** |  | 2027-10-07 | 2027-10-20 |  |  |  |  |  |  |  |  |  |  |  |  |  |  |  |  |
| EDM-E1090 |  | IFC and shop drawings: submittal - Dammam | 10d | 2027-10-07 | 2027-10-20 | EDM-E1070 | 283d | 0d | Contract cost (BOQ x payment milestones) [62475 SAR]; Progress weight (fair EPC distribution, SAR value) [26040 SAR] | 26,040 | EWR | EDM | EWR | Standard | ETECHS | IFC | Submittal | ENG | DOCS | DES | MS2 |
|  | APR | **Approval** |  | 2027-10-21 | 2027-11-10 |  |  |  |  |  |  |  |  |  |  |  |  |  |  |  |  |
| EDM-E1100 |  | IFC and shop drawings: SAR approval and release - Dammam | 15d | 2027-10-21 | 2027-11-10 | EDM-E1090 | 283d | 0d | Contract cost (BOQ x payment milestones) [63750 SAR]; Progress weight (fair EPC distribution, SAR value) [39060 SAR] | 39,060 | EWR | EDM | EWR | Standard | SAR | IFC | Approval | ENG | DOCS | DES | MS3 |

| ID | WBS | Activity | Type | Duration | Start | Finish | Predecessors | Total float | Free float | Resources | Cost | Area | Station | Railway | Priority | Responsibility | Design stage | Submittal or approval | EPC phase | Discipline | Programme phase | Payment milestone |
| --- | --- | --- | --- | --- | --- | --- | --- | --- | --- | --- | --- | --- | --- | --- | --- | --- | --- | --- | --- | --- | --- | --- |
|  | HCS | **HCIS documentation (Stage 3 and 4)** |  |  | 2027-09-16 | 2027-11-10 |  |  |  |  |  |  |  |  |  |  |  |  |  |  |  |  |
|  | SUB | **Submittal** |  |  | 2027-09-16 | 2027-10-20 |  |  |  |  |  |  |  |  |  |  |  |  |  |  |  |  |
| EDM-E1110 |  | HCIS Stage 3 and 4 documents: preparation - Dammam |  | 24d | 2027-09-16 | 2027-10-20 | EDM-E1050 FS+8d, EDM-E1090 FF | 283d | 0d | Contract cost (BOQ x payment milestones) [15619 SAR]; Progress weight (fair EPC distribution, SAR value) [13020 SAR] | 13,020 | EWR | EDM | EWR | Standard | ETECHS | HCIS | Submittal | ENG | DOCS | DES | MS2 |
|  | APR | **Approval** |  |  | 2027-10-21 | 2027-11-10 |  |  |  |  |  |  |  |  |  |  |  |  |  |  |  |  |
| EDM-E1120 |  | HCIS Stage 3 and 4 documents: SAR final review and HCIS submission - Dammam |  | 15d | 2027-10-21 | 2027-11-10 | EDM-E1110 | 283d | 0d | Contract cost (BOQ x payment milestones) [15938 SAR]; Progress weight (fair EPC distribution, SAR value) [8060 SAR] | 8,060 | EWR | EDM | EWR | Standard | SAR/HCIS | HCIS | Approval | ENG | DOCS | DES | MS3 |
|  | ASB | **As-built and O&M documentation** |  |  | 2028-06-08 | 2028-08-09 |  |  |  |  |  |  |  |  |  |  |  |  |  |  |  |  |
|  | SUB | **Submittal** |  |  | 2028-06-08 | 2028-07-19 |  |  |  |  |  |  |  |  |  |  |  |  |  |  |  |  |
| EDM-E1130 |  | As-built and O&M documentation: submittal - Dammam |  | 30d | 2028-06-08 | 2028-07-19 | EDM-C2100 | 283d | 0d | Contract cost (BOQ x payment milestones) [47813 SAR]; Progress weight (fair EPC distribution, SAR value) [24180 SAR] | 24,180 | EWR | EDM | EWR | Standard | ETECHS | As-built | Submittal | ENG | DOCS | COM | MS7 |
|  | APR | **Approval** |  |  | 2028-07-20 | 2028-08-09 |  |  |  |  |  |  |  |  |  |  |  |  |  |  |  |  |
| EDM-E1140 |  | As-built and O&M documentation: SAR review and approval - Dammam |  | 15d | 2028-07-20 | 2028-08-09 | EDM-E1130 | 283d | 0d | Contract cost (BOQ x payment milestones) [15938 SAR]; Progress weight (fair EPC distribution, SAR value) [11780 SAR] | 11,780 | EWR | EDM | EWR | Standard | SAR | As-built | Approval | ENG | DOCS | COM | MS7 |
|  | NQS | **Al Qassim (NSR)** |  |  | 2027-07-07 | 2028-10-04 |  |  |  |  |  |  |  |  |  |  |  |  |  |  |  |  |
| NQS-E1200 |  | MS2 Engineering submittal complete (10%) - Al Qassim | milestone | 0d | 2027-12-07 | 2027-12-07 | NQS-E1090, NQS-E1110 | 258d | 15d |  |  | NSR | NQS | NSR | Standard | ETECHS | - | - | MS | DOCS | MS | MS2 |
| NQS-E1210 |  | MS3 Engineering approved by SAR (10%) - Al Qassim | milestone | 0d | 2027-12-28 | 2027-12-28 | NQS-E1020, NQS-E1040, NQS-E1060, NQS-E1080, NQS-E1100, NQS-E1120, NQS-E1200 | 243d | 0d |  |  | NSR | NQS | NSR | Standard | SAR | - | - | MS | DOCS | MS | MS3 |
|  | SRV | **Site survey and as-found verification** |  |  | 2027-07-07 | 2027-10-13 |  |  |  |  |  |  |  |  |  |  |  |  |  |  |  |  |
|  | SUB | **Submittal** |  |  | 2027-09-08 | 2027-09-21 |  |  |  |  |  |  |  |  |  |  |  |  |  |  |  |  |
| NQS-E1010 |  | Survey: submittal of site survey and as-found report - Al Qassim |  | 10d | 2027-09-08 | 2027-09-21 | NQS-E1005 | 243d | 0d | Contract cost (BOQ x payment milestones) [16655 SAR]; Progress weight (fair EPC distribution, SAR value) [12400 SAR] | 12,400 | NSR | NQS | NSR | Standard | ETECHS | Survey | Submittal | ENG | DOCS | DES | MS2 |
|  | APR | **Approval** |  |  | 2027-09-22 | 2027-10-13 |  |  |  |  |  |  |  |  |  |  |  |  |  |  |  |  |
| NQS-E1020 |  | Survey: SAR approval of survey report - Al Qassim |  | 15d | 2027-09-22 | 2027-10-13 | NQS-E1010 | 297d | 54d | Contract cost (BOQ x payment milestones) [16995 SAR]; Progress weight (fair EPC distribution, SAR value) [18600 SAR] | 18,600 | NSR | NQS | NSR | Standard | SAR | Survey | Approval | ENG | DOCS | DES | MS3 |
|  | PRM | **Site access permit** |  |  | 2027-07-07 | 2027-09-07 |  |  |  |  |  |  |  |  |  |  |  |  |  |  |  |  |
| NQS-E1005 |  | Survey: site access permit - application and approval (two months) - Al Qassim |  | 45d | 2027-07-07 | 2027-09-07 | PRJ-M2100 FS+72d | 243d | 0d | Contract cost (BOQ x payment milestones) [6798 SAR]; Progress weight (fair EPC distribution, SAR value) [8060 SAR] | 8,060 | NSR | NQS | NSR | Standard | SAR | Survey | Approval | ENG | DOCS | MOB | MS2 |
|  | CNC | **Concept design** |  |  | 2027-09-22 | 2027-10-25 |  |  |  |  |  |  |  |  |  |  |  |  |  |  |  |  |
|  | SUB | **Submittal** |  |  | 2027-09-22 | 2027-10-04 |  |  |  |  |  |  |  |  |  |  |  |  |  |  |  |  |
| NQS-E1030 |  | Concept design: submittal - Al Qassim |  | 8d | 2027-09-22 | 2027-10-04 | NQS-E1010 | 243d | 0d | Contract cost (BOQ x payment milestones) [33309 SAR]; Progress weight (fair EPC distribution, SAR value) [13640 SAR] | 13,640 | NSR | NQS | NSR | Standard | ETECHS | Concept | Submittal | ENG | DOCS | DES | MS2 |
|  | APR | **Approval** |  |  | 2027-10-05 | 2027-10-25 |  |  |  |  |  |  |  |  |  |  |  |  |  |  |  |  |
| NQS-E1040 |  | Concept design: SAR review and approval - Al Qassim |  | 15d | 2027-10-05 | 2027-10-25 | NQS-E1030 | 289d | 46d | Contract cost (BOQ x payment milestones) [33989 SAR]; Progress weight (fair EPC distribution, SAR value) [24800 SAR] | 24,800 | NSR | NQS | NSR | Standard | SAR | Concept | Approval | ENG | DOCS | DES | MS3 |

| ID | WBS | Activity | Duration | Start | Finish | Predecessors | Total float | Free float | Resources | Cost | Area | Station | Railway | Priority | Responsibility | Design stage | Submittal or approval | EPC phase | Discipline | Programme phase | Payment milestone |
| --- | --- | --- | --- | --- | --- | --- | --- | --- | --- | --- | --- | --- | --- | --- | --- | --- | --- | --- | --- | --- | --- |
|  | PRE | **Preliminary (schematic) design** |  | 2027-10-05 | 2027-11-14 |  |  |  |  |  |  |  |  |  |  |  |  |  |  |  |  |
|  | SUB | **Submittal** |  | 2027-10-05 | 2027-10-24 |  |  |  |  |  |  |  |  |  |  |  |  |  |  |  |  |
| NQS-E1050 |  | Preliminary design: submittal - Al Qassim | 14d | 2027-10-05 | 2027-10-24 | NQS-E1030 | 243d | 0d | Contract cost (BOQ x payment milestones) [66619 SAR]; Progress weight (fair EPC distribution, SAR value) [33480 SAR] | 33,480 | NSR | NQS | NSR | Standard | ETECHS | Preliminary | Submittal | ENG | DOCS | DES | MS2 |
|  | APR | **Approval** |  | 2027-10-25 | 2027-11-14 |  |  |  |  |  |  |  |  |  |  |  |  |  |  |  |  |
| NQS-E1060 |  | Preliminary design: SAR review and approval - Al Qassim | 15d | 2027-10-25 | 2027-11-14 | NQS-E1050 | 275d | 32d | Contract cost (BOQ x payment milestones) [67978 SAR]; Progress weight (fair EPC distribution, SAR value) [35960 SAR] | 35,960 | NSR | NQS | NSR | Standard | SAR | Preliminary | Approval | ENG | DOCS | DES | MS3 |
|  | DET | **Detailed design** |  | 2027-10-25 | 2027-12-14 |  |  |  |  |  |  |  |  |  |  |  |  |  |  |  |  |
|  | SUB | **Submittal** |  | 2027-10-25 | 2027-11-23 |  |  |  |  |  |  |  |  |  |  |  |  |  |  |  |  |
| NQS-E1070 |  | Detailed design: submittal (drawings, BOQ, data sheets) - Al Qassim | 22d | 2027-10-25 | 2027-11-23 | NQS-E1050 | 243d | 0d | Contract cost (BOQ x payment milestones) [133238 SAR]; Progress weight (fair EPC distribution, SAR value) [68200 SAR] | 68,200 | NSR | NQS | NSR | Standard | ETECHS | Detailed | Submittal | ENG | DOCS | DES | MS2 |
|  | APR | **Approval** |  | 2027-11-24 | 2027-12-14 |  |  |  |  |  |  |  |  |  |  |  |  |  |  |  |  |
| NQS-E1080 |  | Detailed design: SAR review and approval - Al Qassim | 15d | 2027-11-24 | 2027-12-14 | NQS-E1070 | 253d | 10d | Contract cost (BOQ x payment milestones) [135957 SAR]; Progress weight (fair EPC distribution, SAR value) [46500 SAR] | 46,500 | NSR | NQS | NSR | Standard | SAR | Detailed | Approval | ENG | DOCS | DES | MS3 |
|  | IFC | **IFC and shop drawings** |  | 2027-11-24 | 2027-12-28 |  |  |  |  |  |  |  |  |  |  |  |  |  |  |  |  |
|  | SUB | **Submittal** |  | 2027-11-24 | 2027-12-07 |  |  |  |  |  |  |  |  |  |  |  |  |  |  |  |  |
| NQS-E1090 |  | IFC and shop drawings: submittal - Al Qassim | 10d | 2027-11-24 | 2027-12-07 | NQS-E1070 | 243d | 0d | Contract cost (BOQ x payment milestones) [66619 SAR]; Progress weight (fair EPC distribution, SAR value) [27900 SAR] | 27,900 | NSR | NQS | NSR | Standard | ETECHS | IFC | Submittal | ENG | DOCS | DES | MS2 |
|  | APR | **Approval** |  | 2027-12-08 | 2027-12-28 |  |  |  |  |  |  |  |  |  |  |  |  |  |  |  |  |
| NQS-E1100 |  | IFC and shop drawings: SAR approval and release - Al Qassim | 15d | 2027-12-08 | 2027-12-28 | NQS-E1090 | 243d | 0d | Contract cost (BOQ x payment milestones) [67978 SAR]; Progress weight (fair EPC distribution, SAR value) [41540 SAR] | 41,540 | NSR | NQS | NSR | Standard | SAR | IFC | Approval | ENG | DOCS | DES | MS3 |
|  | HCS | **HCIS documentation (Stage 3 and 4)** |  | 2027-11-04 | 2027-12-28 |  |  |  |  |  |  |  |  |  |  |  |  |  |  |  |  |
|  | SUB | **Submittal** |  | 2027-11-04 | 2027-12-07 |  |  |  |  |  |  |  |  |  |  |  |  |  |  |  |  |
| NQS-E1110 |  | HCIS Stage 3 and 4 documents: preparation - Al Qassim | 24d | 2027-11-04 | 2027-12-07 | NQS-E1050 FS+8d, NQS-E1090 FF | 243d | 0d | Contract cost (BOQ x payment milestones) [16655 SAR]; Progress weight (fair EPC distribution, SAR value) [14260 SAR] | 14,260 | NSR | NQS | NSR | Standard | ETECHS | HCIS | Submittal | ENG | DOCS | DES | MS2 |
|  | APR | **Approval** |  | 2027-12-08 | 2027-12-28 |  |  |  |  |  |  |  |  |  |  |  |  |  |  |  |  |
| NQS-E1120 |  | HCIS Stage 3 and 4 documents: SAR final review and HCIS submission - Al Qassim | 15d | 2027-12-08 | 2027-12-28 | NQS-E1110 | 243d | 0d | Contract cost (BOQ x payment milestones) [16995 SAR]; Progress weight (fair EPC distribution, SAR value) [8680 SAR] | 8,680 | NSR | NQS | NSR | Standard | SAR/HCIS | HCIS | Approval | ENG | DOCS | DES | MS3 |
|  | ASB | **As-built and O&M documentation** |  | 2028-08-03 | 2028-10-04 |  |  |  |  |  |  |  |  |  |  |  |  |  |  |  |  |
|  | SUB | **Submittal** |  | 2028-08-03 | 2028-09-13 |  |  |  |  |  |  |  |  |  |  |  |  |  |  |  |  |
| NQS-E1130 |  | As-built and O&M documentation: submittal - Al Qassim | 30d | 2028-08-03 | 2028-09-13 | NQS-C2100 | 243d | 0d | Contract cost (BOQ x payment milestones) [50984 SAR]; Progress weight (fair EPC distribution, SAR value) [25420 SAR] | 25,420 | NSR | NQS | NSR | Standard | ETECHS | As-built | Submittal | ENG | DOCS | COM | MS7 |
|  | APR | **Approval** |  | 2028-09-14 | 2028-10-04 |  |  |  |  |  |  |  |  |  |  |  |  |  |  |  |  |
| NQS-E1140 |  | As-built and O&M documentation: SAR review and approval - Al Qassim | 15d | 2028-09-14 | 2028-10-04 | NQS-E1130 | 243d | 0d | Contract cost (BOQ x payment milestones) [16995 SAR]; Progress weight (fair EPC distribution, SAR value) [13020 SAR] | 13,020 | NSR | NQS | NSR | Standard | SAR | As-built | Approval | ENG | DOCS | COM | MS7 |

| ID | WBS | Activity | Type | Duration | Start | Finish | Predecessors | Total float | Free float | Resources | Cost | Area | Station | Railway | Priority | EPC phase | Discipline | Responsibility | Design stage | Submittal or approval | Payment milestone | Programme phase |
| --- | --- | --- | --- | --- | --- | --- | --- | --- | --- | --- | --- | --- | --- | --- | --- | --- | --- | --- | --- | --- | --- | --- |
|  | EHF | **Hufuf (EWR)** |  |  | 2027-07-07 | 2028-09-26 |  |  |  |  |  |  |  |  |  |  |  |  |  |  |  |  |
| EHF-E1200 |  | MS2 Engineering submittal complete (10%) - Hufuf | milestone | 0d | 2027-12-07 | 2027-12-07 | EHF-E1090, EHF-E1110 | 264d | 15d |  |  | EWR | EHF | EWR | Standard | MS | DOCS | ETECHS | - | - | MS2 | MS |
| EHF-E1210 |  | MS3 Engineering approved by SAR (10%) - Hufuf | milestone | 0d | 2027-12-28 | 2027-12-28 | EHF-E1020, EHF-E1040, EHF-E1060, EHF-E1080, EHF-E1100, EHF-E1120, EHF-E1200 | 249d | 0d |  |  | EWR | EHF | EWR | Standard | MS | DOCS | SAR | - | - | MS3 | MS |
|  | SRV | **Site survey and as-found verification** |  |  | 2027-07-07 | 2027-10-13 |  |  |  |  |  |  |  |  |  |  |  |  |  |  |  |  |
|  | SUB | **Submittal** |  |  | 2027-09-08 | 2027-09-21 |  |  |  |  |  |  |  |  |  |  |  |  |  |  |  |  |
| EHF-E1010 |  | Survey: submittal of site survey and as-found report - Hufuf |  | 10d | 2027-09-08 | 2027-09-21 | EHF-E1005 | 249d | 0d | Contract cost (BOQ x payment milestones) [13860 SAR]; Progress weight (fair EPC distribution, SAR value) [9920 SAR] | 9,920 | EWR | EHF | EWR | Standard | ENG | DOCS | ETECHS | Survey | Submittal | MS2 | DES |
|  | APR | **Approval** |  |  | 2027-09-22 | 2027-10-13 |  |  |  |  |  |  |  |  |  |  |  |  |  |  |  |  |
| EHF-E1020 |  | Survey: SAR approval of survey report - Hufuf |  | 15d | 2027-09-22 | 2027-10-13 | EHF-E1010 | 303d | 54d | Contract cost (BOQ x payment milestones) [14143 SAR]; Progress weight (fair EPC distribution, SAR value) [15500 SAR] | 15,500 | EWR | EHF | EWR | Standard | ENG | DOCS | SAR | Survey | Approval | MS3 | DES |
|  | PRM | **Site access permit** |  |  | 2027-07-07 | 2027-09-07 |  |  |  |  |  |  |  |  |  |  |  |  |  |  |  |  |
| EHF-E1005 |  | Survey: site access permit - application and approval (two months) - Hufuf |  | 45d | 2027-07-07 | 2027-09-07 | PRJ-M2100 FS+72d | 249d | 0d | Contract cost (BOQ x payment milestones) [5657 SAR]; Progress weight (fair EPC distribution, SAR value) [6820 SAR] | 6,820 | EWR | EHF | EWR | Standard | ENG | DOCS | SAR | Survey | Approval | MS2 | MOB |
|  | CNC | **Concept design** |  |  | 2027-09-22 | 2027-10-25 |  |  |  |  |  |  |  |  |  |  |  |  |  |  |  |  |
|  | SUB | **Submittal** |  |  | 2027-09-22 | 2027-10-04 |  |  |  |  |  |  |  |  |  |  |  |  |  |  |  |  |
| EHF-E1030 |  | Concept design: submittal - Hufuf |  | 8d | 2027-09-22 | 2027-10-04 | EHF-E1010 | 249d | 0d | Contract cost (BOQ x payment milestones) [27719 SAR]; Progress weight (fair EPC distribution, SAR value) [11160 SAR] | 11,160 | EWR | EHF | EWR | Standard | ENG | DOCS | ETECHS | Concept | Submittal | MS2 | DES |
|  | APR | **Approval** |  |  | 2027-10-05 | 2027-10-25 |  |  |  |  |  |  |  |  |  |  |  |  |  |  |  |  |
| EHF-E1040 |  | Concept design: SAR review and approval - Hufuf |  | 15d | 2027-10-05 | 2027-10-25 | EHF-E1030 | 295d | 46d | Contract cost (BOQ x payment milestones) [28285 SAR]; Progress weight (fair EPC distribution, SAR value) [21080 SAR] | 21,080 | EWR | EHF | EWR | Standard | ENG | DOCS | SAR | Concept | Approval | MS3 | DES |
|  | PRE | **Preliminary (schematic) design** |  |  | 2027-10-05 | 2027-11-14 |  |  |  |  |  |  |  |  |  |  |  |  |  |  |  |  |
|  | SUB | **Submittal** |  |  | 2027-10-05 | 2027-10-24 |  |  |  |  |  |  |  |  |  |  |  |  |  |  |  |  |
| EHF-E1050 |  | Preliminary design: submittal - Hufuf |  | 14d | 2027-10-05 | 2027-10-24 | EHF-E1030 | 249d | 0d | Contract cost (BOQ x payment milestones) [55439 SAR]; Progress weight (fair EPC distribution, SAR value) [27900 SAR] | 27,900 | EWR | EHF | EWR | Standard | ENG | DOCS | ETECHS | Preliminary | Submittal | MS2 | DES |
|  | APR | **Approval** |  |  | 2027-10-25 | 2027-11-14 |  |  |  |  |  |  |  |  |  |  |  |  |  |  |  |  |
| EHF-E1060 |  | Preliminary design: SAR review and approval - Hufuf |  | 15d | 2027-10-25 | 2027-11-14 | EHF-E1050 | 281d | 32d | Contract cost (BOQ x payment milestones) [56570 SAR]; Progress weight (fair EPC distribution, SAR value) [29760 SAR] | 29,760 | EWR | EHF | EWR | Standard | ENG | DOCS | SAR | Preliminary | Approval | MS3 | DES |
|  | DET | **Detailed design** |  |  | 2027-10-25 | 2027-12-14 |  |  |  |  |  |  |  |  |  |  |  |  |  |  |  |  |
|  | SUB | **Submittal** |  |  | 2027-10-25 | 2027-11-23 |  |  |  |  |  |  |  |  |  |  |  |  |  |  |  |  |
| EHF-E1070 |  | Detailed design: submittal (drawings, BOQ, data sheets) - Hufuf |  | 22d | 2027-10-25 | 2027-11-23 | EHF-E1050 | 249d | 0d | Contract cost (BOQ x payment milestones) [110877 SAR]; Progress weight (fair EPC distribution, SAR value) [57040 SAR] | 57,040 | EWR | EHF | EWR | Standard | ENG | DOCS | ETECHS | Detailed | Submittal | MS2 | DES |
|  | APR | **Approval** |  |  | 2027-11-24 | 2027-12-14 |  |  |  |  |  |  |  |  |  |  |  |  |  |  |  |  |
| EHF-E1080 |  | Detailed design: SAR review and approval - Hufuf |  | 15d | 2027-11-24 | 2027-12-14 | EHF-E1070 | 259d | 10d | Contract cost (BOQ x payment milestones) [113140 SAR]; Progress weight (fair EPC distribution, SAR value) [39060 SAR] | 39,060 | EWR | EHF | EWR | Standard | ENG | DOCS | SAR | Detailed | Approval | MS3 | DES |

| ID | WBS | Activity | Type | Duration | Start | Finish | Predecessors | Total float | Free float | Resources | Cost | Area | Station | Railway | Priority | Responsibility | Design stage | Submittal or approval | EPC phase | Discipline | Programme phase | Payment milestone |
| --- | --- | --- | --- | --- | --- | --- | --- | --- | --- | --- | --- | --- | --- | --- | --- | --- | --- | --- | --- | --- | --- | --- |
|  | IFC | **IFC and shop drawings** |  |  | 2027-11-24 | 2027-12-28 |  |  |  |  |  |  |  |  |  |  |  |  |  |  |  |  |
|  | SUB | **Submittal** |  |  | 2027-11-24 | 2027-12-07 |  |  |  |  |  |  |  |  |  |  |  |  |  |  |  |  |
| EHF-E1090 |  | IFC and shop drawings: submittal - Hufuf |  | 10d | 2027-11-24 | 2027-12-07 | EHF-E1070 | 249d | 0d | Contract cost (BOQ x payment milestones) [55439 SAR]; Progress weight (fair EPC distribution, SAR value) [22940 SAR] | 22,940 | EWR | EHF | EWR | Standard | ETECHS | IFC | Submittal | ENG | DOCS | DES | MS2 |
|  | APR | **Approval** |  |  | 2027-12-08 | 2027-12-28 |  |  |  |  |  |  |  |  |  |  |  |  |  |  |  |  |
| EHF-E1100 |  | IFC and shop drawings: SAR approval and release - Hufuf |  | 15d | 2027-12-08 | 2027-12-28 | EHF-E1090 | 249d | 0d | Contract cost (BOQ x payment milestones) [56570 SAR]; Progress weight (fair EPC distribution, SAR value) [34720 SAR] | 34,720 | EWR | EHF | EWR | Standard | SAR | IFC | Approval | ENG | DOCS | DES | MS3 |
|  | HCS | **HCIS documentation (Stage 3 and 4)** |  |  | 2027-11-04 | 2027-12-28 |  |  |  |  |  |  |  |  |  |  |  |  |  |  |  |  |
|  | SUB | **Submittal** |  |  | 2027-11-04 | 2027-12-07 |  |  |  |  |  |  |  |  |  |  |  |  |  |  |  |  |
| EHF-E1110 |  | HCIS Stage 3 and 4 documents: preparation - Hufuf |  | 24d | 2027-11-04 | 2027-12-07 | EHF-E1050 FS+8d, EHF-E1090 FF | 249d | 0d | Contract cost (BOQ x payment milestones) [13860 SAR]; Progress weight (fair EPC distribution, SAR value) [11780 SAR] | 11,780 | EWR | EHF | EWR | Standard | ETECHS | HCIS | Submittal | ENG | DOCS | DES | MS2 |
|  | APR | **Approval** |  |  | 2027-12-08 | 2027-12-28 |  |  |  |  |  |  |  |  |  |  |  |  |  |  |  |  |
| EHF-E1120 |  | HCIS Stage 3 and 4 documents: SAR final review and HCIS submission - Hufuf |  | 15d | 2027-12-08 | 2027-12-28 | EHF-E1110 | 249d | 0d | Contract cost (BOQ x payment milestones) [14143 SAR]; Progress weight (fair EPC distribution, SAR value) [7440 SAR] | 7,440 | EWR | EHF | EWR | Standard | SAR/HCIS | HCIS | Approval | ENG | DOCS | DES | MS3 |
|  | ASB | **As-built and O&M documentation** |  |  | 2028-07-26 | 2028-09-26 |  |  |  |  |  |  |  |  |  |  |  |  |  |  |  |  |
|  | SUB | **Submittal** |  |  | 2028-07-26 | 2028-09-05 |  |  |  |  |  |  |  |  |  |  |  |  |  |  |  |  |
| EHF-E1130 |  | As-built and O&M documentation: submittal - Hufuf |  | 30d | 2028-07-26 | 2028-09-05 | EHF-C2100 | 249d | 0d | Contract cost (BOQ x payment milestones) [42428 SAR]; Progress weight (fair EPC distribution, SAR value) [21080 SAR] | 21,080 | EWR | EHF | EWR | Standard | ETECHS | As-built | Submittal | ENG | DOCS | COM | MS7 |
|  | APR | **Approval** |  |  | 2028-09-06 | 2028-09-26 |  |  |  |  |  |  |  |  |  |  |  |  |  |  |  |  |
| EHF-E1140 |  | As-built and O&M documentation: SAR review and approval - Hufuf |  | 15d | 2028-09-06 | 2028-09-26 | EHF-E1130 | 249d | 0d | Contract cost (BOQ x payment milestones) [14143 SAR]; Progress weight (fair EPC distribution, SAR value) [10540 SAR] | 10,540 | EWR | EHF | EWR | Standard | SAR | As-built | Approval | ENG | DOCS | COM | MS7 |
|  | NMJ | **Al Majma'ah (NSR)** |  |  | 2027-08-17 | 2028-11-14 |  |  |  |  |  |  |  |  |  |  |  |  |  |  |  |  |
| NMJ-E1200 |  | MS2 Engineering submittal complete (10%) - Al Majma'ah | milestone | 0d | 2028-01-17 | 2028-01-17 | NMJ-E1090, NMJ-E1110 | 229d | 15d |  |  | NSR | NMJ | NSR | Standard | ETECHS | - | - | MS | DOCS | MS | MS2 |
| NMJ-E1210 |  | MS3 Engineering approved by SAR (10%) - Al Majma'ah | milestone | 0d | 2028-02-07 | 2028-02-07 | NMJ-E1020, NMJ-E1040, NMJ-E1060, NMJ-E1080, NMJ-E1100, NMJ-E1120, NMJ-E1200 | 214d | 0d |  |  | NSR | NMJ | NSR | Standard | SAR | - | - | MS | DOCS | MS | MS3 |
|  | SRV | **Site survey and as-found verification** |  |  | 2027-08-17 | 2027-11-23 |  |  |  |  |  |  |  |  |  |  |  |  |  |  |  |  |
|  | SUB | **Submittal** |  |  | 2027-10-20 | 2027-11-02 |  |  |  |  |  |  |  |  |  |  |  |  |  |  |  |  |
| NMJ-E1010 |  | Survey: submittal of site survey and as-found report - Al Majma'ah |  | 10d | 2027-10-20 | 2027-11-02 | NMJ-E1005 | 214d | 0d | Contract cost (BOQ x payment milestones) [16655 SAR]; Progress weight (fair EPC distribution, SAR value) [12400 SAR] | 12,400 | NSR | NMJ | NSR | Standard | ETECHS | Survey | Submittal | ENG | DOCS | DES | MS2 |
|  | APR | **Approval** |  |  | 2027-11-03 | 2027-11-23 |  |  |  |  |  |  |  |  |  |  |  |  |  |  |  |  |
| NMJ-E1020 |  | Survey: SAR approval of survey report - Al Majma'ah |  | 15d | 2027-11-03 | 2027-11-23 | NMJ-E1010 | 268d | 54d | Contract cost (BOQ x payment milestones) [16995 SAR]; Progress weight (fair EPC distribution, SAR value) [18600 SAR] | 18,600 | NSR | NMJ | NSR | Standard | SAR | Survey | Approval | ENG | DOCS | DES | MS3 |
|  | PRM | **Site access permit** |  |  | 2027-08-17 | 2027-10-19 |  |  |  |  |  |  |  |  |  |  |  |  |  |  |  |  |
| NMJ-E1005 |  | Survey: site access permit - application and approval (two months) - Al Majma'ah |  | 45d | 2027-08-17 | 2027-10-19 | PRJ-M2100 FS+101d | 214d | 0d | Contract cost (BOQ x payment milestones) [6798 SAR]; Progress weight (fair EPC distribution, SAR value) [8060 SAR] | 8,060 | NSR | NMJ | NSR | Standard | SAR | Survey | Approval | ENG | DOCS | MOB | MS2 |

| ID | WBS | Activity | Duration | Start | Finish | Predecessors | Total float | Free float | Resources | Cost | Area | Station | Railway | Priority | Responsibility | Design stage | Submittal or approval | EPC phase | Discipline | Programme phase | Payment milestone |
| --- | --- | --- | --- | --- | --- | --- | --- | --- | --- | --- | --- | --- | --- | --- | --- | --- | --- | --- | --- | --- | --- |
|  | CNC | **Concept design** |  | 2027-11-03 | 2027-12-05 |  |  |  |  |  |  |  |  |  |  |  |  |  |  |  |  |
|  | SUB | **Submittal** |  | 2027-11-03 | 2027-11-14 |  |  |  |  |  |  |  |  |  |  |  |  |  |  |  |  |
| NMJ-E1030 |  | Concept design: submittal - Al Majma'ah | 8d | 2027-11-03 | 2027-11-14 | NMJ-E1010 | 214d | 0d | Contract cost (BOQ x payment milestones) [33309 SAR]; Progress weight (fair EPC distribution, SAR value) [13640 SAR] | 13,640 | NSR | NMJ | NSR | Standard | ETECHS | Concept | Submittal | ENG | DOCS | DES | MS2 |
|  | APR | **Approval** |  | 2027-11-15 | 2027-12-05 |  |  |  |  |  |  |  |  |  |  |  |  |  |  |  |  |
| NMJ-E1040 |  | Concept design: SAR review and approval - Al Majma'ah | 15d | 2027-11-15 | 2027-12-05 | NMJ-E1030 | 260d | 46d | Contract cost (BOQ x payment milestones) [33989 SAR]; Progress weight (fair EPC distribution, SAR value) [24800 SAR] | 24,800 | NSR | NMJ | NSR | Standard | SAR | Concept | Approval | ENG | DOCS | DES | MS3 |
|  | PRE | **Preliminary (schematic) design** |  | 2027-11-15 | 2027-12-23 |  |  |  |  |  |  |  |  |  |  |  |  |  |  |  |  |
|  | SUB | **Submittal** |  | 2027-11-15 | 2027-12-02 |  |  |  |  |  |  |  |  |  |  |  |  |  |  |  |  |
| NMJ-E1050 |  | Preliminary design: submittal - Al Majma'ah | 14d | 2027-11-15 | 2027-12-02 | NMJ-E1030 | 214d | 0d | Contract cost (BOQ x payment milestones) [66619 SAR]; Progress weight (fair EPC distribution, SAR value) [33480 SAR] | 33,480 | NSR | NMJ | NSR | Standard | ETECHS | Preliminary | Submittal | ENG | DOCS | DES | MS2 |
|  | APR | **Approval** |  | 2027-12-05 | 2027-12-23 |  |  |  |  |  |  |  |  |  |  |  |  |  |  |  |  |
| NMJ-E1060 |  | Preliminary design: SAR review and approval - Al Majma'ah | 15d | 2027-12-05 | 2027-12-23 | NMJ-E1050 | 246d | 32d | Contract cost (BOQ x payment milestones) [67978 SAR]; Progress weight (fair EPC distribution, SAR value) [35960 SAR] | 35,960 | NSR | NMJ | NSR | Standard | SAR | Preliminary | Approval | ENG | DOCS | DES | MS3 |
|  | DET | **Detailed design** |  | 2027-12-05 | 2028-01-24 |  |  |  |  |  |  |  |  |  |  |  |  |  |  |  |  |
|  | SUB | **Submittal** |  | 2027-12-05 | 2028-01-03 |  |  |  |  |  |  |  |  |  |  |  |  |  |  |  |  |
| NMJ-E1070 |  | Detailed design: submittal (drawings, BOQ, data sheets) - Al Majma'ah | 22d | 2027-12-05 | 2028-01-03 | NMJ-E1050 | 214d | 0d | Contract cost (BOQ x payment milestones) [133238 SAR]; Progress weight (fair EPC distribution, SAR value) [68200 SAR] | 68,200 | NSR | NMJ | NSR | Standard | ETECHS | Detailed | Submittal | ENG | DOCS | DES | MS2 |
|  | APR | **Approval** |  | 2028-01-04 | 2028-01-24 |  |  |  |  |  |  |  |  |  |  |  |  |  |  |  |  |
| NMJ-E1080 |  | Detailed design: SAR review and approval - Al Majma'ah | 15d | 2028-01-04 | 2028-01-24 | NMJ-E1070 | 224d | 10d | Contract cost (BOQ x payment milestones) [135957 SAR]; Progress weight (fair EPC distribution, SAR value) [46500 SAR] | 46,500 | NSR | NMJ | NSR | Standard | SAR | Detailed | Approval | ENG | DOCS | DES | MS3 |
|  | IFC | **IFC and shop drawings** |  | 2028-01-04 | 2028-02-07 |  |  |  |  |  |  |  |  |  |  |  |  |  |  |  |  |
|  | SUB | **Submittal** |  | 2028-01-04 | 2028-01-17 |  |  |  |  |  |  |  |  |  |  |  |  |  |  |  |  |
| NMJ-E1090 |  | IFC and shop drawings: submittal - Al Majma'ah | 10d | 2028-01-04 | 2028-01-17 | NMJ-E1070 | 214d | 0d | Contract cost (BOQ x payment milestones) [66619 SAR]; Progress weight (fair EPC distribution, SAR value) [27900 SAR] | 27,900 | NSR | NMJ | NSR | Standard | ETECHS | IFC | Submittal | ENG | DOCS | DES | MS2 |
|  | APR | **Approval** |  | 2028-01-18 | 2028-02-07 |  |  |  |  |  |  |  |  |  |  |  |  |  |  |  |  |
| NMJ-E1100 |  | IFC and shop drawings: SAR approval and release - Al Majma'ah | 15d | 2028-01-18 | 2028-02-07 | NMJ-E1090 | 214d | 0d | Contract cost (BOQ x payment milestones) [67978 SAR]; Progress weight (fair EPC distribution, SAR value) [41540 SAR] | 41,540 | NSR | NMJ | NSR | Standard | SAR | IFC | Approval | ENG | DOCS | DES | MS3 |
|  | HCS | **HCIS documentation (Stage 3 and 4)** |  | 2027-12-15 | 2028-02-07 |  |  |  |  |  |  |  |  |  |  |  |  |  |  |  |  |
|  | SUB | **Submittal** |  | 2027-12-15 | 2028-01-17 |  |  |  |  |  |  |  |  |  |  |  |  |  |  |  |  |
| NMJ-E1110 |  | HCIS Stage 3 and 4 documents: preparation - Al Majma'ah | 24d | 2027-12-15 | 2028-01-17 | NMJ-E1050 FS+8d, NMJ-E1090 FF | 214d | 0d | Contract cost (BOQ x payment milestones) [16655 SAR]; Progress weight (fair EPC distribution, SAR value) [14260 SAR] | 14,260 | NSR | NMJ | NSR | Standard | ETECHS | HCIS | Submittal | ENG | DOCS | DES | MS2 |
|  | APR | **Approval** |  | 2028-01-18 | 2028-02-07 |  |  |  |  |  |  |  |  |  |  |  |  |  |  |  |  |
| NMJ-E1120 |  | HCIS Stage 3 and 4 documents: SAR final review and HCIS submission - Al Majma'ah | 15d | 2028-01-18 | 2028-02-07 | NMJ-E1110 | 214d | 0d | Contract cost (BOQ x payment milestones) [16995 SAR]; Progress weight (fair EPC distribution, SAR value) [8680 SAR] | 8,680 | NSR | NMJ | NSR | Standard | SAR/HCIS | HCIS | Approval | ENG | DOCS | DES | MS3 |

| ID | WBS | Activity | Type | Duration | Start | Finish | Predecessors | Total float | Free float | Resources | Cost | Area | Station | Railway | Priority | Responsibility | Design stage | Submittal or approval | EPC phase | Discipline | Programme phase | Payment milestone |
| --- | --- | --- | --- | --- | --- | --- | --- | --- | --- | --- | --- | --- | --- | --- | --- | --- | --- | --- | --- | --- | --- | --- |
|  | ASB | **As-built and O&M documentation** |  |  | 2028-09-13 | 2028-11-14 |  |  |  |  |  |  |  |  |  |  |  |  |  |  |  |  |
|  | SUB | **Submittal** |  |  | 2028-09-13 | 2028-10-24 |  |  |  |  |  |  |  |  |  |  |  |  |  |  |  |  |
| NMJ-E1130 |  | As-built and O&M documentation: submittal - Al Majma'ah |  | 30d | 2028-09-13 | 2028-10-24 | NMJ-C2100 | 214d | 0d | Contract cost (BOQ x payment milestones) [50984 SAR]; Progress weight (fair EPC distribution, SAR value) [25420 SAR] | 25,420 | NSR | NMJ | NSR | Standard | ETECHS | As-built | Submittal | ENG | DOCS | COM | MS7 |
|  | APR | **Approval** |  |  | 2028-10-25 | 2028-11-14 |  |  |  |  |  |  |  |  |  |  |  |  |  |  |  |  |
| NMJ-E1140 |  | As-built and O&M documentation: SAR review and approval - Al Majma'ah |  | 15d | 2028-10-25 | 2028-11-14 | NMJ-E1130 | 214d | 0d | Contract cost (BOQ x payment milestones) [16995 SAR]; Progress weight (fair EPC distribution, SAR value) [13020 SAR] | 13,020 | NSR | NMJ | NSR | Standard | SAR | As-built | Approval | ENG | DOCS | COM | MS7 |
|  | HKA | **KAEC (HHR)** |  |  | 2027-11-30 | 2029-06-19 |  |  |  |  |  |  |  |  |  |  |  |  |  |  |  |  |
| HKA-E1200 |  | MS2 Engineering submittal complete (10%) - KAEC | milestone | 0d | 2028-05-14 | 2028-05-14 | HKA-E1090, HKA-E1110 | 85d | 15d |  |  | HHR | HKA | HHR | Standard | ETECHS | - | - | MS | DOCS | MS | MS2 |
| HKA-E1210 |  | MS3 Engineering approved by SAR (10%) - KAEC | milestone | 0d | 2028-06-04 | 2028-06-04 | HKA-E1020, HKA-E1040, HKA-E1060, HKA-E1080, HKA-E1100, HKA-E1120, HKA-E1200 | 70d | 0d |  |  | HHR | HKA | HHR | Standard | SAR | - | - | MS | DOCS | MS | MS3 |
|  | SRV | **Site survey and as-found verification** |  |  | 2027-11-30 | 2028-03-27 |  |  |  |  |  |  |  |  |  |  |  |  |  |  |  |  |
|  | SUB | **Submittal** |  |  | 2028-02-01 | 2028-03-06 |  |  |  |  |  |  |  |  |  |  |  |  |  |  |  |  |
| HKA-E1010 |  | Survey: submittal of site survey and as-found report - KAEC |  | 20d | 2028-02-01 | 2028-03-06 | HKA-E1005 | 70d | 0d | Contract cost (BOQ x payment milestones) [27265 SAR]; Progress weight (fair EPC distribution, SAR value) [28520 SAR] | 28,520 | HHR | HKA | HHR | Standard | ETECHS | Survey | Submittal | ENG | DOCS | DES | MS2 |
|  | APR | **Approval** |  |  | 2028-03-07 | 2028-03-27 |  |  |  |  |  |  |  |  |  |  |  |  |  |  |  |  |
| HKA-E1020 |  | Survey: SAR approval of survey report - KAEC |  | 15d | 2028-03-07 | 2028-03-27 | HKA-E1010 | 114d | 44d | Contract cost (BOQ x payment milestones) [27822 SAR]; Progress weight (fair EPC distribution, SAR value) [21700 SAR] | 21,700 | HHR | HKA | HHR | Standard | SAR | Survey | Approval | ENG | DOCS | DES | MS3 |
|  | PRM | **Site access permit** |  |  | 2027-11-30 | 2028-01-31 |  |  |  |  |  |  |  |  |  |  |  |  |  |  |  |  |
| HKA-E1005 |  | Survey: site access permit - application and approval (two months) - KAEC |  | 45d | 2027-11-30 | 2028-01-31 | PRJ-M2100 FS+175d | 70d | 0d | Contract cost (BOQ x payment milestones) [11129 SAR]; Progress weight (fair EPC distribution, SAR value) [13020 SAR] | 13,020 | HHR | HKA | HHR | Standard | SAR | Survey | Approval | ENG | DOCS | MOB | MS2 |
|  | CNC | **Concept design** |  |  | 2028-03-07 | 2028-04-05 |  |  |  |  |  |  |  |  |  |  |  |  |  |  |  |  |
|  | SUB | **Submittal** |  |  | 2028-03-07 | 2028-03-15 |  |  |  |  |  |  |  |  |  |  |  |  |  |  |  |  |
| HKA-E1030 |  | Concept design: submittal - KAEC |  | 7d | 2028-03-07 | 2028-03-15 | HKA-E1010 | 70d | 0d | Contract cost (BOQ x payment milestones) [54531 SAR]; Progress weight (fair EPC distribution, SAR value) [19840 SAR] | 19,840 | HHR | HKA | HHR | Standard | ETECHS | Concept | Submittal | ENG | DOCS | DES | MS2 |
|  | APR | **Approval** |  |  | 2028-03-16 | 2028-04-05 |  |  |  |  |  |  |  |  |  |  |  |  |  |  |  |  |
| HKA-E1040 |  | Concept design: SAR review and approval - KAEC |  | 15d | 2028-03-16 | 2028-04-05 | HKA-E1030 | 107d | 37d | Contract cost (BOQ x payment milestones) [55644 SAR]; Progress weight (fair EPC distribution, SAR value) [42780 SAR] | 42,780 | HHR | HKA | HHR | Standard | SAR | Concept | Approval | ENG | DOCS | DES | MS3 |
|  | PRE | **Preliminary (schematic) design** |  |  | 2028-03-16 | 2028-04-20 |  |  |  |  |  |  |  |  |  |  |  |  |  |  |  |  |
|  | SUB | **Submittal** |  |  | 2028-03-16 | 2028-03-30 |  |  |  |  |  |  |  |  |  |  |  |  |  |  |  |  |
| HKA-E1050 |  | Preliminary design: submittal - KAEC |  | 11d | 2028-03-16 | 2028-03-30 | HKA-E1030 | 70d | 0d | Contract cost (BOQ x payment milestones) [109062 SAR]; Progress weight (fair EPC distribution, SAR value) [47740 SAR] | 47,740 | HHR | HKA | HHR | Standard | ETECHS | Preliminary | Submittal | ENG | DOCS | DES | MS2 |
|  | APR | **Approval** |  |  | 2028-04-02 | 2028-04-20 |  |  |  |  |  |  |  |  |  |  |  |  |  |  |  |  |
| HKA-E1060 |  | Preliminary design: SAR review and approval - KAEC |  | 15d | 2028-04-02 | 2028-04-20 | HKA-E1050 | 96d | 26d | Contract cost (BOQ x payment milestones) [111288 SAR]; Progress weight (fair EPC distribution, SAR value) [65100 SAR] | 65,100 | HHR | HKA | HHR | Standard | SAR | Preliminary | Approval | ENG | DOCS | DES | MS3 |

| ID | WBS | Activity | Type | Duration | Start | Finish | Predecessors | Total float | Free float | Resources | Cost | Area | Station | Railway | Priority | Responsibility | Design stage | Submittal or approval | EPC phase | Discipline | Programme phase | Payment milestone |
| --- | --- | --- | --- | --- | --- | --- | --- | --- | --- | --- | --- | --- | --- | --- | --- | --- | --- | --- | --- | --- | --- | --- |
|  | DET | **Detailed design** |  |  | 2028-04-02 | 2028-05-23 |  |  |  |  |  |  |  |  |  |  |  |  |  |  |  |  |
|  | SUB | **Submittal** |  |  | 2028-04-02 | 2028-04-25 |  |  |  |  |  |  |  |  |  |  |  |  |  |  |  |  |
| HKA-E1070 |  | Detailed design: submittal (drawings, BOQ, data sheets) - KAEC |  | 18d | 2028-04-02 | 2028-04-25 | HKA-E1050 | 70d | 0d | Contract cost (BOQ x payment milestones) [218124 SAR]; Progress weight (fair EPC distribution, SAR value) [102920 SAR] | 102,920 | HHR | HKA | HHR | Standard | ETECHS | Detailed | Submittal | ENG | DOCS | DES | MS2 |
|  | APR | **Approval** |  |  | 2028-04-26 | 2028-05-23 |  |  |  |  |  |  |  |  |  |  |  |  |  |  |  |  |
| HKA-E1080 |  | Detailed design: SAR review and approval - KAEC |  | 15d | 2028-04-26 | 2028-05-23 | HKA-E1070 | 78d | 8d | Contract cost (BOQ x payment milestones) [222575 SAR]; Progress weight (fair EPC distribution, SAR value) [85560 SAR] | 85,560 | HHR | HKA | HHR | Standard | SAR | Detailed | Approval | ENG | DOCS | DES | MS3 |
|  | IFC | **IFC and shop drawings** |  |  | 2028-04-26 | 2028-06-04 |  |  |  |  |  |  |  |  |  |  |  |  |  |  |  |  |
|  | SUB | **Submittal** |  |  | 2028-04-26 | 2028-05-14 |  |  |  |  |  |  |  |  |  |  |  |  |  |  |  |  |
| HKA-E1090 |  | IFC and shop drawings: submittal - KAEC |  | 8d | 2028-04-26 | 2028-05-14 | HKA-E1070 | 70d | 0d | Contract cost (BOQ x payment milestones) [109062 SAR]; Progress weight (fair EPC distribution, SAR value) [39060 SAR] | 39,060 | HHR | HKA | HHR | Standard | ETECHS | IFC | Submittal | ENG | DOCS | DES | MS2 |
|  | APR | **Approval** |  |  | 2028-05-15 | 2028-06-04 |  |  |  |  |  |  |  |  |  |  |  |  |  |  |  |  |
| HKA-E1100 |  | IFC and shop drawings: SAR approval and release - KAEC |  | 15d | 2028-05-15 | 2028-06-04 | HKA-E1090 | 70d | 0d | Contract cost (BOQ x payment milestones) [111288 SAR]; Progress weight (fair EPC distribution, SAR value) [73780 SAR] | 73,780 | HHR | HKA | HHR | Standard | SAR | IFC | Approval | ENG | DOCS | DES | MS3 |
|  | HCS | **HCIS documentation (Stage 3 and 4)** |  |  | 2028-04-11 | 2028-06-04 |  |  |  |  |  |  |  |  |  |  |  |  |  |  |  |  |
|  | SUB | **Submittal** |  |  | 2028-04-11 | 2028-05-14 |  |  |  |  |  |  |  |  |  |  |  |  |  |  |  |  |
| HKA-E1110 |  | HCIS Stage 3 and 4 documents: preparation - KAEC |  | 19d | 2028-04-11 | 2028-05-14 | HKA-E1050 FS+7d, HKA-E1090 FF | 70d | 0d | Contract cost (BOQ x payment milestones) [27265 SAR]; Progress weight (fair EPC distribution, SAR value) [21080 SAR] | 21,080 | HHR | HKA | HHR | Standard | ETECHS | HCIS | Submittal | ENG | DOCS | DES | MS2 |
|  | APR | **Approval** |  |  | 2028-05-15 | 2028-06-04 |  |  |  |  |  |  |  |  |  |  |  |  |  |  |  |  |
| HKA-E1120 |  | HCIS Stage 3 and 4 documents: SAR final review and HCIS submission - KAEC |  | 15d | 2028-05-15 | 2028-06-04 | HKA-E1110 | 70d | 0d | Contract cost (BOQ x payment milestones) [27822 SAR]; Progress weight (fair EPC distribution, SAR value) [16740 SAR] | 16,740 | HHR | HKA | HHR | Standard | SAR/HCIS | HCIS | Approval | ENG | DOCS | DES | MS3 |
|  | ASB | **As-built and O&M documentation** |  |  | 2029-03-28 | 2029-06-19 |  |  |  |  |  |  |  |  |  |  |  |  |  |  |  |  |
|  | SUB | **Submittal** |  |  | 2029-03-28 | 2029-05-29 |  |  |  |  |  |  |  |  |  |  |  |  |  |  |  |  |
| HKA-E1130 |  | As-built and O&M documentation: submittal - KAEC |  | 40d | 2029-03-28 | 2029-05-29 | HKA-C2100 | 70d | 0d | Contract cost (BOQ x payment milestones) [83466 SAR]; Progress weight (fair EPC distribution, SAR value) [45880 SAR] | 45,880 | HHR | HKA | HHR | Standard | ETECHS | As-built | Submittal | ENG | DOCS | COM | MS7 |
|  | APR | **Approval** |  |  | 2029-05-30 | 2029-06-19 |  |  |  |  |  |  |  |  |  |  |  |  |  |  |  |  |
| HKA-E1140 |  | As-built and O&M documentation: SAR review and approval - KAEC |  | 15d | 2029-05-30 | 2029-06-19 | HKA-E1130 | 70d | 0d | Contract cost (BOQ x payment milestones) [27822 SAR]; Progress weight (fair EPC distribution, SAR value) [17360 SAR] | 17,360 | HHR | HKA | HHR | Standard | SAR | As-built | Approval | ENG | DOCS | COM | MS7 |
|  | HMD | **Madinah (HHR)** |  |  | 2027-11-30 | 2029-06-25 |  |  |  |  |  |  |  |  |  |  |  |  |  |  |  |  |
| HMD-E1200 |  | MS2 Engineering submittal complete (10%) - Madinah | milestone | 0d | 2028-05-14 | 2028-05-14 | HMD-E1090, HMD-E1110 | 81d | 15d |  |  | HHR | HMD | HHR | Standard | ETECHS | - | - | MS | DOCS | MS | MS2 |
| HMD-E1210 |  | MS3 Engineering approved by SAR (10%) - Madinah | milestone | 0d | 2028-06-04 | 2028-06-04 | HMD-E1020, HMD-E1040, HMD-E1060, HMD-E1080, HMD-E1100, HMD-E1120, HMD-E1200 | 66d | 0d |  |  | HHR | HMD | HHR | Standard | SAR | - | - | MS | DOCS | MS | MS3 |
|  | SRV | **Site survey and as-found verification** |  |  | 2027-11-30 | 2028-03-27 |  |  |  |  |  |  |  |  |  |  |  |  |  |  |  |  |
|  | SUB | **Submittal** |  |  | 2028-02-01 | 2028-03-06 |  |  |  |  |  |  |  |  |  |  |  |  |  |  |  |  |
| HMD-E1010 |  | Survey: submittal of site survey and as-found report - Madinah |  | 20d | 2028-02-01 | 2028-03-06 | HMD-E1005 | 66d | 0d | Contract cost (BOQ x payment milestones) [27254 SAR]; Progress weight (fair EPC distribution, SAR value) [28520 SAR] | 28,520 | HHR | HMD | HHR | Standard | ETECHS | Survey | Submittal | ENG | DOCS | DES | MS2 |

| ID | WBS | Activity | Duration | Start | Finish | Predecessors | Total float | Free float | Resources | Cost | Area | Station | Railway | Priority | Responsibility | Design stage | Submittal or approval | EPC phase | Discipline | Programme phase | Payment milestone |
| --- | --- | --- | --- | --- | --- | --- | --- | --- | --- | --- | --- | --- | --- | --- | --- | --- | --- | --- | --- | --- | --- |
|  | APR | **Approval** |  | 2028-03-07 | 2028-03-27 |  |  |  |  |  |  |  |  |  |  |  |  |  |  |  |  |
| HMD-E1020 |  | Survey: SAR approval of survey report - Madinah | 15d | 2028-03-07 | 2028-03-27 | HMD-E1010 | 110d | 44d | Contract cost (BOQ x payment milestones) [27811 SAR]; Progress weight (fair EPC distribution, SAR value) [21700 SAR] | 21,700 | HHR | HMD | HHR | Standard | SAR | Survey | Approval | ENG | DOCS | DES | MS3 |
|  | PRM | **Site access permit** |  | 2027-11-30 | 2028-01-31 |  |  |  |  |  |  |  |  |  |  |  |  |  |  |  |  |
| HMD-E1005 |  | Survey: site access permit - application and approval (two months) - Madinah | 45d | 2027-11-30 | 2028-01-31 | PRJ-M2100 FS+175d | 66d | 0d | Contract cost (BOQ x payment milestones) [11124 SAR]; Progress weight (fair EPC distribution, SAR value) [13020 SAR] | 13,020 | HHR | HMD | HHR | Standard | SAR | Survey | Approval | ENG | DOCS | MOB | MS2 |
|  | CNC | **Concept design** |  | 2028-03-07 | 2028-04-05 |  |  |  |  |  |  |  |  |  |  |  |  |  |  |  |  |
|  | SUB | **Submittal** |  | 2028-03-07 | 2028-03-15 |  |  |  |  |  |  |  |  |  |  |  |  |  |  |  |  |
| HMD-E1030 |  | Concept design: submittal - Madinah | 7d | 2028-03-07 | 2028-03-15 | HMD-E1010 | 66d | 0d | Contract cost (BOQ x payment milestones) [54509 SAR]; Progress weight (fair EPC distribution, SAR value) [19840 SAR] | 19,840 | HHR | HMD | HHR | Standard | ETECHS | Concept | Submittal | ENG | DOCS | DES | MS2 |
|  | APR | **Approval** |  | 2028-03-16 | 2028-04-05 |  |  |  |  |  |  |  |  |  |  |  |  |  |  |  |  |
| HMD-E1040 |  | Concept design: SAR review and approval - Madinah | 15d | 2028-03-16 | 2028-04-05 | HMD-E1030 | 103d | 37d | Contract cost (BOQ x payment milestones) [55621 SAR]; Progress weight (fair EPC distribution, SAR value) [42780 SAR] | 42,780 | HHR | HMD | HHR | Standard | SAR | Concept | Approval | ENG | DOCS | DES | MS3 |
|  | PRE | **Preliminary (schematic) design** |  | 2028-03-16 | 2028-04-20 |  |  |  |  |  |  |  |  |  |  |  |  |  |  |  |  |
|  | SUB | **Submittal** |  | 2028-03-16 | 2028-03-30 |  |  |  |  |  |  |  |  |  |  |  |  |  |  |  |  |
| HMD-E1050 |  | Preliminary design: submittal - Madinah | 11d | 2028-03-16 | 2028-03-30 | HMD-E1030 | 66d | 0d | Contract cost (BOQ x payment milestones) [109018 SAR]; Progress weight (fair EPC distribution, SAR value) [47740 SAR] | 47,740 | HHR | HMD | HHR | Standard | ETECHS | Preliminary | Submittal | ENG | DOCS | DES | MS2 |
|  | APR | **Approval** |  | 2028-04-02 | 2028-04-20 |  |  |  |  |  |  |  |  |  |  |  |  |  |  |  |  |
| HMD-E1060 |  | Preliminary design: SAR review and approval - Madinah | 15d | 2028-04-02 | 2028-04-20 | HMD-E1050 | 92d | 26d | Contract cost (BOQ x payment milestones) [111243 SAR]; Progress weight (fair EPC distribution, SAR value) [65100 SAR] | 65,100 | HHR | HMD | HHR | Standard | SAR | Preliminary | Approval | ENG | DOCS | DES | MS3 |
|  | DET | **Detailed design** |  | 2028-04-02 | 2028-05-23 |  |  |  |  |  |  |  |  |  |  |  |  |  |  |  |  |
|  | SUB | **Submittal** |  | 2028-04-02 | 2028-04-25 |  |  |  |  |  |  |  |  |  |  |  |  |  |  |  |  |
| HMD-E1070 |  | Detailed design: submittal (drawings, BOQ, data sheets) - Madinah | 18d | 2028-04-02 | 2028-04-25 | HMD-E1050 | 66d | 0d | Contract cost (BOQ x payment milestones) [218036 SAR]; Progress weight (fair EPC distribution, SAR value) [102920 SAR] | 102,920 | HHR | HMD | HHR | Standard | ETECHS | Detailed | Submittal | ENG | DOCS | DES | MS2 |
|  | APR | **Approval** |  | 2028-04-26 | 2028-05-23 |  |  |  |  |  |  |  |  |  |  |  |  |  |  |  |  |
| HMD-E1080 |  | Detailed design: SAR review and approval - Madinah | 15d | 2028-04-26 | 2028-05-23 | HMD-E1070 | 74d | 8d | Contract cost (BOQ x payment milestones) [222485 SAR]; Progress weight (fair EPC distribution, SAR value) [85560 SAR] | 85,560 | HHR | HMD | HHR | Standard | SAR | Detailed | Approval | ENG | DOCS | DES | MS3 |
|  | IFC | **IFC and shop drawings** |  | 2028-04-26 | 2028-06-04 |  |  |  |  |  |  |  |  |  |  |  |  |  |  |  |  |
|  | SUB | **Submittal** |  | 2028-04-26 | 2028-05-14 |  |  |  |  |  |  |  |  |  |  |  |  |  |  |  |  |
| HMD-E1090 |  | IFC and shop drawings: submittal - Madinah | 8d | 2028-04-26 | 2028-05-14 | HMD-E1070 | 66d | 0d | Contract cost (BOQ x payment milestones) [109018 SAR]; Progress weight (fair EPC distribution, SAR value) [39060 SAR] | 39,060 | HHR | HMD | HHR | Standard | ETECHS | IFC | Submittal | ENG | DOCS | DES | MS2 |
|  | APR | **Approval** |  | 2028-05-15 | 2028-06-04 |  |  |  |  |  |  |  |  |  |  |  |  |  |  |  |  |
| HMD-E1100 |  | IFC and shop drawings: SAR approval and release - Madinah | 15d | 2028-05-15 | 2028-06-04 | HMD-E1090 | 66d | 0d | Contract cost (BOQ x payment milestones) [111243 SAR]; Progress weight (fair EPC distribution, SAR value) [73780 SAR] | 73,780 | HHR | HMD | HHR | Standard | SAR | IFC | Approval | ENG | DOCS | DES | MS3 |

| ID | WBS | Activity | Type | Duration | Start | Finish | Predecessors | Total float | Free float | Resources | Cost | Area | Station | Railway | Priority | Responsibility | Design stage | Submittal or approval | EPC phase | Discipline | Programme phase | Payment milestone |
| --- | --- | --- | --- | --- | --- | --- | --- | --- | --- | --- | --- | --- | --- | --- | --- | --- | --- | --- | --- | --- | --- | --- |
|  | HCS | **HCIS documentation (Stage 3 and 4)** |  |  | 2028-04-11 | 2028-06-04 |  |  |  |  |  |  |  |  |  |  |  |  |  |  |  |  |
|  | SUB | **Submittal** |  |  | 2028-04-11 | 2028-05-14 |  |  |  |  |  |  |  |  |  |  |  |  |  |  |  |  |
| HMD-E1110 |  | HCIS Stage 3 and 4 documents: preparation - Madinah |  | 19d | 2028-04-11 | 2028-05-14 | HMD-E1050 FS+7d, HMD-E1090 FF | 66d | 0d | Contract cost (BOQ x payment milestones) [27254 SAR]; Progress weight (fair EPC distribution, SAR value) [21080 SAR] | 21,080 | HHR | HMD | HHR | Standard | ETECHS | HCIS | Submittal | ENG | DOCS | DES | MS2 |
|  | APR | **Approval** |  |  | 2028-05-15 | 2028-06-04 |  |  |  |  |  |  |  |  |  |  |  |  |  |  |  |  |
| HMD-E1120 |  | HCIS Stage 3 and 4 documents: SAR final review and HCIS submission - Madinah |  | 15d | 2028-05-15 | 2028-06-04 | HMD-E1110 | 66d | 0d | Contract cost (BOQ x payment milestones) [27811 SAR]; Progress weight (fair EPC distribution, SAR value) [16740 SAR] | 16,740 | HHR | HMD | HHR | Standard | SAR/HCIS | HCIS | Approval | ENG | DOCS | DES | MS3 |
|  | ASB | **As-built and O&M documentation** |  |  | 2029-04-03 | 2029-06-25 |  |  |  |  |  |  |  |  |  |  |  |  |  |  |  |  |
|  | SUB | **Submittal** |  |  | 2029-04-03 | 2029-06-04 |  |  |  |  |  |  |  |  |  |  |  |  |  |  |  |  |
| HMD-E1130 |  | As-built and O&M documentation: submittal - Madinah |  | 40d | 2029-04-03 | 2029-06-04 | HMD-C2100 | 66d | 0d | Contract cost (BOQ x payment milestones) [83432 SAR]; Progress weight (fair EPC distribution, SAR value) [45880 SAR] | 45,880 | HHR | HMD | HHR | Standard | ETECHS | As-built | Submittal | ENG | DOCS | COM | MS7 |
|  | APR | **Approval** |  |  | 2029-06-05 | 2029-06-25 |  |  |  |  |  |  |  |  |  |  |  |  |  |  |  |  |
| HMD-E1140 |  | As-built and O&M documentation: SAR review and approval - Madinah |  | 15d | 2029-06-05 | 2029-06-25 | HMD-E1130 | 66d | 0d | Contract cost (BOQ x payment milestones) [27811 SAR]; Progress weight (fair EPC distribution, SAR value) [17360 SAR] | 17,360 | HHR | HMD | HHR | Standard | SAR | As-built | Approval | ENG | DOCS | COM | MS7 |
|  | EAB | **Abqaiq (EWR)** |  |  | 2028-01-11 | 2029-04-03 |  |  |  |  |  |  |  |  |  |  |  |  |  |  |  |  |
| EAB-E1200 |  | MS2 Engineering submittal complete (10%) - Abqaiq | milestone | 0d | 2028-06-25 | 2028-06-25 | EAB-E1090, EAB-E1110 | 135d | 15d |  |  | EWR | EAB | EWR | Standard | ETECHS | - | - | MS | DOCS | MS | MS2 |
| EAB-E1210 |  | MS3 Engineering approved by SAR (10%) - Abqaiq | milestone | 0d | 2028-07-16 | 2028-07-16 | EAB-E1020, EAB-E1040, EAB-E1060, EAB-E1080, EAB-E1100, EAB-E1120, EAB-E1200 | 120d | 0d |  |  | EWR | EAB | EWR | Standard | SAR | - | - | MS | DOCS | MS | MS3 |
|  | SRV | **Site survey and as-found verification** |  |  | 2028-01-11 | 2028-04-24 |  |  |  |  |  |  |  |  |  |  |  |  |  |  |  |  |
|  | SUB | **Submittal** |  |  | 2028-03-21 | 2028-04-03 |  |  |  |  |  |  |  |  |  |  |  |  |  |  |  |  |
| EAB-E1010 |  | Survey: submittal of site survey and as-found report - Abqaiq |  | 10d | 2028-03-21 | 2028-04-03 | EAB-E1005 | 120d | 0d | Contract cost (BOQ x payment milestones) [9828 SAR]; Progress weight (fair EPC distribution, SAR value) [7440 SAR] | 7,440 | EWR | EAB | EWR | Standard | ETECHS | Survey | Submittal | ENG | DOCS | DES | MS2 |
|  | APR | **Approval** |  |  | 2028-04-04 | 2028-04-24 |  |  |  |  |  |  |  |  |  |  |  |  |  |  |  |  |
| EAB-E1020 |  | Survey: SAR approval of survey report - Abqaiq |  | 15d | 2028-04-04 | 2028-04-24 | EAB-E1010 | 174d | 54d | Contract cost (BOQ x payment milestones) [10028 SAR]; Progress weight (fair EPC distribution, SAR value) [11160 SAR] | 11,160 | EWR | EAB | EWR | Standard | SAR | Survey | Approval | ENG | DOCS | DES | MS3 |
|  | PRM | **Site access permit** |  |  | 2028-01-11 | 2028-03-20 |  |  |  |  |  |  |  |  |  |  |  |  |  |  |  |  |
| EAB-E1005 |  | Survey: site access permit - application and approval (two months) - Abqaiq |  | 45d | 2028-01-11 | 2028-03-20 | PRJ-M2100 FS+205d | 120d | 0d | Contract cost (BOQ x payment milestones) [4011 SAR]; Progress weight (fair EPC distribution, SAR value) [4340 SAR] | 4,340 | EWR | EAB | EWR | Standard | SAR | Survey | Approval | ENG | DOCS | MOB | MS2 |
|  | CNC | **Concept design** |  |  | 2028-04-04 | 2028-05-11 |  |  |  |  |  |  |  |  |  |  |  |  |  |  |  |  |
|  | SUB | **Submittal** |  |  | 2028-04-04 | 2028-04-13 |  |  |  |  |  |  |  |  |  |  |  |  |  |  |  |  |
| EAB-E1030 |  | Concept design: submittal - Abqaiq |  | 8d | 2028-04-04 | 2028-04-13 | EAB-E1010 | 120d | 0d | Contract cost (BOQ x payment milestones) [19656 SAR]; Progress weight (fair EPC distribution, SAR value) [8060 SAR] | 8,060 | EWR | EAB | EWR | Standard | ETECHS | Concept | Submittal | ENG | DOCS | DES | MS2 |
|  | APR | **Approval** |  |  | 2028-04-16 | 2028-05-11 |  |  |  |  |  |  |  |  |  |  |  |  |  |  |  |  |
| EAB-E1040 |  | Concept design: SAR review and approval - Abqaiq |  | 15d | 2028-04-16 | 2028-05-11 | EAB-E1030 | 166d | 46d | Contract cost (BOQ x payment milestones) [20057 SAR]; Progress weight (fair EPC distribution, SAR value) [14880 SAR] | 14,880 | EWR | EAB | EWR | Standard | SAR | Concept | Approval | ENG | DOCS | DES | MS3 |

| ID | WBS | Activity | Duration | Start | Finish | Predecessors | Total float | Free float | Resources | Cost | Area | Station | Railway | Priority | Responsibility | Design stage | Submittal or approval | EPC phase | Discipline | Programme phase | Payment milestone |
| --- | --- | --- | --- | --- | --- | --- | --- | --- | --- | --- | --- | --- | --- | --- | --- | --- | --- | --- | --- | --- | --- |
|  | PRE | **Preliminary (schematic) design** |  | 2028-04-16 | 2028-05-31 |  |  |  |  |  |  |  |  |  |  |  |  |  |  |  |  |
|  | SUB | **Submittal** |  | 2028-04-16 | 2028-05-10 |  |  |  |  |  |  |  |  |  |  |  |  |  |  |  |  |
| EAB-E1050 |  | Preliminary design: submittal - Abqaiq | 14d | 2028-04-16 | 2028-05-10 | EAB-E1030 | 120d | 0d | Contract cost (BOQ x payment milestones) [39311 SAR]; Progress weight (fair EPC distribution, SAR value) [19840 SAR] | 19,840 | EWR | EAB | EWR | Standard | ETECHS | Preliminary | Submittal | ENG | DOCS | DES | MS2 |
|  | APR | **Approval** |  | 2028-05-11 | 2028-05-31 |  |  |  |  |  |  |  |  |  |  |  |  |  |  |  |  |
| EAB-E1060 |  | Preliminary design: SAR review and approval - Abqaiq | 15d | 2028-05-11 | 2028-05-31 | EAB-E1050 | 152d | 32d | Contract cost (BOQ x payment milestones) [40114 SAR]; Progress weight (fair EPC distribution, SAR value) [21080 SAR] | 21,080 | EWR | EAB | EWR | Standard | SAR | Preliminary | Approval | ENG | DOCS | DES | MS3 |
|  | DET | **Detailed design** |  | 2028-05-11 | 2028-07-02 |  |  |  |  |  |  |  |  |  |  |  |  |  |  |  |  |
|  | SUB | **Submittal** |  | 2028-05-11 | 2028-06-11 |  |  |  |  |  |  |  |  |  |  |  |  |  |  |  |  |
| EAB-E1070 |  | Detailed design: submittal (drawings, BOQ, data sheets) - Abqaiq | 22d | 2028-05-11 | 2028-06-11 | EAB-E1050 | 120d | 0d | Contract cost (BOQ x payment milestones) [78623 SAR]; Progress weight (fair EPC distribution, SAR value) [40300 SAR] | 40,300 | EWR | EAB | EWR | Standard | ETECHS | Detailed | Submittal | ENG | DOCS | DES | MS2 |
|  | APR | **Approval** |  | 2028-06-12 | 2028-07-02 |  |  |  |  |  |  |  |  |  |  |  |  |  |  |  |  |
| EAB-E1080 |  | Detailed design: SAR review and approval - Abqaiq | 15d | 2028-06-12 | 2028-07-02 | EAB-E1070 | 130d | 10d | Contract cost (BOQ x payment milestones) [80227 SAR]; Progress weight (fair EPC distribution, SAR value) [27280 SAR] | 27,280 | EWR | EAB | EWR | Standard | SAR | Detailed | Approval | ENG | DOCS | DES | MS3 |
|  | IFC | **IFC and shop drawings** |  | 2028-06-12 | 2028-07-16 |  |  |  |  |  |  |  |  |  |  |  |  |  |  |  |  |
|  | SUB | **Submittal** |  | 2028-06-12 | 2028-06-25 |  |  |  |  |  |  |  |  |  |  |  |  |  |  |  |  |
| EAB-E1090 |  | IFC and shop drawings: submittal - Abqaiq | 10d | 2028-06-12 | 2028-06-25 | EAB-E1070 | 120d | 0d | Contract cost (BOQ x payment milestones) [39311 SAR]; Progress weight (fair EPC distribution, SAR value) [16120 SAR] | 16,120 | EWR | EAB | EWR | Standard | ETECHS | IFC | Submittal | ENG | DOCS | DES | MS2 |
|  | APR | **Approval** |  | 2028-06-26 | 2028-07-16 |  |  |  |  |  |  |  |  |  |  |  |  |  |  |  |  |
| EAB-E1100 |  | IFC and shop drawings: SAR approval and release - Abqaiq | 15d | 2028-06-26 | 2028-07-16 | EAB-E1090 | 120d | 0d | Contract cost (BOQ x payment milestones) [40114 SAR]; Progress weight (fair EPC distribution, SAR value) [24180 SAR] | 24,180 | EWR | EAB | EWR | Standard | SAR | IFC | Approval | ENG | DOCS | DES | MS3 |
|  | HCS | **HCIS documentation (Stage 3 and 4)** |  | 2028-05-23 | 2028-07-16 |  |  |  |  |  |  |  |  |  |  |  |  |  |  |  |  |
|  | SUB | **Submittal** |  | 2028-05-23 | 2028-06-25 |  |  |  |  |  |  |  |  |  |  |  |  |  |  |  |  |
| EAB-E1110 |  | HCIS Stage 3 and 4 documents: preparation - Abqaiq | 24d | 2028-05-23 | 2028-06-25 | EAB-E1050 FS+8d, EAB-E1090 FF | 120d | 0d | Contract cost (BOQ x payment milestones) [9828 SAR]; Progress weight (fair EPC distribution, SAR value) [8060 SAR] | 8,060 | EWR | EAB | EWR | Standard | ETECHS | HCIS | Submittal | ENG | DOCS | DES | MS2 |
|  | APR | **Approval** |  | 2028-06-26 | 2028-07-16 |  |  |  |  |  |  |  |  |  |  |  |  |  |  |  |  |
| EAB-E1120 |  | HCIS Stage 3 and 4 documents: SAR final review and HCIS submission - Abqaiq | 15d | 2028-06-26 | 2028-07-16 | EAB-E1110 | 120d | 0d | Contract cost (BOQ x payment milestones) [10028 SAR]; Progress weight (fair EPC distribution, SAR value) [4960 SAR] | 4,960 | EWR | EAB | EWR | Standard | SAR/HCIS | HCIS | Approval | ENG | DOCS | DES | MS3 |
|  | ASB | **As-built and O&M documentation** |  | 2029-01-23 | 2029-04-03 |  |  |  |  |  |  |  |  |  |  |  |  |  |  |  |  |
|  | SUB | **Submittal** |  | 2029-01-23 | 2029-03-13 |  |  |  |  |  |  |  |  |  |  |  |  |  |  |  |  |
| EAB-E1130 |  | As-built and O&M documentation: submittal - Abqaiq | 30d | 2029-01-23 | 2029-03-13 | EAB-C2100 | 120d | 0d | Contract cost (BOQ x payment milestones) [30085 SAR]; Progress weight (fair EPC distribution, SAR value) [14880 SAR] | 14,880 | EWR | EAB | EWR | Standard | ETECHS | As-built | Submittal | ENG | DOCS | COM | MS7 |
|  | APR | **Approval** |  | 2029-03-14 | 2029-04-03 |  |  |  |  |  |  |  |  |  |  |  |  |  |  |  |  |
| EAB-E1140 |  | As-built and O&M documentation: SAR review and approval - Abqaiq | 15d | 2029-03-14 | 2029-04-03 | EAB-E1130 | 120d | 0d | Contract cost (BOQ x payment milestones) [10028 SAR]; Progress weight (fair EPC distribution, SAR value) [7440 SAR] | 7,440 | EWR | EAB | EWR | Standard | SAR | As-built | Approval | ENG | DOCS | COM | MS7 |

| ID | WBS | Activity | Type | Duration | Start | Finish | Predecessors | Total float | Free float | Resources | Cost | Area | Station | Railway | Priority | EPC phase | Discipline | Responsibility | Design stage | Submittal or approval | Payment milestone | Programme phase |
| --- | --- | --- | --- | --- | --- | --- | --- | --- | --- | --- | --- | --- | --- | --- | --- | --- | --- | --- | --- | --- | --- | --- |
|  | NHL | **Hail (NSR)** |  |  | 2028-02-01 | 2029-05-15 |  |  |  |  |  |  |  |  |  |  |  |  |  |  |  |  |
| NHL-E1200 |  | MS2 Engineering submittal complete (10%) - Hail | milestone | 0d | 2028-07-16 | 2028-07-16 | NHL-E1090, NHL-E1110 | 110d | 15d |  |  | NSR | NHL | NSR | Standard | MS | DOCS | ETECHS | - | - | MS2 | MS |
| NHL-E1210 |  | MS3 Engineering approved by SAR (10%) - Hail | milestone | 0d | 2028-08-06 | 2028-08-06 | NHL-E1020, NHL-E1040, NHL-E1060, NHL-E1080, NHL-E1100, NHL-E1120, NHL-E1200 | 95d | 0d |  |  | NSR | NHL | NSR | Standard | MS | DOCS | SAR | - | - | MS3 | MS |
|  | SRV | **Site survey and as-found verification** |  |  | 2028-02-01 | 2028-05-22 |  |  |  |  |  |  |  |  |  |  |  |  |  |  |  |  |
|  | SUB | **Submittal** |  |  | 2028-04-11 | 2028-04-24 |  |  |  |  |  |  |  |  |  |  |  |  |  |  |  |  |
| NHL-E1010 |  | Survey: submittal of site survey and as-found report - Hail |  | 10d | 2028-04-11 | 2028-04-24 | NHL-E1005 | 95d | 0d | Contract cost (BOQ x payment milestones) [16655 SAR]; Progress weight (fair EPC distribution, SAR value) [12400 SAR] | 12,400 | NSR | NHL | NSR | Standard | ENG | DOCS | ETECHS | Survey | Submittal | MS2 | DES |
|  | APR | **Approval** |  |  | 2028-04-25 | 2028-05-22 |  |  |  |  |  |  |  |  |  |  |  |  |  |  |  |  |
| NHL-E1020 |  | Survey: SAR approval of survey report - Hail |  | 15d | 2028-04-25 | 2028-05-22 | NHL-E1010 | 149d | 54d | Contract cost (BOQ x payment milestones) [16995 SAR]; Progress weight (fair EPC distribution, SAR value) [18600 SAR] | 18,600 | NSR | NHL | NSR | Standard | ENG | DOCS | SAR | Survey | Approval | MS3 | DES |
|  | PRM | **Site access permit** |  |  | 2028-02-01 | 2028-04-10 |  |  |  |  |  |  |  |  |  |  |  |  |  |  |  |  |
| NHL-E1005 |  | Survey: site access permit - application and approval (two months) - Hail |  | 45d | 2028-02-01 | 2028-04-10 | PRJ-M2100 FS+220d | 95d | 0d | Contract cost (BOQ x payment milestones) [6798 SAR]; Progress weight (fair EPC distribution, SAR value) [8060 SAR] | 8,060 | NSR | NHL | NSR | Standard | ENG | DOCS | SAR | Survey | Approval | MS2 | MOB |
|  | CNC | **Concept design** |  |  | 2028-04-25 | 2028-06-01 |  |  |  |  |  |  |  |  |  |  |  |  |  |  |  |  |
|  | SUB | **Submittal** |  |  | 2028-04-25 | 2028-05-11 |  |  |  |  |  |  |  |  |  |  |  |  |  |  |  |  |
| NHL-E1030 |  | Concept design: submittal - Hail |  | 8d | 2028-04-25 | 2028-05-11 | NHL-E1010 | 95d | 0d | Contract cost (BOQ x payment milestones) [33309 SAR]; Progress weight (fair EPC distribution, SAR value) [13640 SAR] | 13,640 | NSR | NHL | NSR | Standard | ENG | DOCS | ETECHS | Concept | Submittal | MS2 | DES |
|  | APR | **Approval** |  |  | 2028-05-14 | 2028-06-01 |  |  |  |  |  |  |  |  |  |  |  |  |  |  |  |  |
| NHL-E1040 |  | Concept design: SAR review and approval - Hail |  | 15d | 2028-05-14 | 2028-06-01 | NHL-E1030 | 141d | 46d | Contract cost (BOQ x payment milestones) [33989 SAR]; Progress weight (fair EPC distribution, SAR value) [24800 SAR] | 24,800 | NSR | NHL | NSR | Standard | ENG | DOCS | SAR | Concept | Approval | MS3 | DES |
|  | PRE | **Preliminary (schematic) design** |  |  | 2028-05-14 | 2028-06-21 |  |  |  |  |  |  |  |  |  |  |  |  |  |  |  |  |
|  | SUB | **Submittal** |  |  | 2028-05-14 | 2028-05-31 |  |  |  |  |  |  |  |  |  |  |  |  |  |  |  |  |
| NHL-E1050 |  | Preliminary design: submittal - Hail |  | 14d | 2028-05-14 | 2028-05-31 | NHL-E1030 | 95d | 0d | Contract cost (BOQ x payment milestones) [66619 SAR]; Progress weight (fair EPC distribution, SAR value) [33480 SAR] | 33,480 | NSR | NHL | NSR | Standard | ENG | DOCS | ETECHS | Preliminary | Submittal | MS2 | DES |
|  | APR | **Approval** |  |  | 2028-06-01 | 2028-06-21 |  |  |  |  |  |  |  |  |  |  |  |  |  |  |  |  |
| NHL-E1060 |  | Preliminary design: SAR review and approval - Hail |  | 15d | 2028-06-01 | 2028-06-21 | NHL-E1050 | 127d | 32d | Contract cost (BOQ x payment milestones) [67978 SAR]; Progress weight (fair EPC distribution, SAR value) [35960 SAR] | 35,960 | NSR | NHL | NSR | Standard | ENG | DOCS | SAR | Preliminary | Approval | MS3 | DES |
|  | DET | **Detailed design** |  |  | 2028-06-01 | 2028-07-23 |  |  |  |  |  |  |  |  |  |  |  |  |  |  |  |  |
|  | SUB | **Submittal** |  |  | 2028-06-01 | 2028-07-02 |  |  |  |  |  |  |  |  |  |  |  |  |  |  |  |  |
| NHL-E1070 |  | Detailed design: submittal (drawings, BOQ, data sheets) - Hail |  | 22d | 2028-06-01 | 2028-07-02 | NHL-E1050 | 95d | 0d | Contract cost (BOQ x payment milestones) [133238 SAR]; Progress weight (fair EPC distribution, SAR value) [68200 SAR] | 68,200 | NSR | NHL | NSR | Standard | ENG | DOCS | ETECHS | Detailed | Submittal | MS2 | DES |
|  | APR | **Approval** |  |  | 2028-07-03 | 2028-07-23 |  |  |  |  |  |  |  |  |  |  |  |  |  |  |  |  |
| NHL-E1080 |  | Detailed design: SAR review and approval - Hail |  | 15d | 2028-07-03 | 2028-07-23 | NHL-E1070 | 105d | 10d | Contract cost (BOQ x payment milestones) [135957 SAR]; Progress weight (fair EPC distribution, SAR value) [46500 SAR] | 46,500 | NSR | NHL | NSR | Standard | ENG | DOCS | SAR | Detailed | Approval | MS3 | DES |

| ID | WBS | Activity | Type | Duration | Start | Finish | Predecessors | Total float | Free float | Resources | Cost | Area | Station | Railway | Priority | Responsibility | Design stage | Submittal or approval | EPC phase | Discipline | Programme phase | Payment milestone |
| --- | --- | --- | --- | --- | --- | --- | --- | --- | --- | --- | --- | --- | --- | --- | --- | --- | --- | --- | --- | --- | --- | --- |
|  | IFC | **IFC and shop drawings** |  |  | 2028-07-03 | 2028-08-06 |  |  |  |  |  |  |  |  |  |  |  |  |  |  |  |  |
|  | SUB | **Submittal** |  |  | 2028-07-03 | 2028-07-16 |  |  |  |  |  |  |  |  |  |  |  |  |  |  |  |  |
| NHL-E1090 |  | IFC and shop drawings: submittal - Hail |  | 10d | 2028-07-03 | 2028-07-16 | NHL-E1070 | 95d | 0d | Contract cost (BOQ x payment milestones) [66619 SAR]; Progress weight (fair EPC distribution, SAR value) [27900 SAR] | 27,900 | NSR | NHL | NSR | Standard | ETECHS | IFC | Submittal | ENG | DOCS | DES | MS2 |
|  | APR | **Approval** |  |  | 2028-07-17 | 2028-08-06 |  |  |  |  |  |  |  |  |  |  |  |  |  |  |  |  |
| NHL-E1100 |  | IFC and shop drawings: SAR approval and release - Hail |  | 15d | 2028-07-17 | 2028-08-06 | NHL-E1090 | 95d | 0d | Contract cost (BOQ x payment milestones) [67978 SAR]; Progress weight (fair EPC distribution, SAR value) [41540 SAR] | 41,540 | NSR | NHL | NSR | Standard | SAR | IFC | Approval | ENG | DOCS | DES | MS3 |
|  | HCS | **HCIS documentation (Stage 3 and 4)** |  |  | 2028-06-13 | 2028-08-06 |  |  |  |  |  |  |  |  |  |  |  |  |  |  |  |  |
|  | SUB | **Submittal** |  |  | 2028-06-13 | 2028-07-16 |  |  |  |  |  |  |  |  |  |  |  |  |  |  |  |  |
| NHL-E1110 |  | HCIS Stage 3 and 4 documents: preparation - Hail |  | 24d | 2028-06-13 | 2028-07-16 | NHL-E1050 FS+8d, NHL-E1090 FF | 95d | 0d | Contract cost (BOQ x payment milestones) [16655 SAR]; Progress weight (fair EPC distribution, SAR value) [14260 SAR] | 14,260 | NSR | NHL | NSR | Standard | ETECHS | HCIS | Submittal | ENG | DOCS | DES | MS2 |
|  | APR | **Approval** |  |  | 2028-07-17 | 2028-08-06 |  |  |  |  |  |  |  |  |  |  |  |  |  |  |  |  |
| NHL-E1120 |  | HCIS Stage 3 and 4 documents: SAR final review and HCIS submission - Hail |  | 15d | 2028-07-17 | 2028-08-06 | NHL-E1110 | 95d | 0d | Contract cost (BOQ x payment milestones) [16995 SAR]; Progress weight (fair EPC distribution, SAR value) [8680 SAR] | 8,680 | NSR | NHL | NSR | Standard | SAR/HCIS | HCIS | Approval | ENG | DOCS | DES | MS3 |
|  | ASB | **As-built and O&M documentation** |  |  | 2029-03-07 | 2029-05-15 |  |  |  |  |  |  |  |  |  |  |  |  |  |  |  |  |
|  | SUB | **Submittal** |  |  | 2029-03-07 | 2029-04-17 |  |  |  |  |  |  |  |  |  |  |  |  |  |  |  |  |
| NHL-E1130 |  | As-built and O&M documentation: submittal - Hail |  | 30d | 2029-03-07 | 2029-04-17 | NHL-C2100 | 95d | 0d | Contract cost (BOQ x payment milestones) [50984 SAR]; Progress weight (fair EPC distribution, SAR value) [25420 SAR] | 25,420 | NSR | NHL | NSR | Standard | ETECHS | As-built | Submittal | ENG | DOCS | COM | MS7 |
|  | APR | **Approval** |  |  | 2029-04-18 | 2029-05-15 |  |  |  |  |  |  |  |  |  |  |  |  |  |  |  |  |
| NHL-E1140 |  | As-built and O&M documentation: SAR review and approval - Hail |  | 15d | 2029-04-18 | 2029-05-15 | NHL-E1130 | 95d | 0d | Contract cost (BOQ x payment milestones) [16995 SAR]; Progress weight (fair EPC distribution, SAR value) [13020 SAR] | 13,020 | NSR | NHL | NSR | Standard | SAR | As-built | Approval | ENG | DOCS | COM | MS7 |
|  | NJF | **Al Jouf (NSR)** |  |  | 2028-04-10 | 2029-07-16 |  |  |  |  |  |  |  |  |  |  |  |  |  |  |  |  |
| NJF-E1200 |  | MS2 Engineering submittal complete (10%) - Al Jouf | milestone | 0d | 2028-09-14 | 2028-09-14 | NJF-E1090, NJF-E1110 | 66d | 15d |  |  | NSR | NJF | NSR | Standard | ETECHS | - | - | MS | DOCS | MS | MS2 |
| NJF-E1210 |  | MS3 Engineering approved by SAR (10%) - Al Jouf | milestone | 0d | 2028-10-05 | 2028-10-05 | NJF-E1020, NJF-E1040, NJF-E1060, NJF-E1080, NJF-E1100, NJF-E1120, NJF-E1200 | 51d | 0d |  |  | NSR | NJF | NSR | Standard | SAR | - | - | MS | DOCS | MS | MS3 |
|  | SRV | **Site survey and as-found verification** |  |  | 2028-04-10 | 2028-07-23 |  |  |  |  |  |  |  |  |  |  |  |  |  |  |  |  |
|  | SUB | **Submittal** |  |  | 2028-06-19 | 2028-07-02 |  |  |  |  |  |  |  |  |  |  |  |  |  |  |  |  |
| NJF-E1010 |  | Survey: submittal of site survey and as-found report - Al Jouf |  | 10d | 2028-06-19 | 2028-07-02 | NJF-E1005 | 51d | 0d | Contract cost (BOQ x payment milestones) [16772 SAR]; Progress weight (fair EPC distribution, SAR value) [12400 SAR] | 12,400 | NSR | NJF | NSR | Standard | ETECHS | Survey | Submittal | ENG | DOCS | DES | MS2 |
|  | APR | **Approval** |  |  | 2028-07-03 | 2028-07-23 |  |  |  |  |  |  |  |  |  |  |  |  |  |  |  |  |
| NJF-E1020 |  | Survey: SAR approval of survey report - Al Jouf |  | 15d | 2028-07-03 | 2028-07-23 | NJF-E1010 | 105d | 54d | Contract cost (BOQ x payment milestones) [17114 SAR]; Progress weight (fair EPC distribution, SAR value) [18600 SAR] | 18,600 | NSR | NJF | NSR | Standard | SAR | Survey | Approval | ENG | DOCS | DES | MS3 |
|  | PRM | **Site access permit** |  |  | 2028-04-10 | 2028-06-18 |  |  |  |  |  |  |  |  |  |  |  |  |  |  |  |  |
| NJF-E1005 |  | Survey: site access permit - application and approval (two months) - Al Jouf |  | 45d | 2028-04-10 | 2028-06-18 | PRJ-M2100 FS+264d | 51d | 0d | Contract cost (BOQ x payment milestones) [6846 SAR]; Progress weight (fair EPC distribution, SAR value) [8060 SAR] | 8,060 | NSR | NJF | NSR | Standard | SAR | Survey | Approval | ENG | DOCS | MOB | MS2 |

| ID | WBS | Activity | Duration | Start | Finish | Predecessors | Total float | Free float | Resources | Cost | Area | Station | Railway | Priority | Responsibility | Design stage | Submittal or approval | EPC phase | Discipline | Programme phase | Payment milestone |
| --- | --- | --- | --- | --- | --- | --- | --- | --- | --- | --- | --- | --- | --- | --- | --- | --- | --- | --- | --- | --- | --- |
|  | CNC | **Concept design** |  | 2028-07-03 | 2028-08-02 |  |  |  |  |  |  |  |  |  |  |  |  |  |  |  |  |
|  | SUB | **Submittal** |  | 2028-07-03 | 2028-07-12 |  |  |  |  |  |  |  |  |  |  |  |  |  |  |  |  |
| NJF-E1030 |  | Concept design: submittal - Al Jouf | 8d | 2028-07-03 | 2028-07-12 | NJF-E1010 | 51d | 0d | Contract cost (BOQ x payment milestones) [33544 SAR]; Progress weight (fair EPC distribution, SAR value) [13640 SAR] | 13,640 | NSR | NJF | NSR | Standard | ETECHS | Concept | Submittal | ENG | DOCS | DES | MS2 |
|  | APR | **Approval** |  | 2028-07-13 | 2028-08-02 |  |  |  |  |  |  |  |  |  |  |  |  |  |  |  |  |
| NJF-E1040 |  | Concept design: SAR review and approval - Al Jouf | 15d | 2028-07-13 | 2028-08-02 | NJF-E1030 | 97d | 46d | Contract cost (BOQ x payment milestones) [34228 SAR]; Progress weight (fair EPC distribution, SAR value) [25420 SAR] | 25,420 | NSR | NJF | NSR | Standard | SAR | Concept | Approval | ENG | DOCS | DES | MS3 |
|  | PRE | **Preliminary (schematic) design** |  | 2028-07-13 | 2028-08-22 |  |  |  |  |  |  |  |  |  |  |  |  |  |  |  |  |
|  | SUB | **Submittal** |  | 2028-07-13 | 2028-08-01 |  |  |  |  |  |  |  |  |  |  |  |  |  |  |  |  |
| NJF-E1050 |  | Preliminary design: submittal - Al Jouf | 14d | 2028-07-13 | 2028-08-01 | NJF-E1030 | 51d | 0d | Contract cost (BOQ x payment milestones) [67088 SAR]; Progress weight (fair EPC distribution, SAR value) [33480 SAR] | 33,480 | NSR | NJF | NSR | Standard | ETECHS | Preliminary | Submittal | ENG | DOCS | DES | MS2 |
|  | APR | **Approval** |  | 2028-08-02 | 2028-08-22 |  |  |  |  |  |  |  |  |  |  |  |  |  |  |  |  |
| NJF-E1060 |  | Preliminary design: SAR review and approval - Al Jouf | 15d | 2028-08-02 | 2028-08-22 | NJF-E1050 | 83d | 32d | Contract cost (BOQ x payment milestones) [68457 SAR]; Progress weight (fair EPC distribution, SAR value) [35960 SAR] | 35,960 | NSR | NJF | NSR | Standard | SAR | Preliminary | Approval | ENG | DOCS | DES | MS3 |
|  | DET | **Detailed design** |  | 2028-08-02 | 2028-09-21 |  |  |  |  |  |  |  |  |  |  |  |  |  |  |  |  |
|  | SUB | **Submittal** |  | 2028-08-02 | 2028-08-31 |  |  |  |  |  |  |  |  |  |  |  |  |  |  |  |  |
| NJF-E1070 |  | Detailed design: submittal (drawings, BOQ, data sheets) - Al Jouf | 22d | 2028-08-02 | 2028-08-31 | NJF-E1050 | 51d | 0d | Contract cost (BOQ x payment milestones) [134176 SAR]; Progress weight (fair EPC distribution, SAR value) [68820 SAR] | 68,820 | NSR | NJF | NSR | Standard | ETECHS | Detailed | Submittal | ENG | DOCS | DES | MS2 |
|  | APR | **Approval** |  | 2028-09-03 | 2028-09-21 |  |  |  |  |  |  |  |  |  |  |  |  |  |  |  |  |
| NJF-E1080 |  | Detailed design: SAR review and approval - Al Jouf | 15d | 2028-09-03 | 2028-09-21 | NJF-E1070 | 61d | 10d | Contract cost (BOQ x payment milestones) [136914 SAR]; Progress weight (fair EPC distribution, SAR value) [47120 SAR] | 47,120 | NSR | NJF | NSR | Standard | SAR | Detailed | Approval | ENG | DOCS | DES | MS3 |
|  | IFC | **IFC and shop drawings** |  | 2028-09-03 | 2028-10-05 |  |  |  |  |  |  |  |  |  |  |  |  |  |  |  |  |
|  | SUB | **Submittal** |  | 2028-09-03 | 2028-09-14 |  |  |  |  |  |  |  |  |  |  |  |  |  |  |  |  |
| NJF-E1090 |  | IFC and shop drawings: submittal - Al Jouf | 10d | 2028-09-03 | 2028-09-14 | NJF-E1070 | 51d | 0d | Contract cost (BOQ x payment milestones) [67088 SAR]; Progress weight (fair EPC distribution, SAR value) [27900 SAR] | 27,900 | NSR | NJF | NSR | Standard | ETECHS | IFC | Submittal | ENG | DOCS | DES | MS2 |
|  | APR | **Approval** |  | 2028-09-17 | 2028-10-05 |  |  |  |  |  |  |  |  |  |  |  |  |  |  |  |  |
| NJF-E1100 |  | IFC and shop drawings: SAR approval and release - Al Jouf | 15d | 2028-09-17 | 2028-10-05 | NJF-E1090 | 51d | 0d | Contract cost (BOQ x payment milestones) [68457 SAR]; Progress weight (fair EPC distribution, SAR value) [41540 SAR] | 41,540 | NSR | NJF | NSR | Standard | SAR | IFC | Approval | ENG | DOCS | DES | MS3 |
|  | HCS | **HCIS documentation (Stage 3 and 4)** |  | 2028-08-14 | 2028-10-05 |  |  |  |  |  |  |  |  |  |  |  |  |  |  |  |  |
|  | SUB | **Submittal** |  | 2028-08-14 | 2028-09-14 |  |  |  |  |  |  |  |  |  |  |  |  |  |  |  |  |
| NJF-E1110 |  | HCIS Stage 3 and 4 documents: preparation - Al Jouf | 24d | 2028-08-14 | 2028-09-14 | NJF-E1050 FS+8d, NJF-E1090 FF | 51d | 0d | Contract cost (BOQ x payment milestones) [16772 SAR]; Progress weight (fair EPC distribution, SAR value) [14260 SAR] | 14,260 | NSR | NJF | NSR | Standard | ETECHS | HCIS | Submittal | ENG | DOCS | DES | MS2 |
|  | APR | **Approval** |  | 2028-09-17 | 2028-10-05 |  |  |  |  |  |  |  |  |  |  |  |  |  |  |  |  |
| NJF-E1120 |  | HCIS Stage 3 and 4 documents: SAR final review and HCIS submission - Al Jouf | 15d | 2028-09-17 | 2028-10-05 | NJF-E1110 | 51d | 0d | Contract cost (BOQ x payment milestones) [17114 SAR]; Progress weight (fair EPC distribution, SAR value) [8680 SAR] | 8,680 | NSR | NJF | NSR | Standard | SAR/HCIS | HCIS | Approval | ENG | DOCS | DES | MS3 |

| ID | WBS | Activity | Type | Duration | Start | Finish | Predecessors | Total float | Free float | Resources | Cost | Area | Station | Railway | Priority | Responsibility | Design stage | Submittal or approval | EPC phase | Discipline | Programme phase | Payment milestone |
| --- | --- | --- | --- | --- | --- | --- | --- | --- | --- | --- | --- | --- | --- | --- | --- | --- | --- | --- | --- | --- | --- | --- |
|  | ASB | **As-built and O&M documentation** |  |  | 2029-05-15 | 2029-07-16 |  |  |  |  |  |  |  |  |  |  |  |  |  |  |  |  |
|  | SUB | **Submittal** |  |  | 2029-05-15 | 2029-06-25 |  |  |  |  |  |  |  |  |  |  |  |  |  |  |  |  |
| NJF-E1130 |  | As-built and O&M documentation: submittal - Al Jouf |  | 30d | 2029-05-15 | 2029-06-25 | NJF-C2100 | 51d | 0d | Contract cost (BOQ x payment milestones) [51343 SAR]; Progress weight (fair EPC distribution, SAR value) [26040 SAR] | 26,040 | NSR | NJF | NSR | Standard | ETECHS | As-built | Submittal | ENG | DOCS | COM | MS7 |
|  | APR | **Approval** |  |  | 2029-06-26 | 2029-07-16 |  |  |  |  |  |  |  |  |  |  |  |  |  |  |  |  |
| NJF-E1140 |  | As-built and O&M documentation: SAR review and approval - Al Jouf |  | 15d | 2029-06-26 | 2029-07-16 | NJF-E1130 | 51d | 0d | Contract cost (BOQ x payment milestones) [17114 SAR]; Progress weight (fair EPC distribution, SAR value) [13020 SAR] | 13,020 | NSR | NJF | NSR | Standard | SAR | As-built | Approval | ENG | DOCS | COM | MS7 |
|  | NQR | **Al Qurayyat (NSR)** |  |  | 2028-05-29 | 2029-08-27 |  |  |  |  |  |  |  |  |  |  |  |  |  |  |  |  |
| NQR-E1200 |  | MS2 Engineering submittal complete (10%) - Al Qurayyat | milestone | 0d | 2028-10-26 | 2028-10-26 | NQR-E1090, NQR-E1110 | 36d | 15d |  |  | NSR | NQR | NSR | Standard | ETECHS | - | - | MS | DOCS | MS | MS2 |
| NQR-E1210 |  | MS3 Engineering approved by SAR (10%) - Al Qurayyat | milestone | 0d | 2028-11-16 | 2028-11-16 | NQR-E1020, NQR-E1040, NQR-E1060, NQR-E1080, NQR-E1100, NQR-E1120, NQR-E1200 | 21d | 0d |  |  | NSR | NQR | NSR | Standard | SAR | - | - | MS | DOCS | MS | MS3 |
|  | SRV | **Site survey and as-found verification** |  |  | 2028-05-29 | 2028-09-03 |  |  |  |  |  |  |  |  |  |  |  |  |  |  |  |  |
|  | SUB | **Submittal** |  |  | 2028-07-31 | 2028-08-13 |  |  |  |  |  |  |  |  |  |  |  |  |  |  |  |  |
| NQR-E1010 |  | Survey: submittal of site survey and as-found report - Al Qurayyat |  | 10d | 2028-07-31 | 2028-08-13 | NQR-E1005 | 21d | 0d | Contract cost (BOQ x payment milestones) [16655 SAR]; Progress weight (fair EPC distribution, SAR value) [12400 SAR] | 12,400 | NSR | NQR | NSR | Standard | ETECHS | Survey | Submittal | ENG | DOCS | DES | MS2 |
|  | APR | **Approval** |  |  | 2028-08-14 | 2028-09-03 |  |  |  |  |  |  |  |  |  |  |  |  |  |  |  |  |
| NQR-E1020 |  | Survey: SAR approval of survey report - Al Qurayyat |  | 15d | 2028-08-14 | 2028-09-03 | NQR-E1010 | 75d | 54d | Contract cost (BOQ x payment milestones) [16995 SAR]; Progress weight (fair EPC distribution, SAR value) [18600 SAR] | 18,600 | NSR | NQR | NSR | Standard | SAR | Survey | Approval | ENG | DOCS | DES | MS3 |
|  | PRM | **Site access permit** |  |  | 2028-05-29 | 2028-07-30 |  |  |  |  |  |  |  |  |  |  |  |  |  |  |  |  |
| NQR-E1005 |  | Survey: site access permit - application and approval (two months) - Al Qurayyat |  | 45d | 2028-05-29 | 2028-07-30 | PRJ-M2100 FS+294d | 21d | 0d | Contract cost (BOQ x payment milestones) [6798 SAR]; Progress weight (fair EPC distribution, SAR value) [8060 SAR] | 8,060 | NSR | NQR | NSR | Standard | SAR | Survey | Approval | ENG | DOCS | MOB | MS2 |
|  | CNC | **Concept design** |  |  | 2028-08-14 | 2028-09-13 |  |  |  |  |  |  |  |  |  |  |  |  |  |  |  |  |
|  | SUB | **Submittal** |  |  | 2028-08-14 | 2028-08-23 |  |  |  |  |  |  |  |  |  |  |  |  |  |  |  |  |
| NQR-E1030 |  | Concept design: submittal - Al Qurayyat |  | 8d | 2028-08-14 | 2028-08-23 | NQR-E1010 | 21d | 0d | Contract cost (BOQ x payment milestones) [33309 SAR]; Progress weight (fair EPC distribution, SAR value) [13640 SAR] | 13,640 | NSR | NQR | NSR | Standard | ETECHS | Concept | Submittal | ENG | DOCS | DES | MS2 |
|  | APR | **Approval** |  |  | 2028-08-24 | 2028-09-13 |  |  |  |  |  |  |  |  |  |  |  |  |  |  |  |  |
| NQR-E1040 |  | Concept design: SAR review and approval - Al Qurayyat |  | 15d | 2028-08-24 | 2028-09-13 | NQR-E1030 | 67d | 46d | Contract cost (BOQ x payment milestones) [33989 SAR]; Progress weight (fair EPC distribution, SAR value) [24800 SAR] | 24,800 | NSR | NQR | NSR | Standard | SAR | Concept | Approval | ENG | DOCS | DES | MS3 |
|  | PRE | **Preliminary (schematic) design** |  |  | 2028-08-24 | 2028-10-03 |  |  |  |  |  |  |  |  |  |  |  |  |  |  |  |  |
|  | SUB | **Submittal** |  |  | 2028-08-24 | 2028-09-12 |  |  |  |  |  |  |  |  |  |  |  |  |  |  |  |  |
| NQR-E1050 |  | Preliminary design: submittal - Al Qurayyat |  | 14d | 2028-08-24 | 2028-09-12 | NQR-E1030 | 21d | 0d | Contract cost (BOQ x payment milestones) [66619 SAR]; Progress weight (fair EPC distribution, SAR value) [33480 SAR] | 33,480 | NSR | NQR | NSR | Standard | ETECHS | Preliminary | Submittal | ENG | DOCS | DES | MS2 |
|  | APR | **Approval** |  |  | 2028-09-13 | 2028-10-03 |  |  |  |  |  |  |  |  |  |  |  |  |  |  |  |  |
| NQR-E1060 |  | Preliminary design: SAR review and approval - Al Qurayyat |  | 15d | 2028-09-13 | 2028-10-03 | NQR-E1050 | 53d | 32d | Contract cost (BOQ x payment milestones) [67978 SAR]; Progress weight (fair EPC distribution, SAR value) [35960 SAR] | 35,960 | NSR | NQR | NSR | Standard | SAR | Preliminary | Approval | ENG | DOCS | DES | MS3 |

| ID | WBS | Activity | Type | Duration | Start | Finish | Predecessors | Total float | Free float | Resources | Cost | Area | Station | Railway | Priority | Responsibility | Design stage | Submittal or approval | EPC phase | Discipline | Programme phase | Payment milestone |
| --- | --- | --- | --- | --- | --- | --- | --- | --- | --- | --- | --- | --- | --- | --- | --- | --- | --- | --- | --- | --- | --- | --- |
|  | DET | **Detailed design** |  |  | 2028-09-13 | 2028-11-02 |  |  |  |  |  |  |  |  |  |  |  |  |  |  |  |  |
|  | SUB | **Submittal** |  |  | 2028-09-13 | 2028-10-12 |  |  |  |  |  |  |  |  |  |  |  |  |  |  |  |  |
| NQR-E1070 |  | Detailed design: submittal (drawings, BOQ, data sheets) - Al Qurayyat |  | 22d | 2028-09-13 | 2028-10-12 | NQR-E1050 | 21d | 0d | Contract cost (BOQ x payment milestones) [133238 SAR]; Progress weight (fair EPC distribution, SAR value) [68200 SAR] | 68,200 | NSR | NQR | NSR | Standard | ETECHS | Detailed | Submittal | ENG | DOCS | DES | MS2 |
|  | APR | **Approval** |  |  | 2028-10-15 | 2028-11-02 |  |  |  |  |  |  |  |  |  |  |  |  |  |  |  |  |
| NQR-E1080 |  | Detailed design: SAR review and approval - Al Qurayyat |  | 15d | 2028-10-15 | 2028-11-02 | NQR-E1070 | 31d | 10d | Contract cost (BOQ x payment milestones) [135957 SAR]; Progress weight (fair EPC distribution, SAR value) [46500 SAR] | 46,500 | NSR | NQR | NSR | Standard | SAR | Detailed | Approval | ENG | DOCS | DES | MS3 |
|  | IFC | **IFC and shop drawings** |  |  | 2028-10-15 | 2028-11-16 |  |  |  |  |  |  |  |  |  |  |  |  |  |  |  |  |
|  | SUB | **Submittal** |  |  | 2028-10-15 | 2028-10-26 |  |  |  |  |  |  |  |  |  |  |  |  |  |  |  |  |
| NQR-E1090 |  | IFC and shop drawings: submittal - Al Qurayyat |  | 10d | 2028-10-15 | 2028-10-26 | NQR-E1070 | 21d | 0d | Contract cost (BOQ x payment milestones) [66619 SAR]; Progress weight (fair EPC distribution, SAR value) [27900 SAR] | 27,900 | NSR | NQR | NSR | Standard | ETECHS | IFC | Submittal | ENG | DOCS | DES | MS2 |
|  | APR | **Approval** |  |  | 2028-10-29 | 2028-11-16 |  |  |  |  |  |  |  |  |  |  |  |  |  |  |  |  |
| NQR-E1100 |  | IFC and shop drawings: SAR approval and release - Al Qurayyat |  | 15d | 2028-10-29 | 2028-11-16 | NQR-E1090 | 21d | 0d | Contract cost (BOQ x payment milestones) [67978 SAR]; Progress weight (fair EPC distribution, SAR value) [41540 SAR] | 41,540 | NSR | NQR | NSR | Standard | SAR | IFC | Approval | ENG | DOCS | DES | MS3 |
|  | HCS | **HCIS documentation (Stage 3 and 4)** |  |  | 2028-09-25 | 2028-11-16 |  |  |  |  |  |  |  |  |  |  |  |  |  |  |  |  |
|  | SUB | **Submittal** |  |  | 2028-09-25 | 2028-10-26 |  |  |  |  |  |  |  |  |  |  |  |  |  |  |  |  |
| NQR-E1110 |  | HCIS Stage 3 and 4 documents: preparation - Al Qurayyat |  | 24d | 2028-09-25 | 2028-10-26 | NQR-E1050 FS+8d, NQR-E1090 FF | 21d | 0d | Contract cost (BOQ x payment milestones) [16655 SAR]; Progress weight (fair EPC distribution, SAR value) [14260 SAR] | 14,260 | NSR | NQR | NSR | Standard | ETECHS | HCIS | Submittal | ENG | DOCS | DES | MS2 |
|  | APR | **Approval** |  |  | 2028-10-29 | 2028-11-16 |  |  |  |  |  |  |  |  |  |  |  |  |  |  |  |  |
| NQR-E1120 |  | HCIS Stage 3 and 4 documents: SAR final review and HCIS submission - Al Qurayyat |  | 15d | 2028-10-29 | 2028-11-16 | NQR-E1110 | 21d | 0d | Contract cost (BOQ x payment milestones) [16995 SAR]; Progress weight (fair EPC distribution, SAR value) [8680 SAR] | 8,680 | NSR | NQR | NSR | Standard | SAR/HCIS | HCIS | Approval | ENG | DOCS | DES | MS3 |
|  | ASB | **As-built and O&M documentation** |  |  | 2029-06-26 | 2029-08-27 |  |  |  |  |  |  |  |  |  |  |  |  |  |  |  |  |
|  | SUB | **Submittal** |  |  | 2029-06-26 | 2029-08-06 |  |  |  |  |  |  |  |  |  |  |  |  |  |  |  |  |
| NQR-E1130 |  | As-built and O&M documentation: submittal - Al Qurayyat |  | 30d | 2029-06-26 | 2029-08-06 | NQR-C2100 | 21d | 0d | Contract cost (BOQ x payment milestones) [50984 SAR]; Progress weight (fair EPC distribution, SAR value) [25420 SAR] | 25,420 | NSR | NQR | NSR | Standard | ETECHS | As-built | Submittal | ENG | DOCS | COM | MS7 |
|  | APR | **Approval** |  |  | 2029-08-07 | 2029-08-27 |  |  |  |  |  |  |  |  |  |  |  |  |  |  |  |  |
| NQR-E1140 |  | As-built and O&M documentation: SAR review and approval - Al Qurayyat |  | 15d | 2029-08-07 | 2029-08-27 | NQR-E1130 | 21d | 0d | Contract cost (BOQ x payment milestones) [16995 SAR]; Progress weight (fair EPC distribution, SAR value) [13020 SAR] | 13,020 | NSR | NQR | NSR | Standard | SAR | As-built | Approval | ENG | DOCS | COM | MS7 |
|  | PRO | **Procurement** |  |  | 2027-05-02 | 2029-05-06 |  |  |  |  |  |  |  |  |  |  |  |  |  |  |  |  |
|  | NRY | **Riyadh (Thumamah) (NSR)** |  |  | 2027-05-02 | 2027-09-26 |  |  |  |  |  |  |  |  |  |  |  |  |  |  |  |  |
| NRY-P1100 |  | MS4 Material delivered (20%) - Riyadh (Thumamah) | milestone | 0d | 2027-09-26 | 2027-09-26 | NRY-P1070 | 420d | 0d |  |  | NSR | NRY | NSR | Priority 1 | ETECHS | - | - | MS | PM | MS | MS4 |
|  | CCT | **CCTV system** |  |  | 2027-05-02 | 2027-07-29 |  |  |  |  |  |  |  |  |  |  |  |  |  |  |  |  |
| NRY-P1010 |  | Manufacture CCTV cameras and analytics - Riyadh (Thumamah) |  | 60d | 2027-05-02 | 2027-07-29 | NRY-E1210 | 420d | 0d | Contract cost (BOQ x payment milestones) [103080 SAR]; Progress weight (fair EPC distribution, SAR value) [158100 SAR] | 158,100 | NSR | NRY | NSR | Priority 1 | Vendor | - | - | PRO | CCTV | PRO | MS4 |

| ID | WBS | Activity | Type | Duration | Start | Finish | Predecessors | Total float | Free float | Resources | Cost | Area | Station | Railway | Priority | Discipline | Responsibility | EPC phase | Design stage | Submittal or approval | Programme phase | Payment milestone |
| --- | --- | --- | --- | --- | --- | --- | --- | --- | --- | --- | --- | --- | --- | --- | --- | --- | --- | --- | --- | --- | --- | --- |
|  | VMS | **Video management and video wall** |  |  | 2027-05-02 | 2027-07-29 |  |  |  |  |  |  |  |  |  |  |  |  |  |  |  |  |
| NRY-P1020 |  | Manufacture video management servers, storage and video wall - Riyadh (Thumamah) |  | 60d | 2027-05-02 | 2027-07-29 | NRY-E1210 | 420d | 0d | Contract cost (BOQ x payment milestones) [126844 SAR]; Progress weight (fair EPC distribution, SAR value) [194680 SAR] | 194,680 | NSR | NRY | NSR | Priority 1 | VMS | Vendor | PRO | - | - | PRO | MS4 |
|  | ACC | **Access control and intercom** |  |  | 2027-05-02 | 2027-07-29 |  |  |  |  |  |  |  |  |  |  |  |  |  |  |  |  |
| NRY-P1030 |  | Manufacture access control and intercom equipment - Riyadh (Thumamah) |  | 60d | 2027-05-02 | 2027-07-29 | NRY-E1210 | 420d | 0d | Contract cost (BOQ x payment milestones) [13405 SAR]; Progress weight (fair EPC distribution, SAR value) [20460 SAR] | 20,460 | NSR | NRY | NSR | Priority 1 | ACC | Vendor | PRO | - | - | PRO | MS4 |
|  | UPN | **UPS, network and cabinets** |  |  | 2027-05-02 | 2027-07-29 |  |  |  |  |  |  |  |  |  |  |  |  |  |  |  |  |
| NRY-P1040 |  | Manufacture UPS, network switches and field cabinets - Riyadh (Thumamah) |  | 60d | 2027-05-02 | 2027-07-29 | NRY-E1210 | 420d | 0d | Contract cost (BOQ x payment milestones) [278789 SAR]; Progress weight (fair EPC distribution, SAR value) [428420 SAR] | 428,420 | NSR | NRY | NSR | Priority 1 | UPSNET | Vendor | PRO | - | - | PRO | MS4 |
|  | LOG | **FAT and logistics** |  |  | 2027-08-01 | 2027-09-26 |  |  |  |  |  |  |  |  |  |  |  |  |  |  |  |  |
| NRY-P1050 |  | Factory acceptance test at vendor premises - Riyadh (Thumamah) |  | 10d | 2027-08-01 | 2027-08-12 | NRY-P1010, NRY-P1020, NRY-P1030, NRY-P1040 | 420d | 0d | Contract cost (BOQ x payment milestones) [34808 SAR]; Progress weight (fair EPC distribution, SAR value) [133920 SAR] | 133,920 | NSR | NRY | NSR | Priority 1 | PM | ETECHS | PRO | - | - | PRO | MS4 |
| NRY-P1060 |  | Shipping and customs clearance - Riyadh (Thumamah) |  | 25d | 2027-08-15 | 2027-09-16 | NRY-P1050 | 420d | 0d | Contract cost (BOQ x payment milestones) [104424 SAR]; Progress weight (fair EPC distribution, SAR value) [267220 SAR] | 267,220 | NSR | NRY | NSR | Priority 1 | PM | Vendor | PRO | - | - | PRO | MS4 |
| NRY-P1070 |  | Delivery to station and receiving inspection - Riyadh (Thumamah) |  | 5d | 2027-09-19 | 2027-09-26 | NRY-P1060 | 420d | 0d | Contract cost (BOQ x payment milestones) [34808 SAR]; Progress weight (fair EPC distribution, SAR value) [133920 SAR] | 133,920 | NSR | NRY | NSR | Priority 1 | PM | ETECHS | PRO | - | - | PRO | MS4 |
|  | HMK | **Makkah (HHR)** |  |  | 2027-05-02 | 2027-11-21 |  |  |  |  |  |  |  |  |  |  |  |  |  |  |  |  |
| HMK-P1100 |  | MS4 Material delivered (20%) - Makkah | milestone | 0d | 2027-11-21 | 2027-11-21 | HMK-P1070 | 300d | 0d |  |  | HHR | HMK | HHR | Priority 1 | PM | ETECHS | MS | - | - | MS | MS4 |
|  | CCT | **CCTV system** |  |  | 2027-05-02 | 2027-09-09 |  |  |  |  |  |  |  |  |  |  |  |  |  |  |  |  |
| HMK-P1010 |  | Manufacture CCTV cameras and analytics - Makkah |  | 90d | 2027-05-02 | 2027-09-09 | HMK-E1210 | 300d | 0d | Contract cost (BOQ x payment milestones) [473780 SAR]; Progress weight (fair EPC distribution, SAR value) [727260 SAR] | 727,260 | HHR | HMK | HHR | Priority 1 | CCTV | Vendor | PRO | - | - | PRO | MS4 |
|  | VMS | **Video management and video wall** |  |  | 2027-05-02 | 2027-09-09 |  |  |  |  |  |  |  |  |  |  |  |  |  |  |  |  |
| HMK-P1020 |  | Manufacture video management servers, storage and video wall - Makkah |  | 90d | 2027-05-02 | 2027-09-09 | HMK-E1210 | 300d | 0d | Contract cost (BOQ x payment milestones) [158552 SAR]; Progress weight (fair EPC distribution, SAR value) [243660 SAR] | 243,660 | HHR | HMK | HHR | Priority 1 | VMS | Vendor | PRO | - | - | PRO | MS4 |
|  | ACC | **Access control and intercom** |  |  | 2027-05-02 | 2027-09-09 |  |  |  |  |  |  |  |  |  |  |  |  |  |  |  |  |
| HMK-P1030 |  | Manufacture access control and intercom equipment - Makkah |  | 90d | 2027-05-02 | 2027-09-09 | HMK-E1210 | 300d | 0d | Contract cost (BOQ x payment milestones) [12657 SAR]; Progress weight (fair EPC distribution, SAR value) [19220 SAR] | 19,220 | HHR | HMK | HHR | Priority 1 | ACC | Vendor | PRO | - | - | PRO | MS4 |
|  | UPN | **UPS, network and cabinets** |  |  | 2027-05-02 | 2027-09-09 |  |  |  |  |  |  |  |  |  |  |  |  |  |  |  |  |
| HMK-P1040 |  | Manufacture UPS, network switches and field cabinets - Makkah |  | 90d | 2027-05-02 | 2027-09-09 | HMK-E1210 | 300d | 0d | Contract cost (BOQ x payment milestones) [811524 SAR]; Progress weight (fair EPC distribution, SAR value) [1245580 SAR] | 1,245,580 | HHR | HMK | HHR | Priority 1 | UPSNET | Vendor | PRO | - | - | PRO | MS4 |
|  | LOG | **FAT and logistics** |  |  | 2027-09-12 | 2027-11-21 |  |  |  |  |  |  |  |  |  |  |  |  |  |  |  |  |
| HMK-P1050 |  | Factory acceptance test at vendor premises - Makkah |  | 10d | 2027-09-12 | 2027-09-26 | HMK-P1010, HMK-P1020, HMK-P1030, HMK-P1040 | 300d | 0d | Contract cost (BOQ x payment milestones) [97101 SAR]; Progress weight (fair EPC distribution, SAR value) [372620 SAR] | 372,620 | HHR | HMK | HHR | Priority 1 | PM | ETECHS | PRO | - | - | PRO | MS4 |
| HMK-P1060 |  | Shipping and customs clearance - Makkah |  | 35d | 2027-09-27 | 2027-11-14 | HMK-P1050 | 300d | 0d | Contract cost (BOQ x payment milestones) [291303 SAR]; Progress weight (fair EPC distribution, SAR value) [745240 SAR] | 745,240 | HHR | HMK | HHR | Priority 1 | PM | Vendor | PRO | - | - | PRO | MS4 |
| HMK-P1070 |  | Delivery to station and receiving inspection - Makkah |  | 5d | 2027-11-15 | 2027-11-21 | HMK-P1060 | 300d | 0d | Contract cost (BOQ x payment milestones) [97101 SAR]; Progress weight (fair EPC distribution, SAR value) [372620 SAR] | 372,620 | HHR | HMK | HHR | Priority 1 | PM | ETECHS | PRO | - | - | PRO | MS4 |

| ID | WBS | Activity | Type | Duration | Start | Finish | Predecessors | Total float | Free float | Resources | Cost | Area | Station | Railway | Priority | EPC phase | Discipline | Responsibility | Design stage | Submittal or approval | Payment milestone | Programme phase |
| --- | --- | --- | --- | --- | --- | --- | --- | --- | --- | --- | --- | --- | --- | --- | --- | --- | --- | --- | --- | --- | --- | --- |
|  | ERY | **Riyadh (Malaz) (EWR)** |  |  | 2027-05-02 | 2027-09-26 |  |  |  |  |  |  |  |  |  |  |  |  |  |  |  |  |
| ERY-P1100 |  | MS4 Material delivered (20%) - Riyadh (Malaz) | milestone | 0d | 2027-09-26 | 2027-09-26 | ERY-P1070 | 426d | 0d |  |  | EWR | ERY | EWR | Priority 2 | MS | PM | ETECHS | - | - | MS4 | MS |
|  | CCT | **CCTV system** |  |  | 2027-05-02 | 2027-07-29 |  |  |  |  |  |  |  |  |  |  |  |  |  |  |  |  |
| ERY-P1010 |  | Manufacture CCTV cameras and analytics - Riyadh (Malaz) |  | 60d | 2027-05-02 | 2027-07-29 | ERY-E1210 | 426d | 0d | Contract cost (BOQ x payment milestones) [101092 SAR]; Progress weight (fair EPC distribution, SAR value) [155000 SAR] | 155,000 | EWR | ERY | EWR | Priority 2 | PRO | CCTV | Vendor | - | - | MS4 | PRO |
|  | VMS | **Video management and video wall** |  |  | 2027-05-02 | 2027-07-29 |  |  |  |  |  |  |  |  |  |  |  |  |  |  |  |  |
| ERY-P1020 |  | Manufacture video management servers, storage and video wall - Riyadh (Malaz) |  | 60d | 2027-05-02 | 2027-07-29 | ERY-E1210 | 426d | 0d | Contract cost (BOQ x payment milestones) [128120 SAR]; Progress weight (fair EPC distribution, SAR value) [196540 SAR] | 196,540 | EWR | ERY | EWR | Priority 2 | PRO | VMS | Vendor | - | - | MS4 | PRO |
|  | ACC | **Access control and intercom** |  |  | 2027-05-02 | 2027-07-29 |  |  |  |  |  |  |  |  |  |  |  |  |  |  |  |  |
| ERY-P1030 |  | Manufacture access control and intercom equipment - Riyadh (Malaz) |  | 60d | 2027-05-02 | 2027-07-29 | ERY-E1210 | 426d | 0d | Contract cost (BOQ x payment milestones) [16098 SAR]; Progress weight (fair EPC distribution, SAR value) [24800 SAR] | 24,800 | EWR | ERY | EWR | Priority 2 | PRO | ACC | Vendor | - | - | MS4 | PRO |
|  | UPN | **UPS, network and cabinets** |  |  | 2027-05-02 | 2027-07-29 |  |  |  |  |  |  |  |  |  |  |  |  |  |  |  |  |
| ERY-P1040 |  | Manufacture UPS, network switches and field cabinets - Riyadh (Malaz) |  | 60d | 2027-05-02 | 2027-07-29 | ERY-E1210 | 426d | 0d | Contract cost (BOQ x payment milestones) [218418 SAR]; Progress weight (fair EPC distribution, SAR value) [335420 SAR] | 335,420 | EWR | ERY | EWR | Priority 2 | PRO | UPSNET | Vendor | - | - | MS4 | PRO |
|  | LOG | **FAT and logistics** |  |  | 2027-08-01 | 2027-09-26 |  |  |  |  |  |  |  |  |  |  |  |  |  |  |  |  |
| ERY-P1050 |  | Factory acceptance test at vendor premises - Riyadh (Malaz) |  | 10d | 2027-08-01 | 2027-08-12 | ERY-P1010, ERY-P1020, ERY-P1030, ERY-P1040 | 426d | 0d | Contract cost (BOQ x payment milestones) [30915 SAR]; Progress weight (fair EPC distribution, SAR value) [118420 SAR] | 118,420 | EWR | ERY | EWR | Priority 2 | PRO | PM | ETECHS | - | - | MS4 | PRO |
| ERY-P1060 |  | Shipping and customs clearance - Riyadh (Malaz) |  | 25d | 2027-08-15 | 2027-09-16 | ERY-P1050 | 426d | 0d | Contract cost (BOQ x payment milestones) [92746 SAR]; Progress weight (fair EPC distribution, SAR value) [237460 SAR] | 237,460 | EWR | ERY | EWR | Priority 2 | PRO | PM | Vendor | - | - | MS4 | PRO |
| ERY-P1070 |  | Delivery to station and receiving inspection - Riyadh (Malaz) |  | 5d | 2027-09-19 | 2027-09-26 | ERY-P1060 | 426d | 0d | Contract cost (BOQ x payment milestones) [30915 SAR]; Progress weight (fair EPC distribution, SAR value) [118420 SAR] | 118,420 | EWR | ERY | EWR | Priority 2 | PRO | PM | ETECHS | - | - | MS4 | PRO |
|  | HJD | **Jeddah (HHR)** |  |  | 2027-09-19 | 2028-04-09 |  |  |  |  |  |  |  |  |  |  |  |  |  |  |  |  |
| HJD-P1100 |  | MS4 Material delivered (20%) - Jeddah | milestone | 0d | 2028-04-09 | 2028-04-09 | HJD-P1070 | 221d | 0d |  |  | HHR | HJD | HHR | Standard | MS | PM | ETECHS | - | - | MS4 | MS |
|  | CCT | **CCTV system** |  |  | 2027-09-19 | 2028-01-23 |  |  |  |  |  |  |  |  |  |  |  |  |  |  |  |  |
| HJD-P1010 |  | Manufacture CCTV cameras and analytics - Jeddah |  | 90d | 2027-09-19 | 2028-01-23 | HJD-E1210 | 221d | 0d | Contract cost (BOQ x payment milestones) [396208 SAR]; Progress weight (fair EPC distribution, SAR value) [608840 SAR] | 608,840 | HHR | HJD | HHR | Standard | PRO | CCTV | Vendor | - | - | MS4 | PRO |
|  | VMS | **Video management and video wall** |  |  | 2027-09-19 | 2028-01-23 |  |  |  |  |  |  |  |  |  |  |  |  |  |  |  |  |
| HJD-P1020 |  | Manufacture video management servers, storage and video wall - Jeddah |  | 90d | 2027-09-19 | 2028-01-23 | HJD-E1210 | 221d | 0d | Contract cost (BOQ x payment milestones) [185712 SAR]; Progress weight (fair EPC distribution, SAR value) [285200 SAR] | 285,200 | HHR | HJD | HHR | Standard | PRO | VMS | Vendor | - | - | MS4 | PRO |
|  | ACC | **Access control and intercom** |  |  | 2027-09-19 | 2028-01-23 |  |  |  |  |  |  |  |  |  |  |  |  |  |  |  |  |
| HJD-P1030 |  | Manufacture access control and intercom equipment - Jeddah |  | 90d | 2027-09-19 | 2028-01-23 | HJD-E1210 | 221d | 0d | Contract cost (BOQ x payment milestones) [12555 SAR]; Progress weight (fair EPC distribution, SAR value) [19220 SAR] | 19,220 | HHR | HJD | HHR | Standard | PRO | ACC | Vendor | - | - | MS4 | PRO |
|  | UPN | **UPS, network and cabinets** |  |  | 2027-09-19 | 2028-01-23 |  |  |  |  |  |  |  |  |  |  |  |  |  |  |  |  |
| HJD-P1040 |  | Manufacture UPS, network switches and field cabinets - Jeddah |  | 90d | 2027-09-19 | 2028-01-23 | HJD-E1210 | 221d | 0d | Contract cost (BOQ x payment milestones) [838156 SAR]; Progress weight (fair EPC distribution, SAR value) [1286500 SAR] | 1,286,500 | HHR | HJD | HHR | Standard | PRO | UPSNET | Vendor | - | - | MS4 | PRO |

| ID | WBS | Activity | Type | Duration | Start | Finish | Predecessors | Total float | Free float | Resources | Cost | Area | Station | Railway | Priority | Discipline | Responsibility | EPC phase | Design stage | Submittal or approval | Programme phase | Payment milestone |
| --- | --- | --- | --- | --- | --- | --- | --- | --- | --- | --- | --- | --- | --- | --- | --- | --- | --- | --- | --- | --- | --- | --- |
|  | LOG | **FAT and logistics** |  |  | 2028-01-24 | 2028-04-09 |  |  |  |  |  |  |  |  |  |  |  |  |  |  |  |  |
| HJD-P1050 |  | Factory acceptance test at vendor premises - Jeddah |  | 10d | 2028-01-24 | 2028-02-06 | HJD-P1010, HJD-P1020, HJD-P1030, HJD-P1040 | 221d | 0d | Contract cost (BOQ x payment milestones) [95509 SAR]; Progress weight (fair EPC distribution, SAR value) [367040 SAR] | 367,040 | HHR | HJD | HHR | Standard | PM | ETECHS | PRO | - | - | PRO | MS4 |
| HJD-P1060 |  | Shipping and customs clearance - Jeddah |  | 35d | 2028-02-07 | 2028-04-02 | HJD-P1050 | 221d | 0d | Contract cost (BOQ x payment milestones) [286526 SAR]; Progress weight (fair EPC distribution, SAR value) [732840 SAR] | 732,840 | HHR | HJD | HHR | Standard | PM | Vendor | PRO | - | - | PRO | MS4 |
| HJD-P1070 |  | Delivery to station and receiving inspection - Jeddah |  | 5d | 2028-04-03 | 2028-04-09 | HJD-P1060 | 221d | 0d | Contract cost (BOQ x payment milestones) [95509 SAR]; Progress weight (fair EPC distribution, SAR value) [367040 SAR] | 367,040 | HHR | HJD | HHR | Standard | PM | ETECHS | PRO | - | - | PRO | MS4 |
|  | EDM | **Dammam (EWR)** |  |  | 2027-11-11 | 2028-04-19 |  |  |  |  |  |  |  |  |  |  |  |  |  |  |  |  |
| EDM-P1100 |  | MS4 Material delivered (20%) - Dammam | milestone | 0d | 2028-04-19 | 2028-04-19 | EDM-P1070 | 283d | 0d |  |  | EWR | EDM | EWR | Standard | PM | ETECHS | MS | - | - | MS | MS4 |
|  | CCT | **CCTV system** |  |  | 2027-11-11 | 2028-02-16 |  |  |  |  |  |  |  |  |  |  |  |  |  |  |  |  |
| EDM-P1010 |  | Manufacture CCTV cameras and analytics - Dammam |  | 70d | 2027-11-11 | 2028-02-16 | EDM-E1210 | 283d | 0d | Contract cost (BOQ x payment milestones) [99436 SAR]; Progress weight (fair EPC distribution, SAR value) [152520 SAR] | 152,520 | EWR | EDM | EWR | Standard | CCTV | Vendor | PRO | - | - | PRO | MS4 |
|  | VMS | **Video management and video wall** |  |  | 2027-11-11 | 2028-02-16 |  |  |  |  |  |  |  |  |  |  |  |  |  |  |  |  |
| EDM-P1020 |  | Manufacture video management servers, storage and video wall - Dammam |  | 70d | 2027-11-11 | 2028-02-16 | EDM-E1210 | 283d | 0d | Contract cost (BOQ x payment milestones) [148015 SAR]; Progress weight (fair EPC distribution, SAR value) [227540 SAR] | 227,540 | EWR | EDM | EWR | Standard | VMS | Vendor | PRO | - | - | PRO | MS4 |
|  | ACC | **Access control and intercom** |  |  | 2027-11-11 | 2028-02-16 |  |  |  |  |  |  |  |  |  |  |  |  |  |  |  |  |
| EDM-P1030 |  | Manufacture access control and intercom equipment - Dammam |  | 70d | 2027-11-11 | 2028-02-16 | EDM-E1210 | 283d | 0d | Contract cost (BOQ x payment milestones) [15834 SAR]; Progress weight (fair EPC distribution, SAR value) [24180 SAR] | 24,180 | EWR | EDM | EWR | Standard | ACC | Vendor | PRO | - | - | PRO | MS4 |
|  | UPN | **UPS, network and cabinets** |  |  | 2027-11-11 | 2028-02-16 |  |  |  |  |  |  |  |  |  |  |  |  |  |  |  |  |
| EDM-P1040 |  | Manufacture UPS, network switches and field cabinets - Dammam |  | 70d | 2027-11-11 | 2028-02-16 | EDM-E1210 | 283d | 0d | Contract cost (BOQ x payment milestones) [214841 SAR]; Progress weight (fair EPC distribution, SAR value) [329840 SAR] | 329,840 | EWR | EDM | EWR | Standard | UPSNET | Vendor | PRO | - | - | PRO | MS4 |
|  | LOG | **FAT and logistics** |  |  | 2028-02-17 | 2028-04-19 |  |  |  |  |  |  |  |  |  |  |  |  |  |  |  |  |
| EDM-P1050 |  | Factory acceptance test at vendor premises - Dammam |  | 10d | 2028-02-17 | 2028-03-08 | EDM-P1010, EDM-P1020, EDM-P1030, EDM-P1040 | 283d | 0d | Contract cost (BOQ x payment milestones) [31875 SAR]; Progress weight (fair EPC distribution, SAR value) [122140 SAR] | 122,140 | EWR | EDM | EWR | Standard | PM | ETECHS | PRO | - | - | PRO | MS4 |
| EDM-P1060 |  | Shipping and customs clearance - Dammam |  | 25d | 2028-03-09 | 2028-04-12 | EDM-P1050 | 283d | 0d | Contract cost (BOQ x payment milestones) [95625 SAR]; Progress weight (fair EPC distribution, SAR value) [244900 SAR] | 244,900 | EWR | EDM | EWR | Standard | PM | Vendor | PRO | - | - | PRO | MS4 |
| EDM-P1070 |  | Delivery to station and receiving inspection - Dammam |  | 5d | 2028-04-13 | 2028-04-19 | EDM-P1060 | 283d | 0d | Contract cost (BOQ x payment milestones) [31875 SAR]; Progress weight (fair EPC distribution, SAR value) [122140 SAR] | 122,140 | EWR | EDM | EWR | Standard | PM | ETECHS | PRO | - | - | PRO | MS4 |
|  | NQS | **Al Qassim (NSR)** |  |  | 2027-12-29 | 2028-06-13 |  |  |  |  |  |  |  |  |  |  |  |  |  |  |  |  |
| NQS-P1100 |  | MS4 Material delivered (20%) - Al Qassim | milestone | 0d | 2028-06-13 | 2028-06-13 | NQS-P1070 | 243d | 0d |  |  | NSR | NQS | NSR | Standard | PM | ETECHS | MS | - | - | MS | MS4 |
|  | CCT | **CCTV system** |  |  | 2027-12-29 | 2028-04-11 |  |  |  |  |  |  |  |  |  |  |  |  |  |  |  |  |
| NQS-P1010 |  | Manufacture CCTV cameras and analytics - Al Qassim |  | 70d | 2027-12-29 | 2028-04-11 | NQS-E1210 | 243d | 0d | Contract cost (BOQ x payment milestones) [104169 SAR]; Progress weight (fair EPC distribution, SAR value) [159960 SAR] | 159,960 | NSR | NQS | NSR | Standard | CCTV | Vendor | PRO | - | - | PRO | MS4 |
|  | VMS | **Video management and video wall** |  |  | 2027-12-29 | 2028-04-11 |  |  |  |  |  |  |  |  |  |  |  |  |  |  |  |  |
| NQS-P1020 |  | Manufacture video management servers, storage and video wall - Al Qassim |  | 70d | 2027-12-29 | 2028-04-11 | NQS-E1210 | 243d | 0d | Contract cost (BOQ x payment milestones) [110385 SAR]; Progress weight (fair EPC distribution, SAR value) [169260 SAR] | 169,260 | NSR | NQS | NSR | Standard | VMS | Vendor | PRO | - | - | PRO | MS4 |

| ID | WBS | Activity | Type | Duration | Start | Finish | Predecessors | Total float | Free float | Resources | Cost | Area | Station | Railway | Priority | Discipline | Responsibility | EPC phase | Design stage | Submittal or approval | Programme phase | Payment milestone |
| --- | --- | --- | --- | --- | --- | --- | --- | --- | --- | --- | --- | --- | --- | --- | --- | --- | --- | --- | --- | --- | --- | --- |
|  | ACC | **Access control and intercom** |  |  | 2027-12-29 | 2028-04-11 |  |  |  |  |  |  |  |  |  |  |  |  |  |  |  |  |
| NQS-P1030 |  | Manufacture access control and intercom equipment - Al Qassim |  | 70d | 2027-12-29 | 2028-04-11 | NQS-E1210 | 243d | 0d | Contract cost (BOQ x payment milestones) [13547 SAR]; Progress weight (fair EPC distribution, SAR value) [21080 SAR] | 21,080 | NSR | NQS | NSR | Standard | ACC | Vendor | PRO | - | - | PRO | MS4 |
|  | UPN | **UPS, network and cabinets** |  |  | 2027-12-29 | 2028-04-11 |  |  |  |  |  |  |  |  |  |  |  |  |  |  |  |  |
| NQS-P1040 |  | Manufacture UPS, network switches and field cabinets - Al Qassim |  | 70d | 2027-12-29 | 2028-04-11 | NQS-E1210 | 243d | 0d | Contract cost (BOQ x payment milestones) [281736 SAR]; Progress weight (fair EPC distribution, SAR value) [432760 SAR] | 432,760 | NSR | NQS | NSR | Standard | UPSNET | Vendor | PRO | - | - | PRO | MS4 |
|  | LOG | **FAT and logistics** |  |  | 2028-04-12 | 2028-06-13 |  |  |  |  |  |  |  |  |  |  |  |  |  |  |  |  |
| NQS-P1050 |  | Factory acceptance test at vendor premises - Al Qassim |  | 10d | 2028-04-12 | 2028-04-25 | NQS-P1010, NQS-P1020, NQS-P1030, NQS-P1040 | 243d | 0d | Contract cost (BOQ x payment milestones) [33989 SAR]; Progress weight (fair EPC distribution, SAR value) [130820 SAR] | 130,820 | NSR | NQS | NSR | Standard | PM | ETECHS | PRO | - | - | PRO | MS4 |
| NQS-P1060 |  | Shipping and customs clearance - Al Qassim |  | 25d | 2028-04-26 | 2028-06-06 | NQS-P1050 | 243d | 0d | Contract cost (BOQ x payment milestones) [101967 SAR]; Progress weight (fair EPC distribution, SAR value) [261020 SAR] | 261,020 | NSR | NQS | NSR | Standard | PM | Vendor | PRO | - | - | PRO | MS4 |
| NQS-P1070 |  | Delivery to station and receiving inspection - Al Qassim |  | 5d | 2028-06-07 | 2028-06-13 | NQS-P1060 | 243d | 0d | Contract cost (BOQ x payment milestones) [33989 SAR]; Progress weight (fair EPC distribution, SAR value) [130820 SAR] | 130,820 | NSR | NQS | NSR | Standard | PM | ETECHS | PRO | - | - | PRO | MS4 |
|  | EHF | **Hufuf (EWR)** |  |  | 2027-12-29 | 2028-06-13 |  |  |  |  |  |  |  |  |  |  |  |  |  |  |  |  |
| EHF-P1100 |  | MS4 Material delivered (20%) - Hufuf | milestone | 0d | 2028-06-13 | 2028-06-13 | EHF-P1070 | 249d | 0d |  |  | EWR | EHF | EWR | Standard | PM | ETECHS | MS | - | - | MS | MS4 |
|  | CCT | **CCTV system** |  |  | 2027-12-29 | 2028-04-11 |  |  |  |  |  |  |  |  |  |  |  |  |  |  |  |  |
| EHF-P1010 |  | Manufacture CCTV cameras and analytics - Hufuf |  | 70d | 2027-12-29 | 2028-04-11 | EHF-E1210 | 249d | 0d | Contract cost (BOQ x payment milestones) [71254 SAR]; Progress weight (fair EPC distribution, SAR value) [109740 SAR] | 109,740 | EWR | EHF | EWR | Standard | CCTV | Vendor | PRO | - | - | PRO | MS4 |
|  | VMS | **Video management and video wall** |  |  | 2027-12-29 | 2028-04-11 |  |  |  |  |  |  |  |  |  |  |  |  |  |  |  |  |
| EHF-P1020 |  | Manufacture video management servers, storage and video wall - Hufuf |  | 70d | 2027-12-29 | 2028-04-11 | EHF-E1210 | 249d | 0d | Contract cost (BOQ x payment milestones) [129428 SAR]; Progress weight (fair EPC distribution, SAR value) [199020 SAR] | 199,020 | EWR | EHF | EWR | Standard | VMS | Vendor | PRO | - | - | PRO | MS4 |
|  | ACC | **Access control and intercom** |  |  | 2027-12-29 | 2028-04-11 |  |  |  |  |  |  |  |  |  |  |  |  |  |  |  |  |
| EHF-P1030 |  | Manufacture access control and intercom equipment - Hufuf |  | 70d | 2027-12-29 | 2028-04-11 | EHF-E1210 | 249d | 0d | Contract cost (BOQ x payment milestones) [16348 SAR]; Progress weight (fair EPC distribution, SAR value) [24800 SAR] | 24,800 | EWR | EHF | EWR | Standard | ACC | Vendor | PRO | - | - | PRO | MS4 |
|  | UPN | **UPS, network and cabinets** |  |  | 2027-12-29 | 2028-04-11 |  |  |  |  |  |  |  |  |  |  |  |  |  |  |  |  |
| EHF-P1040 |  | Manufacture UPS, network switches and field cabinets - Hufuf |  | 70d | 2027-12-29 | 2028-04-11 | EHF-E1210 | 249d | 0d | Contract cost (BOQ x payment milestones) [207246 SAR]; Progress weight (fair EPC distribution, SAR value) [318060 SAR] | 318,060 | EWR | EHF | EWR | Standard | UPSNET | Vendor | PRO | - | - | PRO | MS4 |
|  | LOG | **FAT and logistics** |  |  | 2028-04-12 | 2028-06-13 |  |  |  |  |  |  |  |  |  |  |  |  |  |  |  |  |
| EHF-P1050 |  | Factory acceptance test at vendor premises - Hufuf |  | 10d | 2028-04-12 | 2028-04-25 | EHF-P1010, EHF-P1020, EHF-P1030, EHF-P1040 | 249d | 0d | Contract cost (BOQ x payment milestones) [28285 SAR]; Progress weight (fair EPC distribution, SAR value) [108500 SAR] | 108,500 | EWR | EHF | EWR | Standard | PM | ETECHS | PRO | - | - | PRO | MS4 |
| EHF-P1060 |  | Shipping and customs clearance - Hufuf |  | 25d | 2028-04-26 | 2028-06-06 | EHF-P1050 | 249d | 0d | Contract cost (BOQ x payment milestones) [84855 SAR]; Progress weight (fair EPC distribution, SAR value) [217000 SAR] | 217,000 | EWR | EHF | EWR | Standard | PM | Vendor | PRO | - | - | PRO | MS4 |
| EHF-P1070 |  | Delivery to station and receiving inspection - Hufuf |  | 5d | 2028-06-07 | 2028-06-13 | EHF-P1060 | 249d | 0d | Contract cost (BOQ x payment milestones) [28285 SAR]; Progress weight (fair EPC distribution, SAR value) [108500 SAR] | 108,500 | EWR | EHF | EWR | Standard | PM | ETECHS | PRO | - | - | PRO | MS4 |
|  | NMJ | **Al Majma'ah (NSR)** |  |  | 2028-02-08 | 2028-07-24 |  |  |  |  |  |  |  |  |  |  |  |  |  |  |  |  |
| NMJ-P1100 |  | MS4 Material delivered (20%) - Al Majma'ah | milestone | 0d | 2028-07-24 | 2028-07-24 | NMJ-P1070 | 214d | 0d |  |  | NSR | NMJ | NSR | Standard | PM | ETECHS | MS | - | - | MS | MS4 |

| ID | WBS | Activity | Type | Duration | Start | Finish | Predecessors | Total float | Free float | Resources | Cost | Area | Station | Railway | Priority | Discipline | Responsibility | EPC phase | Design stage | Submittal or approval | Programme phase | Payment milestone |
| --- | --- | --- | --- | --- | --- | --- | --- | --- | --- | --- | --- | --- | --- | --- | --- | --- | --- | --- | --- | --- | --- | --- |
|  | CCT | **CCTV system** |  |  | 2028-02-08 | 2028-05-29 |  |  |  |  |  |  |  |  |  |  |  |  |  |  |  |  |
| NMJ-P1010 |  | Manufacture CCTV cameras and analytics - Al Majma'ah |  | 70d | 2028-02-08 | 2028-05-29 | NMJ-E1210 | 214d | 0d | Contract cost (BOQ x payment milestones) [104169 SAR]; Progress weight (fair EPC distribution, SAR value) [159960 SAR] | 159,960 | NSR | NMJ | NSR | Standard | CCTV | Vendor | PRO | - | - | PRO | MS4 |
|  | VMS | **Video management and video wall** |  |  | 2028-02-08 | 2028-05-29 |  |  |  |  |  |  |  |  |  |  |  |  |  |  |  |  |
| NMJ-P1020 |  | Manufacture video management servers, storage and video wall - Al Majma'ah |  | 70d | 2028-02-08 | 2028-05-29 | NMJ-E1210 | 214d | 0d | Contract cost (BOQ x payment milestones) [110385 SAR]; Progress weight (fair EPC distribution, SAR value) [169260 SAR] | 169,260 | NSR | NMJ | NSR | Standard | VMS | Vendor | PRO | - | - | PRO | MS4 |
|  | ACC | **Access control and intercom** |  |  | 2028-02-08 | 2028-05-29 |  |  |  |  |  |  |  |  |  |  |  |  |  |  |  |  |
| NMJ-P1030 |  | Manufacture access control and intercom equipment - Al Majma'ah |  | 70d | 2028-02-08 | 2028-05-29 | NMJ-E1210 | 214d | 0d | Contract cost (BOQ x payment milestones) [13547 SAR]; Progress weight (fair EPC distribution, SAR value) [21080 SAR] | 21,080 | NSR | NMJ | NSR | Standard | ACC | Vendor | PRO | - | - | PRO | MS4 |
|  | UPN | **UPS, network and cabinets** |  |  | 2028-02-08 | 2028-05-29 |  |  |  |  |  |  |  |  |  |  |  |  |  |  |  |  |
| NMJ-P1040 |  | Manufacture UPS, network switches and field cabinets - Al Majma'ah |  | 70d | 2028-02-08 | 2028-05-29 | NMJ-E1210 | 214d | 0d | Contract cost (BOQ x payment milestones) [281736 SAR]; Progress weight (fair EPC distribution, SAR value) [432760 SAR] | 432,760 | NSR | NMJ | NSR | Standard | UPSNET | Vendor | PRO | - | - | PRO | MS4 |
|  | LOG | **FAT and logistics** |  |  | 2028-05-30 | 2028-07-24 |  |  |  |  |  |  |  |  |  |  |  |  |  |  |  |  |
| NMJ-P1050 |  | Factory acceptance test at vendor premises - Al Majma'ah |  | 10d | 2028-05-30 | 2028-06-12 | NMJ-P1010, NMJ-P1020, NMJ-P1030, NMJ-P1040 | 214d | 0d | Contract cost (BOQ x payment milestones) [33989 SAR]; Progress weight (fair EPC distribution, SAR value) [130820 SAR] | 130,820 | NSR | NMJ | NSR | Standard | PM | ETECHS | PRO | - | - | PRO | MS4 |
| NMJ-P1060 |  | Shipping and customs clearance - Al Majma'ah |  | 25d | 2028-06-13 | 2028-07-17 | NMJ-P1050 | 214d | 0d | Contract cost (BOQ x payment milestones) [101967 SAR]; Progress weight (fair EPC distribution, SAR value) [261020 SAR] | 261,020 | NSR | NMJ | NSR | Standard | PM | Vendor | PRO | - | - | PRO | MS4 |
| NMJ-P1070 |  | Delivery to station and receiving inspection - Al Majma'ah |  | 5d | 2028-07-18 | 2028-07-24 | NMJ-P1060 | 214d | 0d | Contract cost (BOQ x payment milestones) [33989 SAR]; Progress weight (fair EPC distribution, SAR value) [130820 SAR] | 130,820 | NSR | NMJ | NSR | Standard | PM | ETECHS | PRO | - | - | PRO | MS4 |
|  | HKA | **KAEC (HHR)** |  |  | 2028-06-05 | 2028-12-17 |  |  |  |  |  |  |  |  |  |  |  |  |  |  |  |  |
| HKA-P1100 |  | MS4 Material delivered (20%) - KAEC | milestone | 0d | 2028-12-17 | 2028-12-17 | HKA-P1070 | 70d | 0d |  |  | HHR | HKA | HHR | Standard | PM | ETECHS | MS | - | - | MS | MS4 |
|  | CCT | **CCTV system** |  |  | 2028-06-05 | 2028-10-08 |  |  |  |  |  |  |  |  |  |  |  |  |  |  |  |  |
| HKA-P1010 |  | Manufacture CCTV cameras and analytics - KAEC |  | 90d | 2028-06-05 | 2028-10-08 | HKA-E1210 | 70d | 0d | Contract cost (BOQ x payment milestones) [263474 SAR]; Progress weight (fair EPC distribution, SAR value) [404860 SAR] | 404,860 | HHR | HKA | HHR | Standard | CCTV | Vendor | PRO | - | - | PRO | MS4 |
|  | VMS | **Video management and video wall** |  |  | 2028-06-05 | 2028-10-08 |  |  |  |  |  |  |  |  |  |  |  |  |  |  |  |  |
| HKA-P1020 |  | Manufacture video management servers, storage and video wall - KAEC |  | 90d | 2028-06-05 | 2028-10-08 | HKA-E1210 | 70d | 0d | Contract cost (BOQ x payment milestones) [111291 SAR]; Progress weight (fair EPC distribution, SAR value) [171120 SAR] | 171,120 | HHR | HKA | HHR | Standard | VMS | Vendor | PRO | - | - | PRO | MS4 |
|  | ACC | **Access control and intercom** |  |  | 2028-06-05 | 2028-10-08 |  |  |  |  |  |  |  |  |  |  |  |  |  |  |  |  |
| HKA-P1030 |  | Manufacture access control and intercom equipment - KAEC |  | 90d | 2028-06-05 | 2028-10-08 | HKA-E1210 | 70d | 0d | Contract cost (BOQ x payment milestones) [12074 SAR]; Progress weight (fair EPC distribution, SAR value) [18600 SAR] | 18,600 | HHR | HKA | HHR | Standard | ACC | Vendor | PRO | - | - | PRO | MS4 |
|  | UPN | **UPS, network and cabinets** |  |  | 2028-06-05 | 2028-10-08 |  |  |  |  |  |  |  |  |  |  |  |  |  |  |  |  |
| HKA-P1040 |  | Manufacture UPS, network switches and field cabinets - KAEC |  | 90d | 2028-06-05 | 2028-10-08 | HKA-E1210 | 70d | 0d | Contract cost (BOQ x payment milestones) [447818 SAR]; Progress weight (fair EPC distribution, SAR value) [686960 SAR] | 686,960 | HHR | HKA | HHR | Standard | UPSNET | Vendor | PRO | - | - | PRO | MS4 |
|  | LOG | **FAT and logistics** |  |  | 2028-10-09 | 2028-12-17 |  |  |  |  |  |  |  |  |  |  |  |  |  |  |  |  |
| HKA-P1050 |  | Factory acceptance test at vendor premises - KAEC |  | 10d | 2028-10-09 | 2028-10-22 | HKA-P1010, HKA-P1020, HKA-P1030, HKA-P1040 | 70d | 0d | Contract cost (BOQ x payment milestones) [55644 SAR]; Progress weight (fair EPC distribution, SAR value) [213900 SAR] | 213,900 | HHR | HKA | HHR | Standard | PM | ETECHS | PRO | - | - | PRO | MS4 |
| HKA-P1060 |  | Shipping and customs clearance - KAEC |  | 35d | 2028-10-23 | 2028-12-10 | HKA-P1050 | 70d | 0d | Contract cost (BOQ x payment milestones) [166931 SAR]; Progress weight (fair EPC distribution, SAR value) [427180 SAR] | 427,180 | HHR | HKA | HHR | Standard | PM | Vendor | PRO | - | - | PRO | MS4 |
| HKA-P1070 |  | Delivery to station and receiving inspection - KAEC |  | 5d | 2028-12-11 | 2028-12-17 | HKA-P1060 | 70d | 0d | Contract cost (BOQ x payment milestones) [55644 SAR]; Progress weight (fair EPC distribution, SAR value) [213900 SAR] | 213,900 | HHR | HKA | HHR | Standard | PM | ETECHS | PRO | - | - | PRO | MS4 |

| ID | WBS | Activity | Type | Duration | Start | Finish | Predecessors | Total float | Free float | Resources | Cost | Area | Station | Railway | Priority | EPC phase | Discipline | Responsibility | Design stage | Submittal or approval | Payment milestone | Programme phase |
| --- | --- | --- | --- | --- | --- | --- | --- | --- | --- | --- | --- | --- | --- | --- | --- | --- | --- | --- | --- | --- | --- | --- |
|  | HMD | **Madinah (HHR)** |  |  | 2028-06-05 | 2028-12-17 |  |  |  |  |  |  |  |  |  |  |  |  |  |  |  |  |
| HMD-P1100 |  | MS4 Material delivered (20%) - Madinah | milestone | 0d | 2028-12-17 | 2028-12-17 | HMD-P1070 | 66d | 0d |  |  | HHR | HMD | HHR | Standard | MS | PM | ETECHS | - | - | MS4 | MS |
|  | CCT | **CCTV system** |  |  | 2028-06-05 | 2028-10-08 |  |  |  |  |  |  |  |  |  |  |  |  |  |  |  |  |
| HMD-P1010 |  | Manufacture CCTV cameras and analytics - Madinah |  | 90d | 2028-06-05 | 2028-10-08 | HMD-E1210 | 66d | 0d | Contract cost (BOQ x payment milestones) [264932 SAR]; Progress weight (fair EPC distribution, SAR value) [406720 SAR] | 406,720 | HHR | HMD | HHR | Standard | PRO | CCTV | Vendor | - | - | MS4 | PRO |
|  | VMS | **Video management and video wall** |  |  | 2028-06-05 | 2028-10-08 |  |  |  |  |  |  |  |  |  |  |  |  |  |  |  |  |
| HMD-P1020 |  | Manufacture video management servers, storage and video wall - Madinah |  | 90d | 2028-06-05 | 2028-10-08 | HMD-E1210 | 66d | 0d | Contract cost (BOQ x payment milestones) [116027 SAR]; Progress weight (fair EPC distribution, SAR value) [177940 SAR] | 177,940 | HHR | HMD | HHR | Standard | PRO | VMS | Vendor | - | - | MS4 | PRO |
|  | ACC | **Access control and intercom** |  |  | 2028-06-05 | 2028-10-08 |  |  |  |  |  |  |  |  |  |  |  |  |  |  |  |  |
| HMD-P1030 |  | Manufacture access control and intercom equipment - Madinah |  | 90d | 2028-06-05 | 2028-10-08 | HMD-E1210 | 66d | 0d | Contract cost (BOQ x payment milestones) [12501 SAR]; Progress weight (fair EPC distribution, SAR value) [19220 SAR] | 19,220 | HHR | HMD | HHR | Standard | PRO | ACC | Vendor | - | - | MS4 | PRO |
|  | UPN | **UPS, network and cabinets** |  |  | 2028-06-05 | 2028-10-08 |  |  |  |  |  |  |  |  |  |  |  |  |  |  |  |  |
| HMD-P1040 |  | Manufacture UPS, network switches and field cabinets - Madinah |  | 90d | 2028-06-05 | 2028-10-08 | HMD-E1210 | 66d | 0d | Contract cost (BOQ x payment milestones) [440861 SAR]; Progress weight (fair EPC distribution, SAR value) [676420 SAR] | 676,420 | HHR | HMD | HHR | Standard | PRO | UPSNET | Vendor | - | - | MS4 | PRO |
|  | LOG | **FAT and logistics** |  |  | 2028-10-09 | 2028-12-17 |  |  |  |  |  |  |  |  |  |  |  |  |  |  |  |  |
| HMD-P1050 |  | Factory acceptance test at vendor premises - Madinah |  | 10d | 2028-10-09 | 2028-10-22 | HMD-P1010, HMD-P1020, HMD-P1030, HMD-P1040 | 66d | 0d | Contract cost (BOQ x payment milestones) [55621 SAR]; Progress weight (fair EPC distribution, SAR value) [213280 SAR] | 213,280 | HHR | HMD | HHR | Standard | PRO | PM | ETECHS | - | - | MS4 | PRO |
| HMD-P1060 |  | Shipping and customs clearance - Madinah |  | 35d | 2028-10-23 | 2028-12-10 | HMD-P1050 | 66d | 0d | Contract cost (BOQ x payment milestones) [166864 SAR]; Progress weight (fair EPC distribution, SAR value) [427180 SAR] | 427,180 | HHR | HMD | HHR | Standard | PRO | PM | Vendor | - | - | MS4 | PRO |
| HMD-P1070 |  | Delivery to station and receiving inspection - Madinah |  | 5d | 2028-12-11 | 2028-12-17 | HMD-P1060 | 66d | 0d | Contract cost (BOQ x payment milestones) [55621 SAR]; Progress weight (fair EPC distribution, SAR value) [213280 SAR] | 213,280 | HHR | HMD | HHR | Standard | PRO | PM | ETECHS | - | - | MS4 | PRO |
|  | EAB | **Abqaiq (EWR)** |  |  | 2028-07-17 | 2028-12-17 |  |  |  |  |  |  |  |  |  |  |  |  |  |  |  |  |
| EAB-P1100 |  | MS4 Material delivered (20%) - Abqaiq | milestone | 0d | 2028-12-17 | 2028-12-17 | EAB-P1070 | 120d | 0d |  |  | EWR | EAB | EWR | Standard | MS | PM | ETECHS | - | - | MS4 | MS |
|  | CCT | **CCTV system** |  |  | 2028-07-17 | 2028-10-22 |  |  |  |  |  |  |  |  |  |  |  |  |  |  |  |  |
| EAB-P1010 |  | Manufacture CCTV cameras and analytics - Abqaiq |  | 70d | 2028-07-17 | 2028-10-22 | EAB-E1210 | 120d | 0d | Contract cost (BOQ x payment milestones) [36997 SAR]; Progress weight (fair EPC distribution, SAR value) [57040 SAR] | 57,040 | EWR | EAB | EWR | Standard | PRO | CCTV | Vendor | - | - | MS4 | PRO |
|  | VMS | **Video management and video wall** |  |  | 2028-07-17 | 2028-10-22 |  |  |  |  |  |  |  |  |  |  |  |  |  |  |  |  |
| EAB-P1020 |  | Manufacture video management servers, storage and video wall - Abqaiq |  | 70d | 2028-07-17 | 2028-10-22 | EAB-E1210 | 120d | 0d | Contract cost (BOQ x payment milestones) [95266 SAR]; Progress weight (fair EPC distribution, SAR value) [146320 SAR] | 146,320 | EWR | EAB | EWR | Standard | PRO | VMS | Vendor | - | - | MS4 | PRO |
|  | ACC | **Access control and intercom** |  |  | 2028-07-17 | 2028-10-22 |  |  |  |  |  |  |  |  |  |  |  |  |  |  |  |  |
| EAB-P1030 |  | Manufacture access control and intercom equipment - Abqaiq |  | 70d | 2028-07-17 | 2028-10-22 | EAB-E1210 | 120d | 0d | Contract cost (BOQ x payment milestones) [14683 SAR]; Progress weight (fair EPC distribution, SAR value) [22320 SAR] | 22,320 | EWR | EAB | EWR | Standard | PRO | ACC | Vendor | - | - | MS4 | PRO |
|  | UPN | **UPS, network and cabinets** |  |  | 2028-07-17 | 2028-10-22 |  |  |  |  |  |  |  |  |  |  |  |  |  |  |  |  |
| EAB-P1040 |  | Manufacture UPS, network switches and field cabinets - Abqaiq |  | 70d | 2028-07-17 | 2028-10-22 | EAB-E1210 | 120d | 0d | Contract cost (BOQ x payment milestones) [153905 SAR]; Progress weight (fair EPC distribution, SAR value) [236220 SAR] | 236,220 | EWR | EAB | EWR | Standard | PRO | UPSNET | Vendor | - | - | MS4 | PRO |

| ID | WBS | Activity | Type | Duration | Start | Finish | Predecessors | Total float | Free float | Resources | Cost | Area | Station | Railway | Priority | Discipline | Responsibility | EPC phase | Design stage | Submittal or approval | Programme phase | Payment milestone |
| --- | --- | --- | --- | --- | --- | --- | --- | --- | --- | --- | --- | --- | --- | --- | --- | --- | --- | --- | --- | --- | --- | --- |
|  | LOG | **FAT and logistics** |  |  | 2028-10-23 | 2028-12-17 |  |  |  |  |  |  |  |  |  |  |  |  |  |  |  |  |
| EAB-P1050 |  | Factory acceptance test at vendor premises - Abqaiq |  | 10d | 2028-10-23 | 2028-11-05 | EAB-P1010, EAB-P1020, EAB-P1030, EAB-P1040 | 120d | 0d | Contract cost (BOQ x payment milestones) [20057 SAR]; Progress weight (fair EPC distribution, SAR value) [76880 SAR] | 76,880 | EWR | EAB | EWR | Standard | PM | ETECHS | PRO | - | - | PRO | MS4 |
| EAB-P1060 |  | Shipping and customs clearance - Abqaiq |  | 25d | 2028-11-06 | 2028-12-10 | EAB-P1050 | 120d | 0d | Contract cost (BOQ x payment milestones) [60170 SAR]; Progress weight (fair EPC distribution, SAR value) [153760 SAR] | 153,760 | EWR | EAB | EWR | Standard | PM | Vendor | PRO | - | - | PRO | MS4 |
| EAB-P1070 |  | Delivery to station and receiving inspection - Abqaiq |  | 5d | 2028-12-11 | 2028-12-17 | EAB-P1060 | 120d | 0d | Contract cost (BOQ x payment milestones) [20057 SAR]; Progress weight (fair EPC distribution, SAR value) [76880 SAR] | 76,880 | EWR | EAB | EWR | Standard | PM | ETECHS | PRO | - | - | PRO | MS4 |
|  | NHL | **Hail (NSR)** |  |  | 2028-08-07 | 2029-01-07 |  |  |  |  |  |  |  |  |  |  |  |  |  |  |  |  |
| NHL-P1100 |  | MS4 Material delivered (20%) - Hail | milestone | 0d | 2029-01-07 | 2029-01-07 | NHL-P1070 | 95d | 0d |  |  | NSR | NHL | NSR | Standard | PM | ETECHS | MS | - | - | MS | MS4 |
|  | CCT | **CCTV system** |  |  | 2028-08-07 | 2028-11-12 |  |  |  |  |  |  |  |  |  |  |  |  |  |  |  |  |
| NHL-P1010 |  | Manufacture CCTV cameras and analytics - Hail |  | 70d | 2028-08-07 | 2028-11-12 | NHL-E1210 | 95d | 0d | Contract cost (BOQ x payment milestones) [104169 SAR]; Progress weight (fair EPC distribution, SAR value) [159960 SAR] | 159,960 | NSR | NHL | NSR | Standard | CCTV | Vendor | PRO | - | - | PRO | MS4 |
|  | VMS | **Video management and video wall** |  |  | 2028-08-07 | 2028-11-12 |  |  |  |  |  |  |  |  |  |  |  |  |  |  |  |  |
| NHL-P1020 |  | Manufacture video management servers, storage and video wall - Hail |  | 70d | 2028-08-07 | 2028-11-12 | NHL-E1210 | 95d | 0d | Contract cost (BOQ x payment milestones) [110385 SAR]; Progress weight (fair EPC distribution, SAR value) [169260 SAR] | 169,260 | NSR | NHL | NSR | Standard | VMS | Vendor | PRO | - | - | PRO | MS4 |
|  | ACC | **Access control and intercom** |  |  | 2028-08-07 | 2028-11-12 |  |  |  |  |  |  |  |  |  |  |  |  |  |  |  |  |
| NHL-P1030 |  | Manufacture access control and intercom equipment - Hail |  | 70d | 2028-08-07 | 2028-11-12 | NHL-E1210 | 95d | 0d | Contract cost (BOQ x payment milestones) [13547 SAR]; Progress weight (fair EPC distribution, SAR value) [21080 SAR] | 21,080 | NSR | NHL | NSR | Standard | ACC | Vendor | PRO | - | - | PRO | MS4 |
|  | UPN | **UPS, network and cabinets** |  |  | 2028-08-07 | 2028-11-12 |  |  |  |  |  |  |  |  |  |  |  |  |  |  |  |  |
| NHL-P1040 |  | Manufacture UPS, network switches and field cabinets - Hail |  | 70d | 2028-08-07 | 2028-11-12 | NHL-E1210 | 95d | 0d | Contract cost (BOQ x payment milestones) [281736 SAR]; Progress weight (fair EPC distribution, SAR value) [432760 SAR] | 432,760 | NSR | NHL | NSR | Standard | UPSNET | Vendor | PRO | - | - | PRO | MS4 |
|  | LOG | **FAT and logistics** |  |  | 2028-11-13 | 2029-01-07 |  |  |  |  |  |  |  |  |  |  |  |  |  |  |  |  |
| NHL-P1050 |  | Factory acceptance test at vendor premises - Hail |  | 10d | 2028-11-13 | 2028-11-26 | NHL-P1010, NHL-P1020, NHL-P1030, NHL-P1040 | 95d | 0d | Contract cost (BOQ x payment milestones) [33989 SAR]; Progress weight (fair EPC distribution, SAR value) [130820 SAR] | 130,820 | NSR | NHL | NSR | Standard | PM | ETECHS | PRO | - | - | PRO | MS4 |
| NHL-P1060 |  | Shipping and customs clearance - Hail |  | 25d | 2028-11-27 | 2028-12-31 | NHL-P1050 | 95d | 0d | Contract cost (BOQ x payment milestones) [101967 SAR]; Progress weight (fair EPC distribution, SAR value) [261020 SAR] | 261,020 | NSR | NHL | NSR | Standard | PM | Vendor | PRO | - | - | PRO | MS4 |
| NHL-P1070 |  | Delivery to station and receiving inspection - Hail |  | 5d | 2029-01-01 | 2029-01-07 | NHL-P1060 | 95d | 0d | Contract cost (BOQ x payment milestones) [33989 SAR]; Progress weight (fair EPC distribution, SAR value) [130820 SAR] | 130,820 | NSR | NHL | NSR | Standard | PM | ETECHS | PRO | - | - | PRO | MS4 |
|  | NJF | **Al Jouf (NSR)** |  |  | 2028-10-08 | 2029-03-18 |  |  |  |  |  |  |  |  |  |  |  |  |  |  |  |  |
| NJF-P1100 |  | MS4 Material delivered (20%) - Al Jouf | milestone | 0d | 2029-03-18 | 2029-03-18 | NJF-P1070 | 51d | 0d |  |  | NSR | NJF | NSR | Standard | PM | ETECHS | MS | - | - | MS | MS4 |
|  | CCT | **CCTV system** |  |  | 2028-10-08 | 2029-01-11 |  |  |  |  |  |  |  |  |  |  |  |  |  |  |  |  |
| NJF-P1010 |  | Manufacture CCTV cameras and analytics - Al Jouf |  | 70d | 2028-10-08 | 2029-01-11 | NJF-E1210 | 51d | 0d | Contract cost (BOQ x payment milestones) [103843 SAR]; Progress weight (fair EPC distribution, SAR value) [159340 SAR] | 159,340 | NSR | NJF | NSR | Standard | CCTV | Vendor | PRO | - | - | PRO | MS4 |
|  | VMS | **Video management and video wall** |  |  | 2028-10-08 | 2029-01-11 |  |  |  |  |  |  |  |  |  |  |  |  |  |  |  |  |
| NJF-P1020 |  | Manufacture video management servers, storage and video wall - Al Jouf |  | 70d | 2028-10-08 | 2029-01-11 | NJF-E1210 | 51d | 0d | Contract cost (BOQ x payment milestones) [110039 SAR]; Progress weight (fair EPC distribution, SAR value) [169260 SAR] | 169,260 | NSR | NJF | NSR | Standard | VMS | Vendor | PRO | - | - | PRO | MS4 |

| ID | WBS | Activity | Type | Duration | Start | Finish | Predecessors | Total float | Free float | Resources | Cost | Area | Station | Railway | Priority | Discipline | Responsibility | EPC phase | Design stage | Submittal or approval | Programme phase | Payment milestone |
| --- | --- | --- | --- | --- | --- | --- | --- | --- | --- | --- | --- | --- | --- | --- | --- | --- | --- | --- | --- | --- | --- | --- |
|  | ACC | **Access control and intercom** |  |  | 2028-10-08 | 2029-01-11 |  |  |  |  |  |  |  |  |  |  |  |  |  |  |  |  |
| NJF-P1030 |  | Manufacture access control and intercom equipment - Al Jouf |  | 70d | 2028-10-08 | 2029-01-11 | NJF-E1210 | 51d | 0d | Contract cost (BOQ x payment milestones) [13505 SAR]; Progress weight (fair EPC distribution, SAR value) [20460 SAR] | 20,460 | NSR | NJF | NSR | Standard | ACC | Vendor | PRO | - | - | PRO | MS4 |
|  | UPN | **UPS, network and cabinets** |  |  | 2028-10-08 | 2029-01-11 |  |  |  |  |  |  |  |  |  |  |  |  |  |  |  |  |
| NJF-P1040 |  | Manufacture UPS, network switches and field cabinets - Al Jouf |  | 70d | 2028-10-08 | 2029-01-11 | NJF-E1210 | 51d | 0d | Contract cost (BOQ x payment milestones) [286040 SAR]; Progress weight (fair EPC distribution, SAR value) [439580 SAR] | 439,580 | NSR | NJF | NSR | Standard | UPSNET | Vendor | PRO | - | - | PRO | MS4 |
|  | LOG | **FAT and logistics** |  |  | 2029-01-14 | 2029-03-18 |  |  |  |  |  |  |  |  |  |  |  |  |  |  |  |  |
| NJF-P1050 |  | Factory acceptance test at vendor premises - Al Jouf |  | 10d | 2029-01-14 | 2029-01-25 | NJF-P1010, NJF-P1020, NJF-P1030, NJF-P1040 | 51d | 0d | Contract cost (BOQ x payment milestones) [34228 SAR]; Progress weight (fair EPC distribution, SAR value) [131440 SAR] | 131,440 | NSR | NJF | NSR | Standard | PM | ETECHS | PRO | - | - | PRO | MS4 |
| NJF-P1060 |  | Shipping and customs clearance - Al Jouf |  | 25d | 2029-01-28 | 2029-03-11 | NJF-P1050 | 51d | 0d | Contract cost (BOQ x payment milestones) [102685 SAR]; Progress weight (fair EPC distribution, SAR value) [262880 SAR] | 262,880 | NSR | NJF | NSR | Standard | PM | Vendor | PRO | - | - | PRO | MS4 |
| NJF-P1070 |  | Delivery to station and receiving inspection - Al Jouf |  | 5d | 2029-03-12 | 2029-03-18 | NJF-P1060 | 51d | 0d | Contract cost (BOQ x payment milestones) [34228 SAR]; Progress weight (fair EPC distribution, SAR value) [131440 SAR] | 131,440 | NSR | NJF | NSR | Standard | PM | ETECHS | PRO | - | - | PRO | MS4 |
|  | NQR | **Al Qurayyat (NSR)** |  |  | 2028-11-19 | 2029-05-06 |  |  |  |  |  |  |  |  |  |  |  |  |  |  |  |  |
| NQR-P1100 |  | MS4 Material delivered (20%) - Al Qurayyat | milestone | 0d | 2029-05-06 | 2029-05-06 | NQR-P1070 | 21d | 0d |  |  | NSR | NQR | NSR | Standard | PM | ETECHS | MS | - | - | MS | MS4 |
|  | CCT | **CCTV system** |  |  | 2028-11-19 | 2029-03-04 |  |  |  |  |  |  |  |  |  |  |  |  |  |  |  |  |
| NQR-P1010 |  | Manufacture CCTV cameras and analytics - Al Qurayyat |  | 70d | 2028-11-19 | 2029-03-04 | NQR-E1210 | 21d | 0d | Contract cost (BOQ x payment milestones) [104169 SAR]; Progress weight (fair EPC distribution, SAR value) [159960 SAR] | 159,960 | NSR | NQR | NSR | Standard | CCTV | Vendor | PRO | - | - | PRO | MS4 |
|  | VMS | **Video management and video wall** |  |  | 2028-11-19 | 2029-03-04 |  |  |  |  |  |  |  |  |  |  |  |  |  |  |  |  |
| NQR-P1020 |  | Manufacture video management servers, storage and video wall - Al Qurayyat |  | 70d | 2028-11-19 | 2029-03-04 | NQR-E1210 | 21d | 0d | Contract cost (BOQ x payment milestones) [110385 SAR]; Progress weight (fair EPC distribution, SAR value) [169260 SAR] | 169,260 | NSR | NQR | NSR | Standard | VMS | Vendor | PRO | - | - | PRO | MS4 |
|  | ACC | **Access control and intercom** |  |  | 2028-11-19 | 2029-03-04 |  |  |  |  |  |  |  |  |  |  |  |  |  |  |  |  |
| NQR-P1030 |  | Manufacture access control and intercom equipment - Al Qurayyat |  | 70d | 2028-11-19 | 2029-03-04 | NQR-E1210 | 21d | 0d | Contract cost (BOQ x payment milestones) [13547 SAR]; Progress weight (fair EPC distribution, SAR value) [21080 SAR] | 21,080 | NSR | NQR | NSR | Standard | ACC | Vendor | PRO | - | - | PRO | MS4 |
|  | UPN | **UPS, network and cabinets** |  |  | 2028-11-19 | 2029-03-04 |  |  |  |  |  |  |  |  |  |  |  |  |  |  |  |  |
| NQR-P1040 |  | Manufacture UPS, network switches and field cabinets - Al Qurayyat |  | 70d | 2028-11-19 | 2029-03-04 | NQR-E1210 | 21d | 0d | Contract cost (BOQ x payment milestones) [281736 SAR]; Progress weight (fair EPC distribution, SAR value) [432760 SAR] | 432,760 | NSR | NQR | NSR | Standard | UPSNET | Vendor | PRO | - | - | PRO | MS4 |
|  | LOG | **FAT and logistics** |  |  | 2029-03-05 | 2029-05-06 |  |  |  |  |  |  |  |  |  |  |  |  |  |  |  |  |
| NQR-P1050 |  | Factory acceptance test at vendor premises - Al Qurayyat |  | 10d | 2029-03-05 | 2029-03-18 | NQR-P1010, NQR-P1020, NQR-P1030, NQR-P1040 | 21d | 0d | Contract cost (BOQ x payment milestones) [33989 SAR]; Progress weight (fair EPC distribution, SAR value) [130820 SAR] | 130,820 | NSR | NQR | NSR | Standard | PM | ETECHS | PRO | - | - | PRO | MS4 |
| NQR-P1060 |  | Shipping and customs clearance - Al Qurayyat |  | 25d | 2029-03-19 | 2029-04-29 | NQR-P1050 | 21d | 0d | Contract cost (BOQ x payment milestones) [101967 SAR]; Progress weight (fair EPC distribution, SAR value) [261020 SAR] | 261,020 | NSR | NQR | NSR | Standard | PM | Vendor | PRO | - | - | PRO | MS4 |
| NQR-P1070 |  | Delivery to station and receiving inspection - Al Qurayyat |  | 5d | 2029-04-30 | 2029-05-06 | NQR-P1060 | 21d | 0d | Contract cost (BOQ x payment milestones) [33989 SAR]; Progress weight (fair EPC distribution, SAR value) [130820 SAR] | 130,820 | NSR | NQR | NSR | Standard | PM | ETECHS | PRO | - | - | PRO | MS4 |
|  | CON | **Construction** |  |  | 2027-03-01 | 2029-06-25 |  |  |  |  |  |  |  |  |  |  |  |  |  |  |  |  |
|  | NRY | **Riyadh (Thumamah) (NSR)** |  |  | 2027-03-01 | 2027-11-15 |  |  |  |  |  |  |  |  |  |  |  |  |  |  |  |  |
| NRY-C2100 |  | MS5 Installation complete (20%) - Riyadh (Thumamah) | milestone | 0d | 2027-11-15 | 2027-11-15 | NRY-C2020, NRY-C2030, NRY-C2040, NRY-C2050, NRY-C1020 | 420d | 0d |  |  | NSR | NRY | NSR | Priority 1 | PM | ETECHS | MS | - | - | MS | MS5 |

| ID | WBS | Activity | Type | Duration | Start | Finish | Predecessors | Total float | Free float | Resources | Cost | Area | Station | Railway | Priority | EPC phase | Design stage | Submittal or approval | Responsibility | Discipline | Programme phase | Payment milestone |
| --- | --- | --- | --- | --- | --- | --- | --- | --- | --- | --- | --- | --- | --- | --- | --- | --- | --- | --- | --- | --- | --- | --- |
|  | ENA | **Enabling works** |  |  | 2027-03-01 | 2027-04-11 |  |  |  |  |  |  |  |  |  |  |  |  |  |  |  |  |
| NRY-X1010 |  | Enabling works: site preparation, setting out, temporary works and utilities clearance - Riyadh (Thumamah) |  | 10d | 2027-03-01 | 2027-03-21 | PRJ-M1150 FS+40d | 471d | 0d | Contract cost (BOQ x payment milestones) [8432 SAR]; Progress weight (fair EPC distribution, SAR value) [33480 SAR] | 33,480 | NSR | NRY | NSR | Priority 1 | CON | - | - | ETECHS | CIVIL | ENA | MS5 |
| NRY-X1020 |  | Enabling works: cable routes, duct-bank and cabinet plinth preparation - Riyadh (Thumamah) |  | 15d | 2027-03-22 | 2027-04-11 | NRY-X1010 | 471d | 0d | Contract cost (BOQ x payment milestones) [12648 SAR]; Progress weight (fair EPC distribution, SAR value) [50220 SAR] | 50,220 | NSR | NRY | NSR | Priority 1 | CON | - | - | ETECHS | CIVIL | ENA | MS5 |
|  | CIV | **Civil works** |  |  | 2027-04-12 | 2027-08-15 |  |  |  |  |  |  |  |  |  |  |  |  |  |  |  |  |
| NRY-C1010 |  | Civil: platform trenches and duct banks - Riyadh (Thumamah) |  | 59d | 2027-04-12 | 2027-07-08 | NRY-X1020 | 471d | 0d | Contract cost (BOQ x payment milestones) [105400 SAR]; Progress weight (fair EPC distribution, SAR value) [217000 SAR] | 217,000 | NSR | NRY | NSR | Priority 1 | CON | - | - | ETECHS | CIVIL | CON | MS5 |
| NRY-C1020 |  | Civil: camera and ALPR pole foundations and poles - Riyadh (Thumamah) |  | 47d | 2027-06-10 | 2027-08-15 | NRY-C1010 SS+38d | 471d | 51d | Contract cost (BOQ x payment milestones) [84320 SAR]; Progress weight (fair EPC distribution, SAR value) [166780 SAR] | 166,780 | NSR | NRY | NSR | Priority 1 | CON | - | - | ETECHS | CIVIL | CON | MS5 |
|  | INS | **Installation** |  |  | 2027-09-27 | 2027-11-15 |  |  |  |  |  |  |  |  |  |  |  |  |  |  |  |  |
| NRY-C2010 |  | Install UPS, network switches and field cabinets - Riyadh (Thumamah) |  | 11d | 2027-09-27 | 2027-10-11 | NRY-P1100 | 420d | 0d | Contract cost (BOQ x payment milestones) [97072 SAR]; Progress weight (fair EPC distribution, SAR value) [100440 SAR] | 100,440 | NSR | NRY | NSR | Priority 1 | CON | - | - | ETECHS | UPSNET | CON | MS5 |
| NRY-C2020 |  | Cabling and termination (power, fibre, data) - Riyadh (Thumamah) |  | 18d | 2027-10-03 | 2027-10-26 | NRY-C2010 SS+4d, NRY-C1010 SS+43d | 420d | 0d | Contract cost (BOQ x payment milestones) [145607 SAR]; Progress weight (fair EPC distribution, SAR value) [200260 SAR] | 200,260 | NSR | NRY | NSR | Priority 1 | CON | - | - | ETECHS | CCTV | CON | MS5 |
| NRY-C2040 |  | Install video management, video wall and control-room equipment - Riyadh (Thumamah) |  | 12d | 2027-10-12 | 2027-10-27 | NRY-C2010 | 433d | 13d | Contract cost (BOQ x payment milestones) [72804 SAR]; Progress weight (fair EPC distribution, SAR value) [100440 SAR] | 100,440 | NSR | NRY | NSR | Priority 1 | CON | - | - | ETECHS | VMS | CON | MS5 |
| NRY-C2050 |  | Install access control and intercom - Riyadh (Thumamah) |  | 11d | 2027-10-18 | 2027-11-01 | NRY-C2010 FS+4d | 430d | 10d | Contract cost (BOQ x payment milestones) [48536 SAR]; Progress weight (fair EPC distribution, SAR value) [66960 SAR] | 66,960 | NSR | NRY | NSR | Priority 1 | CON | - | - | ETECHS | ACC | CON | MS5 |
| NRY-C2030 |  | Install and aim CCTV cameras - Riyadh (Thumamah) |  | 14d | 2027-10-27 | 2027-11-15 | NRY-C2020, NRY-C1020 | 420d | 0d | Contract cost (BOQ x payment milestones) [121339 SAR]; Progress weight (fair EPC distribution, SAR value) [166780 SAR] | 166,780 | NSR | NRY | NSR | Priority 1 | CON | - | - | ETECHS | CCTV | CON | MS5 |
|  | HMK | **Makkah (HHR)** |  |  | 2027-03-01 | 2028-04-24 |  |  |  |  |  |  |  |  |  |  |  |  |  |  |  |  |
| HMK-C2100 |  | MS5 Installation complete (20%) - Makkah | milestone | 0d | 2028-04-24 | 2028-04-24 | HMK-C2020, HMK-C2030, HMK-C2040, HMK-C2050, HMK-C1020 | 300d | 0d |  |  | HHR | HMK | HHR | Priority 1 | MS | - | - | ETECHS | PM | MS | MS5 |
|  | ENA | **Enabling works** |  |  | 2027-03-01 | 2027-04-11 |  |  |  |  |  |  |  |  |  |  |  |  |  |  |  |  |
| HMK-X1010 |  | Enabling works: site preparation, setting out, temporary works and utilities clearance - Makkah |  | 10d | 2027-03-01 | 2027-03-21 | PRJ-M1150 FS+40d | 430d | 0d | Contract cost (BOQ x payment milestones) [7867 SAR]; Progress weight (fair EPC distribution, SAR value) [93000 SAR] | 93,000 | HHR | HMK | HHR | Priority 1 | CON | - | - | ETECHS | CIVIL | ENA | MS5 |
| HMK-X1020 |  | Enabling works: cable routes, duct-bank and cabinet plinth preparation - Makkah |  | 15d | 2027-03-22 | 2027-04-11 | HMK-X1010 | 430d | 0d | Contract cost (BOQ x payment milestones) [11800 SAR]; Progress weight (fair EPC distribution, SAR value) [140120 SAR] | 140,120 | HHR | HMK | HHR | Priority 1 | CON | - | - | ETECHS | CIVIL | ENA | MS5 |
|  | CIV | **Civil works** |  |  | 2027-04-12 | 2027-07-26 |  |  |  |  |  |  |  |  |  |  |  |  |  |  |  |  |
| HMK-C1010 |  | Civil: platform trenches and duct banks - Makkah |  | 49d | 2027-04-12 | 2027-06-24 | HMK-X1020 | 430d | 0d | Contract cost (BOQ x payment milestones) [98335 SAR]; Progress weight (fair EPC distribution, SAR value) [605740 SAR] | 605,740 | HHR | HMK | HHR | Priority 1 | CON | - | - | ETECHS | CIVIL | CON | MS5 |
| HMK-C1020 |  | Civil: camera and ALPR pole foundations and poles - Makkah |  | 39d | 2027-06-02 | 2027-07-26 | HMK-C1010 SS+32d | 447d | 147d | Contract cost (BOQ x payment milestones) [78668 SAR]; Progress weight (fair EPC distribution, SAR value) [466240 SAR] | 466,240 | HHR | HMK | HHR | Priority 1 | CON | - | - | ETECHS | CIVIL | CON | MS5 |
|  | INS | **Installation** |  |  | 2027-11-22 | 2028-04-24 |  |  |  |  |  |  |  |  |  |  |  |  |  |  |  |  |
| HMK-C2010 |  | Install UPS, network switches and field cabinets - Makkah |  | 32d | 2027-11-22 | 2028-01-04 | HMK-P1100 | 300d | 0d | Contract cost (BOQ x payment milestones) [349070 SAR]; Progress weight (fair EPC distribution, SAR value) [279620 SAR] | 279,620 | HHR | HMK | HHR | Priority 1 | CON | - | - | ETECHS | UPSNET | CON | MS5 |
| HMK-C2020 |  | Cabling and termination (power, fibre, data) - Makkah |  | 53d | 2027-12-07 | 2028-02-17 | HMK-C2010 SS+11d, HMK-C1010 SS+35d | 300d | 0d | Contract cost (BOQ x payment milestones) [523605 SAR]; Progress weight (fair EPC distribution, SAR value) [559240 SAR] | 559,240 | HHR | HMK | HHR | Priority 1 | CON | - | - | ETECHS | CCTV | CON | MS5 |
| HMK-C2040 |  | Install video management, video wall and control-room equipment - Makkah |  | 37d | 2028-01-05 | 2028-03-02 | HMK-C2010 | 337d | 37d | Contract cost (BOQ x payment milestones) [261802 SAR]; Progress weight (fair EPC distribution, SAR value) [279620 SAR] | 279,620 | HHR | HMK | HHR | Priority 1 | CON | - | - | ETECHS | VMS | CON | MS5 |
| HMK-C2050 |  | Install access control and intercom - Makkah |  | 32d | 2028-01-20 | 2028-03-12 | HMK-C2010 FS+11d | 331d | 31d | Contract cost (BOQ x payment milestones) [174535 SAR]; Progress weight (fair EPC distribution, SAR value) [186620 SAR] | 186,620 | HHR | HMK | HHR | Priority 1 | CON | - | - | ETECHS | ACC | CON | MS5 |
| HMK-C2030 |  | Install and aim CCTV cameras - Makkah |  | 42d | 2028-02-27 | 2028-04-24 | HMK-C2020, HMK-C1020 | 300d | 0d | Contract cost (BOQ x payment milestones) [436337 SAR]; Progress weight (fair EPC distribution, SAR value) [466240 SAR] | 466,240 | HHR | HMK | HHR | Priority 1 | CON | - | - | ETECHS | CCTV | CON | MS5 |

| ID | WBS | Activity | Type | Duration | Start | Finish | Predecessors | Total float | Free float | Resources | Cost | Area | Station | Railway | Priority | EPC phase | Discipline | Responsibility | Design stage | Submittal or approval | Payment milestone | Programme phase |
| --- | --- | --- | --- | --- | --- | --- | --- | --- | --- | --- | --- | --- | --- | --- | --- | --- | --- | --- | --- | --- | --- | --- |
|  | ERY | **Riyadh (Malaz) (EWR)** |  |  | 2027-03-01 | 2027-11-07 |  |  |  |  |  |  |  |  |  |  |  |  |  |  |  |  |
| ERY-C2100 |  | MS5 Installation complete (20%) - Riyadh (Malaz) | milestone | 0d | 2027-11-07 | 2027-11-07 | ERY-C2020, ERY-C2030, ERY-C2040, ERY-C2050, ERY-C1020 | 426d | 0d |  |  | EWR | ERY | EWR | Priority 2 | MS | PM | ETECHS | - | - | MS5 | MS |
|  | ENA | **Enabling works** |  |  | 2027-03-01 | 2027-03-28 |  |  |  |  |  |  |  |  |  |  |  |  |  |  |  |  |
| ERY-X1010 |  | Enabling works: site preparation, setting out, temporary works and utilities clearance - Riyadh (Malaz) |  | 5d | 2027-03-01 | 2027-03-14 | ERY-E1010 SS+40d | 488d | 0d | Contract cost (BOQ x payment milestones) [8803 SAR]; Progress weight (fair EPC distribution, SAR value) [29760 SAR] | 29,760 | EWR | ERY | EWR | Priority 2 | CON | CIVIL | ETECHS | - | - | MS5 | ENA |
| ERY-X1020 |  | Enabling works: cable routes, duct-bank and cabinet plinth preparation - Riyadh (Malaz) |  | 10d | 2027-03-15 | 2027-03-28 | ERY-X1010 | 488d | 0d | Contract cost (BOQ x payment milestones) [13205 SAR]; Progress weight (fair EPC distribution, SAR value) [44640 SAR] | 44,640 | EWR | ERY | EWR | Priority 2 | CON | CIVIL | ETECHS | - | - | MS5 | ENA |
|  | CIV | **Civil works** |  |  | 2027-03-29 | 2027-07-25 |  |  |  |  |  |  |  |  |  |  |  |  |  |  |  |  |
| ERY-C1010 |  | Civil: platform trenches and duct banks - Riyadh (Malaz) |  | 56d | 2027-03-29 | 2027-06-21 | ERY-X1020 | 488d | 0d | Contract cost (BOQ x payment milestones) [110038 SAR]; Progress weight (fair EPC distribution, SAR value) [192820 SAR] | 192,820 | EWR | ERY | EWR | Priority 2 | CON | CIVIL | ETECHS | - | - | MS5 | CON |
| ERY-C1020 |  | Civil: camera and ALPR pole foundations and poles - Riyadh (Malaz) |  | 44d | 2027-05-25 | 2027-07-25 | ERY-C1010 SS+36d | 488d | 62d | Contract cost (BOQ x payment milestones) [88030 SAR]; Progress weight (fair EPC distribution, SAR value) [148180 SAR] | 148,180 | EWR | ERY | EWR | Priority 2 | CON | CIVIL | ETECHS | - | - | MS5 | CON |
|  | INS | **Installation** |  |  | 2027-09-27 | 2027-11-07 |  |  |  |  |  |  |  |  |  |  |  |  |  |  |  |  |
| ERY-C2010 |  | Install UPS, network switches and field cabinets - Riyadh (Malaz) |  | 9d | 2027-09-27 | 2027-10-07 | ERY-P1100 | 426d | 0d | Contract cost (BOQ x payment milestones) [79646 SAR]; Progress weight (fair EPC distribution, SAR value) [89280 SAR] | 89,280 | EWR | ERY | EWR | Priority 2 | CON | UPSNET | ETECHS | - | - | MS5 | CON |
| ERY-C2020 |  | Cabling and termination (power, fibre, data) - Riyadh (Malaz) |  | 15d | 2027-09-30 | 2027-10-20 | ERY-C2010 SS+3d, ERY-C1010 SS+40d | 426d | 0d | Contract cost (BOQ x payment milestones) [119468 SAR]; Progress weight (fair EPC distribution, SAR value) [177940 SAR] | 177,940 | EWR | ERY | EWR | Priority 2 | CON | CCTV | ETECHS | - | - | MS5 | CON |
| ERY-C2040 |  | Install video management, video wall and control-room equipment - Riyadh (Malaz) |  | 11d | 2027-10-10 | 2027-10-24 | ERY-C2010 | 436d | 10d | Contract cost (BOQ x payment milestones) [59734 SAR]; Progress weight (fair EPC distribution, SAR value) [89280 SAR] | 89,280 | EWR | ERY | EWR | Priority 2 | CON | VMS | ETECHS | - | - | MS5 | CON |
| ERY-C2050 |  | Install access control and intercom - Riyadh (Malaz) |  | 9d | 2027-10-13 | 2027-10-25 | ERY-C2010 FS+3d | 435d | 9d | Contract cost (BOQ x payment milestones) [39823 SAR]; Progress weight (fair EPC distribution, SAR value) [59520 SAR] | 59,520 | EWR | ERY | EWR | Priority 2 | CON | ACC | ETECHS | - | - | MS5 | CON |
| ERY-C2030 |  | Install and aim CCTV cameras - Riyadh (Malaz) |  | 12d | 2027-10-21 | 2027-11-07 | ERY-C2020, ERY-C1020 | 426d | 0d | Contract cost (BOQ x payment milestones) [99557 SAR]; Progress weight (fair EPC distribution, SAR value) [148180 SAR] | 148,180 | EWR | ERY | EWR | Priority 2 | CON | CCTV | ETECHS | - | - | MS5 | CON |
|  | HJD | **Jeddah (HHR)** |  |  | 2027-07-28 | 2028-08-20 |  |  |  |  |  |  |  |  |  |  |  |  |  |  |  |  |
| HJD-C2100 |  | MS5 Installation complete (20%) - Jeddah | milestone | 0d | 2028-08-20 | 2028-08-20 | HJD-C2020, HJD-C2030, HJD-C2040, HJD-C2050, HJD-C1020 | 221d | 0d |  |  | HHR | HJD | HHR | Standard | MS | PM | ETECHS | - | - | MS5 | MS |
|  | ENA | **Enabling works** |  |  | 2027-07-28 | 2027-08-17 |  |  |  |  |  |  |  |  |  |  |  |  |  |  |  |  |
| HJD-X1010 |  | Enabling works: site preparation, setting out, temporary works and utilities clearance - Jeddah |  | 5d | 2027-07-28 | 2027-08-03 | HJD-E1010 SS+42d | 359d | 0d | Contract cost (BOQ x payment milestones) [7180 SAR]; Progress weight (fair EPC distribution, SAR value) [91760 SAR] | 91,760 | HHR | HJD | HHR | Standard | CON | CIVIL | ETECHS | - | - | MS5 | ENA |
| HJD-X1020 |  | Enabling works: cable routes, duct-bank and cabinet plinth preparation - Jeddah |  | 10d | 2027-08-04 | 2027-08-17 | HJD-X1010 | 359d | 0d | Contract cost (BOQ x payment milestones) [10770 SAR]; Progress weight (fair EPC distribution, SAR value) [137640 SAR] | 137,640 | HHR | HJD | HHR | Standard | CON | CIVIL | ETECHS | - | - | MS5 | ENA |
|  | CIV | **Civil works** |  |  | 2027-08-18 | 2027-11-17 |  |  |  |  |  |  |  |  |  |  |  |  |  |  |  |  |
| HJD-C1010 |  | Civil: platform trenches and duct banks - Jeddah |  | 46d | 2027-08-18 | 2027-10-21 | HJD-X1020 | 359d | 0d | Contract cost (BOQ x payment milestones) [89747 SAR]; Progress weight (fair EPC distribution, SAR value) [595820 SAR] | 595,820 | HHR | HJD | HHR | Standard | CON | CIVIL | ETECHS | - | - | MS5 | CON |
| HJD-C1020 |  | Civil: camera and ALPR pole foundations and poles - Jeddah |  | 36d | 2027-09-29 | 2027-11-17 | HJD-C1010 SS+29d | 372d | 151d | Contract cost (BOQ x payment milestones) [71798 SAR]; Progress weight (fair EPC distribution, SAR value) [458180 SAR] | 458,180 | HHR | HJD | HHR | Standard | CON | CIVIL | ETECHS | - | - | MS5 | CON |
|  | INS | **Installation** |  |  | 2028-04-10 | 2028-08-20 |  |  |  |  |  |  |  |  |  |  |  |  |  |  |  |  |
| HJD-C2010 |  | Install UPS, network switches and field cabinets - Jeddah |  | 27d | 2028-04-10 | 2028-05-23 | HJD-P1100 | 221d | 0d | Contract cost (BOQ x payment milestones) [346136 SAR]; Progress weight (fair EPC distribution, SAR value) [275280 SAR] | 275,280 | HHR | HJD | HHR | Standard | CON | UPSNET | ETECHS | - | - | MS5 | CON |
| HJD-C2020 |  | Cabling and termination (power, fibre, data) - Jeddah |  | 45d | 2028-04-23 | 2028-06-29 | HJD-C2010 SS+9d, HJD-C1010 SS+33d | 221d | 0d | Contract cost (BOQ x payment milestones) [519205 SAR]; Progress weight (fair EPC distribution, SAR value) [549940 SAR] | 549,940 | HHR | HJD | HHR | Standard | CON | CCTV | ETECHS | - | - | MS5 | CON |
| HJD-C2040 |  | Install video management, video wall and control-room equipment - Jeddah |  | 31d | 2028-05-24 | 2028-07-05 | HJD-C2010 | 253d | 32d | Contract cost (BOQ x payment milestones) [259602 SAR]; Progress weight (fair EPC distribution, SAR value) [275280 SAR] | 275,280 | HHR | HJD | HHR | Standard | CON | VMS | ETECHS | - | - | MS5 | CON |
| HJD-C2050 |  | Install access control and intercom - Jeddah |  | 27d | 2028-06-06 | 2028-07-12 | HJD-C2010 FS+9d | 248d | 27d | Contract cost (BOQ x payment milestones) [173068 SAR]; Progress weight (fair EPC distribution, SAR value) [183520 SAR] | 183,520 | HHR | HJD | HHR | Standard | CON | ACC | ETECHS | - | - | MS5 | CON |
| HJD-C2030 |  | Install and aim CCTV cameras - Jeddah |  | 36d | 2028-07-02 | 2028-08-20 | HJD-C2020, HJD-C1020 | 221d | 0d | Contract cost (BOQ x payment milestones) [432670 SAR]; Progress weight (fair EPC distribution, SAR value) [458180 SAR] | 458,180 | HHR | HJD | HHR | Standard | CON | CCTV | ETECHS | - | - | MS5 | CON |

| ID | WBS | Activity | Type | Duration | Start | Finish | Predecessors | Total float | Free float | Resources | Cost | Area | Station | Railway | Priority | EPC phase | Discipline | Responsibility | Design stage | Submittal or approval | Payment milestone | Programme phase |
| --- | --- | --- | --- | --- | --- | --- | --- | --- | --- | --- | --- | --- | --- | --- | --- | --- | --- | --- | --- | --- | --- | --- |
|  | EDM | **Dammam (EWR)** |  |  | 2027-09-20 | 2028-06-07 |  |  |  |  |  |  |  |  |  |  |  |  |  |  |  |  |
| EDM-C2100 |  | MS5 Installation complete (20%) - Dammam | milestone | 0d | 2028-06-07 | 2028-06-07 | EDM-C2020, EDM-C2030, EDM-C2040, EDM-C2050, EDM-C1020 | 283d | 0d |  |  | EWR | EDM | EWR | Standard | MS | PM | ETECHS | - | - | MS5 | MS |
|  | ENA | **Enabling works** |  |  | 2027-09-20 | 2027-10-11 |  |  |  |  |  |  |  |  |  |  |  |  |  |  |  |  |
| EDM-X1010 |  | Enabling works: site preparation, setting out, temporary works and utilities clearance - Dammam |  | 5d | 2027-09-20 | 2027-09-27 | EDM-E1010 SS+42d | 353d | 0d | Contract cost (BOQ x payment milestones) [8803 SAR]; Progress weight (fair EPC distribution, SAR value) [30380 SAR] | 30,380 | EWR | EDM | EWR | Standard | CON | CIVIL | ETECHS | - | - | MS5 | ENA |
| EDM-X1020 |  | Enabling works: cable routes, duct-bank and cabinet plinth preparation - Dammam |  | 10d | 2027-09-28 | 2027-10-11 | EDM-X1010 | 353d | 0d | Contract cost (BOQ x payment milestones) [13204 SAR]; Progress weight (fair EPC distribution, SAR value) [45880 SAR] | 45,880 | EWR | EDM | EWR | Standard | CON | CIVIL | ETECHS | - | - | MS5 | ENA |
|  | CIV | **Civil works** |  |  | 2027-10-12 | 2028-01-31 |  |  |  |  |  |  |  |  |  |  |  |  |  |  |  |  |
| EDM-C1010 |  | Civil: platform trenches and duct banks - Dammam |  | 56d | 2027-10-12 | 2027-12-28 | EDM-X1020 | 353d | 0d | Contract cost (BOQ x payment milestones) [110036 SAR]; Progress weight (fair EPC distribution, SAR value) [199020 SAR] | 199,020 | EWR | EDM | EWR | Standard | CON | CIVIL | ETECHS | - | - | MS5 | CON |
| EDM-C1020 |  | Civil: camera and ALPR pole foundations and poles - Dammam |  | 44d | 2027-12-01 | 2028-01-31 | EDM-C1010 SS+36d | 353d | 70d | Contract cost (BOQ x payment milestones) [88029 SAR]; Progress weight (fair EPC distribution, SAR value) [153140 SAR] | 153,140 | EWR | EDM | EWR | Standard | CON | CIVIL | ETECHS | - | - | MS5 | CON |
|  | INS | **Installation** |  |  | 2028-04-20 | 2028-06-07 |  |  |  |  |  |  |  |  |  |  |  |  |  |  |  |  |
| EDM-C2010 |  | Install UPS, network switches and field cabinets - Dammam |  | 9d | 2028-04-20 | 2028-05-09 | EDM-P1100 | 283d | 0d | Contract cost (BOQ x payment milestones) [83486 SAR]; Progress weight (fair EPC distribution, SAR value) [91760 SAR] | 91,760 | EWR | EDM | EWR | Standard | CON | UPSNET | ETECHS | - | - | MS5 | CON |
| EDM-C2020 |  | Cabling and termination (power, fibre, data) - Dammam |  | 15d | 2028-04-25 | 2028-05-22 | EDM-C2010 SS+3d, EDM-C1010 SS+40d | 283d | 0d | Contract cost (BOQ x payment milestones) [125229 SAR]; Progress weight (fair EPC distribution, SAR value) [183520 SAR] | 183,520 | EWR | EDM | EWR | Standard | CON | CCTV | ETECHS | - | - | MS5 | CON |
| EDM-C2040 |  | Install video management, video wall and control-room equipment - Dammam |  | 11d | 2028-05-10 | 2028-05-24 | EDM-C2010 | 293d | 10d | Contract cost (BOQ x payment milestones) [62615 SAR]; Progress weight (fair EPC distribution, SAR value) [91760 SAR] | 91,760 | EWR | EDM | EWR | Standard | CON | VMS | ETECHS | - | - | MS5 | CON |
| EDM-C2050 |  | Install access control and intercom - Dammam |  | 9d | 2028-05-15 | 2028-05-25 | EDM-C2010 FS+3d | 292d | 9d | Contract cost (BOQ x payment milestones) [41743 SAR]; Progress weight (fair EPC distribution, SAR value) [61380 SAR] | 61,380 | EWR | EDM | EWR | Standard | CON | ACC | ETECHS | - | - | MS5 | CON |
| EDM-C2030 |  | Install and aim CCTV cameras - Dammam |  | 12d | 2028-05-23 | 2028-06-07 | EDM-C2020, EDM-C1020 | 283d | 0d | Contract cost (BOQ x payment milestones) [104358 SAR]; Progress weight (fair EPC distribution, SAR value) [153140 SAR] | 153,140 | EWR | EDM | EWR | Standard | CON | CCTV | ETECHS | - | - | MS5 | CON |
|  | NQS | **Al Qassim (NSR)** |  |  | 2027-11-08 | 2028-08-02 |  |  |  |  |  |  |  |  |  |  |  |  |  |  |  |  |
| NQS-C2100 |  | MS5 Installation complete (20%) - Al Qassim | milestone | 0d | 2028-08-02 | 2028-08-02 | NQS-C2020, NQS-C2030, NQS-C2040, NQS-C2050, NQS-C1020 | 243d | 0d |  |  | NSR | NQS | NSR | Standard | MS | PM | ETECHS | - | - | MS5 | MS |
|  | ENA | **Enabling works** |  |  | 2027-11-08 | 2027-11-28 |  |  |  |  |  |  |  |  |  |  |  |  |  |  |  |  |
| NQS-X1010 |  | Enabling works: site preparation, setting out, temporary works and utilities clearance - Al Qassim |  | 5d | 2027-11-08 | 2027-11-14 | NQS-E1010 SS+42d | 312d | 0d | Contract cost (BOQ x payment milestones) [8432 SAR]; Progress weight (fair EPC distribution, SAR value) [32860 SAR] | 32,860 | NSR | NQS | NSR | Standard | CON | CIVIL | ETECHS | - | - | MS5 | ENA |
| NQS-X1020 |  | Enabling works: cable routes, duct-bank and cabinet plinth preparation - Al Qassim |  | 10d | 2027-11-15 | 2027-11-28 | NQS-X1010 | 312d | 0d | Contract cost (BOQ x payment milestones) [12648 SAR]; Progress weight (fair EPC distribution, SAR value) [48980 SAR] | 48,980 | NSR | NQS | NSR | Standard | CON | CIVIL | ETECHS | - | - | MS5 | ENA |
|  | CIV | **Civil works** |  |  | 2027-11-29 | 2028-04-02 |  |  |  |  |  |  |  |  |  |  |  |  |  |  |  |  |
| NQS-C1010 |  | Civil: platform trenches and duct banks - Al Qassim |  | 59d | 2027-11-29 | 2028-02-17 | NQS-X1020 | 312d | 0d | Contract cost (BOQ x payment milestones) [105400 SAR]; Progress weight (fair EPC distribution, SAR value) [212040 SAR] | 212,040 | NSR | NQS | NSR | Standard | CON | CIVIL | ETECHS | - | - | MS5 | CON |
| NQS-C1020 |  | Civil: camera and ALPR pole foundations and poles - Al Qassim |  | 47d | 2028-01-20 | 2028-04-02 | NQS-C1010 SS+38d | 312d | 69d | Contract cost (BOQ x payment milestones) [84320 SAR]; Progress weight (fair EPC distribution, SAR value) [163060 SAR] | 163,060 | NSR | NQS | NSR | Standard | CON | CIVIL | ETECHS | - | - | MS5 | CON |
|  | INS | **Installation** |  |  | 2028-06-14 | 2028-08-02 |  |  |  |  |  |  |  |  |  |  |  |  |  |  |  |  |
| NQS-C2010 |  | Install UPS, network switches and field cabinets - Al Qassim |  | 11d | 2028-06-14 | 2028-06-28 | NQS-P1100 | 243d | 0d | Contract cost (BOQ x payment milestones) [93797 SAR]; Progress weight (fair EPC distribution, SAR value) [97960 SAR] | 97,960 | NSR | NQS | NSR | Standard | CON | UPSNET | ETECHS | - | - | MS5 | CON |
| NQS-C2020 |  | Cabling and termination (power, fibre, data) - Al Qassim |  | 18d | 2028-06-20 | 2028-07-13 | NQS-C2010 SS+4d, NQS-C1010 SS+43d | 243d | 0d | Contract cost (BOQ x payment milestones) [140695 SAR]; Progress weight (fair EPC distribution, SAR value) [195920 SAR] | 195,920 | NSR | NQS | NSR | Standard | CON | CCTV | ETECHS | - | - | MS5 | CON |
| NQS-C2040 |  | Install video management, video wall and control-room equipment - Al Qassim |  | 12d | 2028-06-29 | 2028-07-16 | NQS-C2010 | 256d | 13d | Contract cost (BOQ x payment milestones) [70348 SAR]; Progress weight (fair EPC distribution, SAR value) [97960 SAR] | 97,960 | NSR | NQS | NSR | Standard | CON | VMS | ETECHS | - | - | MS5 | CON |
| NQS-C2050 |  | Install access control and intercom - Al Qassim |  | 11d | 2028-07-05 | 2028-07-19 | NQS-C2010 FS+4d | 253d | 10d | Contract cost (BOQ x payment milestones) [46898 SAR]; Progress weight (fair EPC distribution, SAR value) [65100 SAR] | 65,100 | NSR | NQS | NSR | Standard | CON | ACC | ETECHS | - | - | MS5 | CON |
| NQS-C2030 |  | Install and aim CCTV cameras - Al Qassim |  | 14d | 2028-07-16 | 2028-08-02 | NQS-C2020, NQS-C1020 | 243d | 0d | Contract cost (BOQ x payment milestones) [117246 SAR]; Progress weight (fair EPC distribution, SAR value) [163060 SAR] | 163,060 | NSR | NQS | NSR | Standard | CON | CCTV | ETECHS | - | - | MS5 | CON |

| ID | WBS | Activity | Type | Duration | Start | Finish | Predecessors | Total float | Free float | Resources | Cost | Area | Station | Railway | Priority | EPC phase | Discipline | Responsibility | Design stage | Submittal or approval | Payment milestone | Programme phase |
| --- | --- | --- | --- | --- | --- | --- | --- | --- | --- | --- | --- | --- | --- | --- | --- | --- | --- | --- | --- | --- | --- | --- |
|  | EHF | **Hufuf (EWR)** |  |  | 2027-11-08 | 2028-07-25 |  |  |  |  |  |  |  |  |  |  |  |  |  |  |  |  |
| EHF-C2100 |  | MS5 Installation complete (20%) - Hufuf | milestone | 0d | 2028-07-25 | 2028-07-25 | EHF-C2020, EHF-C2030, EHF-C2040, EHF-C2050, EHF-C1020 | 249d | 0d |  |  | EWR | EHF | EWR | Standard | MS | PM | ETECHS | - | - | MS5 | MS |
|  | ENA | **Enabling works** |  |  | 2027-11-08 | 2027-11-28 |  |  |  |  |  |  |  |  |  |  |  |  |  |  |  |  |
| EHF-X1010 |  | Enabling works: site preparation, setting out, temporary works and utilities clearance - Hufuf |  | 5d | 2027-11-08 | 2027-11-14 | EHF-E1010 SS+42d | 324d | 0d | Contract cost (BOQ x payment milestones) [8277 SAR]; Progress weight (fair EPC distribution, SAR value) [27280 SAR] | 27,280 | EWR | EHF | EWR | Standard | CON | CIVIL | ETECHS | - | - | MS5 | ENA |
| EHF-X1020 |  | Enabling works: cable routes, duct-bank and cabinet plinth preparation - Hufuf |  | 10d | 2027-11-15 | 2027-11-28 | EHF-X1010 | 324d | 0d | Contract cost (BOQ x payment milestones) [12415 SAR]; Progress weight (fair EPC distribution, SAR value) [40920 SAR] | 40,920 | EWR | EHF | EWR | Standard | CON | CIVIL | ETECHS | - | - | MS5 | ENA |
|  | CIV | **Civil works** |  |  | 2027-11-29 | 2028-03-19 |  |  |  |  |  |  |  |  |  |  |  |  |  |  |  |  |
| EHF-C1010 |  | Civil: platform trenches and duct banks - Hufuf |  | 53d | 2027-11-29 | 2028-02-09 | EHF-X1020 | 324d | 0d | Contract cost (BOQ x payment milestones) [103459 SAR]; Progress weight (fair EPC distribution, SAR value) [176700 SAR] | 176,700 | EWR | EHF | EWR | Standard | CON | CIVIL | ETECHS | - | - | MS5 | CON |
| EHF-C1020 |  | Civil: camera and ALPR pole foundations and poles - Hufuf |  | 41d | 2028-01-16 | 2028-03-19 | EHF-C1010 SS+34d | 324d | 75d | Contract cost (BOQ x payment milestones) [82767 SAR]; Progress weight (fair EPC distribution, SAR value) [135780 SAR] | 135,780 | EWR | EHF | EWR | Standard | CON | CIVIL | ETECHS | - | - | MS5 | CON |
|  | INS | **Installation** |  |  | 2028-06-14 | 2028-07-25 |  |  |  |  |  |  |  |  |  |  |  |  |  |  |  |  |
| EHF-C2010 |  | Install UPS, network switches and field cabinets - Hufuf |  | 9d | 2028-06-14 | 2028-06-26 | EHF-P1100 | 249d | 0d | Contract cost (BOQ x payment milestones) [71756 SAR]; Progress weight (fair EPC distribution, SAR value) [81220 SAR] | 81,220 | EWR | EHF | EWR | Standard | CON | UPSNET | ETECHS | - | - | MS5 | CON |
| EHF-C2020 |  | Cabling and termination (power, fibre, data) - Hufuf |  | 15d | 2028-06-19 | 2028-07-09 | EHF-C2010 SS+3d, EHF-C1010 SS+38d | 249d | 0d | Contract cost (BOQ x payment milestones) [107635 SAR]; Progress weight (fair EPC distribution, SAR value) [163060 SAR] | 163,060 | EWR | EHF | EWR | Standard | CON | CCTV | ETECHS | - | - | MS5 | CON |
| EHF-C2040 |  | Install video management, video wall and control-room equipment - Hufuf |  | 11d | 2028-06-27 | 2028-07-11 | EHF-C2010 | 259d | 10d | Contract cost (BOQ x payment milestones) [53817 SAR]; Progress weight (fair EPC distribution, SAR value) [81220 SAR] | 81,220 | EWR | EHF | EWR | Standard | CON | VMS | ETECHS | - | - | MS5 | CON |
| EHF-C2050 |  | Install access control and intercom - Hufuf |  | 9d | 2028-07-02 | 2028-07-12 | EHF-C2010 FS+3d | 258d | 9d | Contract cost (BOQ x payment milestones) [35878 SAR]; Progress weight (fair EPC distribution, SAR value) [54560 SAR] | 54,560 | EWR | EHF | EWR | Standard | CON | ACC | ETECHS | - | - | MS5 | CON |
| EHF-C2030 |  | Install and aim CCTV cameras - Hufuf |  | 12d | 2028-07-10 | 2028-07-25 | EHF-C2020, EHF-C1020 | 249d | 0d | Contract cost (BOQ x payment milestones) [89695 SAR]; Progress weight (fair EPC distribution, SAR value) [135780 SAR] | 135,780 | EWR | EHF | EWR | Standard | CON | CCTV | ETECHS | - | - | MS5 | CON |
|  | NMJ | **Al Majma'ah (NSR)** |  |  | 2027-12-19 | 2028-09-12 |  |  |  |  |  |  |  |  |  |  |  |  |  |  |  |  |
| NMJ-C2100 |  | MS5 Installation complete (20%) - Al Majma'ah | milestone | 0d | 2028-09-12 | 2028-09-12 | NMJ-C2020, NMJ-C2030, NMJ-C2040, NMJ-C2050, NMJ-C1020 | 214d | 0d |  |  | NSR | NMJ | NSR | Standard | MS | PM | ETECHS | - | - | MS5 | MS |
|  | ENA | **Enabling works** |  |  | 2027-12-19 | 2028-01-06 |  |  |  |  |  |  |  |  |  |  |  |  |  |  |  |  |
| NMJ-X1010 |  | Enabling works: site preparation, setting out, temporary works and utilities clearance - Al Majma'ah |  | 5d | 2027-12-19 | 2027-12-23 | NMJ-E1010 SS+42d | 283d | 0d | Contract cost (BOQ x payment milestones) [8432 SAR]; Progress weight (fair EPC distribution, SAR value) [32860 SAR] | 32,860 | NSR | NMJ | NSR | Standard | CON | CIVIL | ETECHS | - | - | MS5 | ENA |
| NMJ-X1020 |  | Enabling works: cable routes, duct-bank and cabinet plinth preparation - Al Majma'ah |  | 10d | 2027-12-26 | 2028-01-06 | NMJ-X1010 | 283d | 0d | Contract cost (BOQ x payment milestones) [12648 SAR]; Progress weight (fair EPC distribution, SAR value) [48980 SAR] | 48,980 | NSR | NMJ | NSR | Standard | CON | CIVIL | ETECHS | - | - | MS5 | ENA |
|  | CIV | **Civil works** |  |  | 2028-01-09 | 2028-05-18 |  |  |  |  |  |  |  |  |  |  |  |  |  |  |  |  |
| NMJ-C1010 |  | Civil: platform trenches and duct banks - Al Majma'ah |  | 59d | 2028-01-09 | 2028-04-05 | NMJ-X1020 | 283d | 0d | Contract cost (BOQ x payment milestones) [105400 SAR]; Progress weight (fair EPC distribution, SAR value) [212040 SAR] | 212,040 | NSR | NMJ | NSR | Standard | CON | CIVIL | ETECHS | - | - | MS5 | CON |
| NMJ-C1020 |  | Civil: camera and ALPR pole foundations and poles - Al Majma'ah |  | 47d | 2028-03-08 | 2028-05-18 | NMJ-C1010 SS+38d | 283d | 69d | Contract cost (BOQ x payment milestones) [84320 SAR]; Progress weight (fair EPC distribution, SAR value) [163060 SAR] | 163,060 | NSR | NMJ | NSR | Standard | CON | CIVIL | ETECHS | - | - | MS5 | CON |
|  | INS | **Installation** |  |  | 2028-07-25 | 2028-09-12 |  |  |  |  |  |  |  |  |  |  |  |  |  |  |  |  |
| NMJ-C2010 |  | Install UPS, network switches and field cabinets - Al Majma'ah |  | 11d | 2028-07-25 | 2028-08-08 | NMJ-P1100 | 214d | 0d | Contract cost (BOQ x payment milestones) [93797 SAR]; Progress weight (fair EPC distribution, SAR value) [97960 SAR] | 97,960 | NSR | NMJ | NSR | Standard | CON | UPSNET | ETECHS | - | - | MS5 | CON |
| NMJ-C2020 |  | Cabling and termination (power, fibre, data) - Al Majma'ah |  | 18d | 2028-07-31 | 2028-08-23 | NMJ-C2010 SS+4d, NMJ-C1010 SS+43d | 214d | 0d | Contract cost (BOQ x payment milestones) [140695 SAR]; Progress weight (fair EPC distribution, SAR value) [195920 SAR] | 195,920 | NSR | NMJ | NSR | Standard | CON | CCTV | ETECHS | - | - | MS5 | CON |
| NMJ-C2040 |  | Install video management, video wall and control-room equipment - Al Majma'ah |  | 12d | 2028-08-09 | 2028-08-24 | NMJ-C2010 | 227d | 13d | Contract cost (BOQ x payment milestones) [70348 SAR]; Progress weight (fair EPC distribution, SAR value) [97960 SAR] | 97,960 | NSR | NMJ | NSR | Standard | CON | VMS | ETECHS | - | - | MS5 | CON |
| NMJ-C2050 |  | Install access control and intercom - Al Majma'ah |  | 11d | 2028-08-15 | 2028-08-29 | NMJ-C2010 FS+4d | 224d | 10d | Contract cost (BOQ x payment milestones) [46898 SAR]; Progress weight (fair EPC distribution, SAR value) [65100 SAR] | 65,100 | NSR | NMJ | NSR | Standard | CON | ACC | ETECHS | - | - | MS5 | CON |
| NMJ-C2030 |  | Install and aim CCTV cameras - Al Majma'ah |  | 14d | 2028-08-24 | 2028-09-12 | NMJ-C2020, NMJ-C1020 | 214d | 0d | Contract cost (BOQ x payment milestones) [117246 SAR]; Progress weight (fair EPC distribution, SAR value) [163060 SAR] | 163,060 | NSR | NMJ | NSR | Standard | CON | CCTV | ETECHS | - | - | MS5 | CON |

| ID | WBS | Activity | Type | Duration | Start | Finish | Predecessors | Total float | Free float | Resources | Cost | Area | Station | Railway | Priority | EPC phase | Discipline | Responsibility | Design stage | Submittal or approval | Payment milestone | Programme phase |
| --- | --- | --- | --- | --- | --- | --- | --- | --- | --- | --- | --- | --- | --- | --- | --- | --- | --- | --- | --- | --- | --- | --- |
|  | HKA | **KAEC (HHR)** |  |  | 2028-04-06 | 2029-03-27 |  |  |  |  |  |  |  |  |  |  |  |  |  |  |  |  |
| HKA-C2100 |  | MS5 Installation complete (20%) - KAEC | milestone | 0d | 2029-03-27 | 2029-03-27 | HKA-C2020, HKA-C2030, HKA-C2040, HKA-C2050, HKA-C1020 | 70d | 0d |  |  | HHR | HKA | HHR | Standard | MS | PM | ETECHS | - | - | MS5 | MS |
|  | ENA | **Enabling works** |  |  | 2028-04-06 | 2028-04-26 |  |  |  |  |  |  |  |  |  |  |  |  |  |  |  |  |
| HKA-X1010 |  | Enabling works: site preparation, setting out, temporary works and utilities clearance - KAEC |  | 5d | 2028-04-06 | 2028-04-12 | HKA-E1010 SS+42d | 216d | 0d | Contract cost (BOQ x payment milestones) [2574 SAR]; Progress weight (fair EPC distribution, SAR value) [53320 SAR] | 53,320 | HHR | HKA | HHR | Standard | CON | CIVIL | ETECHS | - | - | MS5 | ENA |
| HKA-X1020 |  | Enabling works: cable routes, duct-bank and cabinet plinth preparation - KAEC |  | 10d | 2028-04-13 | 2028-04-26 | HKA-X1010 | 216d | 0d | Contract cost (BOQ x payment milestones) [3861 SAR]; Progress weight (fair EPC distribution, SAR value) [79980 SAR] | 79,980 | HHR | HKA | HHR | Standard | CON | CIVIL | ETECHS | - | - | MS5 | ENA |
|  | CIV | **Civil works** |  |  | 2028-04-27 | 2028-07-05 |  |  |  |  |  |  |  |  |  |  |  |  |  |  |  |  |
| HKA-C1010 |  | Civil: platform trenches and duct banks - KAEC |  | 31d | 2028-04-27 | 2028-06-15 | HKA-X1020 | 216d | 0d | Contract cost (BOQ x payment milestones) [32177 SAR]; Progress weight (fair EPC distribution, SAR value) [347200 SAR] | 347,200 | HHR | HKA | HHR | Standard | CON | CIVIL | ETECHS | - | - | MS5 | CON |
| HKA-C1020 |  | Civil: camera and ALPR pole foundations and poles - KAEC |  | 25d | 2028-06-01 | 2028-07-05 | HKA-C1010 SS+20d | 227d | 157d | Contract cost (BOQ x payment milestones) [25742 SAR]; Progress weight (fair EPC distribution, SAR value) [267220 SAR] | 267,220 | HHR | HKA | HHR | Standard | CON | CIVIL | ETECHS | - | - | MS5 | CON |
|  | INS | **Installation** |  |  | 2028-12-18 | 2029-03-27 |  |  |  |  |  |  |  |  |  |  |  |  |  |  |  |  |
| HKA-C2010 |  | Install UPS, network switches and field cabinets - KAEC |  | 20d | 2028-12-18 | 2029-01-14 | HKA-P1100 | 70d | 0d | Contract cost (BOQ x payment milestones) [209704 SAR]; Progress weight (fair EPC distribution, SAR value) [159960 SAR] | 159,960 | HHR | HKA | HHR | Standard | CON | UPSNET | ETECHS | - | - | MS5 | CON |
| HKA-C2020 |  | Cabling and termination (power, fibre, data) - KAEC |  | 33d | 2028-12-27 | 2029-02-18 | HKA-C2010 SS+7d, HKA-C1010 SS+23d | 70d | 0d | Contract cost (BOQ x payment milestones) [314556 SAR]; Progress weight (fair EPC distribution, SAR value) [320540 SAR] | 320,540 | HHR | HKA | HHR | Standard | CON | CCTV | ETECHS | - | - | MS5 | CON |
| HKA-C2040 |  | Install video management, video wall and control-room equipment - KAEC |  | 23d | 2029-01-15 | 2029-02-21 | HKA-C2010 | 93d | 23d | Contract cost (BOQ x payment milestones) [157278 SAR]; Progress weight (fair EPC distribution, SAR value) [159960 SAR] | 159,960 | HHR | HKA | HHR | Standard | CON | VMS | ETECHS | - | - | MS5 | CON |
| HKA-C2050 |  | Install access control and intercom - KAEC |  | 20d | 2029-01-24 | 2029-02-28 | HKA-C2010 FS+7d | 89d | 19d | Contract cost (BOQ x payment milestones) [104852 SAR]; Progress weight (fair EPC distribution, SAR value) [106640 SAR] | 106,640 | HHR | HKA | HHR | Standard | CON | ACC | ETECHS | - | - | MS5 | CON |
| HKA-C2030 |  | Install and aim CCTV cameras - KAEC |  | 26d | 2029-02-19 | 2029-03-27 | HKA-C2020, HKA-C1020 | 70d | 0d | Contract cost (BOQ x payment milestones) [262130 SAR]; Progress weight (fair EPC distribution, SAR value) [267220 SAR] | 267,220 | HHR | HKA | HHR | Standard | CON | CCTV | ETECHS | - | - | MS5 | CON |
|  | HMD | **Madinah (HHR)** |  |  | 2028-04-06 | 2029-04-02 |  |  |  |  |  |  |  |  |  |  |  |  |  |  |  |  |
| HMD-C2100 |  | MS5 Installation complete (20%) - Madinah | milestone | 0d | 2029-04-02 | 2029-04-02 | HMD-C2020, HMD-C2030, HMD-C2040, HMD-C2050, HMD-C1020 | 66d | 0d |  |  | HHR | HMD | HHR | Standard | MS | PM | ETECHS | - | - | MS5 | MS |
|  | ENA | **Enabling works** |  |  | 2028-04-06 | 2028-04-26 |  |  |  |  |  |  |  |  |  |  |  |  |  |  |  |  |
| HMD-X1010 |  | Enabling works: site preparation, setting out, temporary works and utilities clearance - Madinah |  | 5d | 2028-04-06 | 2028-04-12 | HMD-E1010 SS+42d | 210d | 0d | Contract cost (BOQ x payment milestones) [4005 SAR]; Progress weight (fair EPC distribution, SAR value) [53320 SAR] | 53,320 | HHR | HMD | HHR | Standard | CON | CIVIL | ETECHS | - | - | MS5 | ENA |
| HMD-X1020 |  | Enabling works: cable routes, duct-bank and cabinet plinth preparation - Madinah |  | 10d | 2028-04-13 | 2028-04-26 | HMD-X1010 | 210d | 0d | Contract cost (BOQ x payment milestones) [6008 SAR]; Progress weight (fair EPC distribution, SAR value) [79980 SAR] | 79,980 | HHR | HMD | HHR | Standard | CON | CIVIL | ETECHS | - | - | MS5 | ENA |
|  | CIV | **Civil works** |  |  | 2028-04-27 | 2028-07-13 |  |  |  |  |  |  |  |  |  |  |  |  |  |  |  |  |
| HMD-C1010 |  | Civil: platform trenches and duct banks - Madinah |  | 35d | 2028-04-27 | 2028-06-21 | HMD-X1020 | 210d | 0d | Contract cost (BOQ x payment milestones) [50065 SAR]; Progress weight (fair EPC distribution, SAR value) [347200 SAR] | 347,200 | HHR | HMD | HHR | Standard | CON | CIVIL | ETECHS | - | - | MS5 | CON |
| HMD-C1020 |  | Civil: camera and ALPR pole foundations and poles - Madinah |  | 28d | 2028-06-06 | 2028-07-13 | HMD-C1010 SS+23d | 219d | 153d | Contract cost (BOQ x payment milestones) [40052 SAR]; Progress weight (fair EPC distribution, SAR value) [267220 SAR] | 267,220 | HHR | HMD | HHR | Standard | CON | CIVIL | ETECHS | - | - | MS5 | CON |
|  | INS | **Installation** |  |  | 2028-12-18 | 2029-04-02 |  |  |  |  |  |  |  |  |  |  |  |  |  |  |  |  |
| HMD-C2010 |  | Install UPS, network switches and field cabinets - Madinah |  | 21d | 2028-12-18 | 2029-01-15 | HMD-P1100 | 66d | 0d | Contract cost (BOQ x payment milestones) [202459 SAR]; Progress weight (fair EPC distribution, SAR value) [159960 SAR] | 159,960 | HHR | HMD | HHR | Standard | CON | UPSNET | ETECHS | - | - | MS5 | CON |
| HMD-C2020 |  | Cabling and termination (power, fibre, data) - Madinah |  | 35d | 2028-12-27 | 2029-02-20 | HMD-C2010 SS+7d, HMD-C1010 SS+25d | 66d | 0d | Contract cost (BOQ x payment milestones) [303689 SAR]; Progress weight (fair EPC distribution, SAR value) [320540 SAR] | 320,540 | HHR | HMD | HHR | Standard | CON | CCTV | ETECHS | - | - | MS5 | CON |
| HMD-C2040 |  | Install video management, video wall and control-room equipment - Madinah |  | 25d | 2029-01-16 | 2029-02-27 | HMD-C2010 | 90d | 24d | Contract cost (BOQ x payment milestones) [151845 SAR]; Progress weight (fair EPC distribution, SAR value) [159960 SAR] | 159,960 | HHR | HMD | HHR | Standard | CON | VMS | ETECHS | - | - | MS5 | CON |
| HMD-C2050 |  | Install access control and intercom - Madinah |  | 21d | 2029-01-25 | 2029-03-04 | HMD-C2010 FS+7d | 87d | 21d | Contract cost (BOQ x payment milestones) [101230 SAR]; Progress weight (fair EPC distribution, SAR value) [106640 SAR] | 106,640 | HHR | HMD | HHR | Standard | CON | ACC | ETECHS | - | - | MS5 | CON |
| HMD-C2030 |  | Install and aim CCTV cameras - Madinah |  | 28d | 2029-02-21 | 2029-04-02 | HMD-C2020, HMD-C1020 | 66d | 0d | Contract cost (BOQ x payment milestones) [253074 SAR]; Progress weight (fair EPC distribution, SAR value) [267220 SAR] | 267,220 | HHR | HMD | HHR | Standard | CON | CCTV | ETECHS | - | - | MS5 | CON |

| ID | WBS | Activity | Type | Duration | Start | Finish | Predecessors | Total float | Free float | Resources | Cost | Area | Station | Railway | Priority | EPC phase | Discipline | Responsibility | Design stage | Submittal or approval | Payment milestone | Programme phase |
| --- | --- | --- | --- | --- | --- | --- | --- | --- | --- | --- | --- | --- | --- | --- | --- | --- | --- | --- | --- | --- | --- | --- |
|  | EAB | **Abqaiq (EWR)** |  |  | 2028-05-25 | 2029-01-22 |  |  |  |  |  |  |  |  |  |  |  |  |  |  |  |  |
| EAB-C2100 |  | MS5 Installation complete (20%) - Abqaiq | milestone | 0d | 2029-01-22 | 2029-01-22 | EAB-C2020, EAB-C2030, EAB-C2040, EAB-C2050, EAB-C1020 | 120d | 0d |  |  | EWR | EAB | EWR | Standard | MS | PM | ETECHS | - | - | MS5 | MS |
|  | ENA | **Enabling works** |  |  | 2028-05-25 | 2028-06-14 |  |  |  |  |  |  |  |  |  |  |  |  |  |  |  |  |
| EAB-X1010 |  | Enabling works: site preparation, setting out, temporary works and utilities clearance - Abqaiq |  | 5d | 2028-05-25 | 2028-05-31 | EAB-E1010 SS+42d | 213d | 0d | Contract cost (BOQ x payment milestones) [4715 SAR]; Progress weight (fair EPC distribution, SAR value) [19220 SAR] | 19,220 | EWR | EAB | EWR | Standard | CON | CIVIL | ETECHS | - | - | MS5 | ENA |
| EAB-X1020 |  | Enabling works: cable routes, duct-bank and cabinet plinth preparation - Abqaiq |  | 10d | 2028-06-01 | 2028-06-14 | EAB-X1010 | 213d | 0d | Contract cost (BOQ x payment milestones) [7073 SAR]; Progress weight (fair EPC distribution, SAR value) [29140 SAR] | 29,140 | EWR | EAB | EWR | Standard | CON | CIVIL | ETECHS | - | - | MS5 | ENA |
|  | CIV | **Civil works** |  |  | 2028-06-15 | 2028-08-30 |  |  |  |  |  |  |  |  |  |  |  |  |  |  |  |  |
| EAB-C1010 |  | Civil: platform trenches and duct banks - Abqaiq |  | 39d | 2028-06-15 | 2028-08-08 | EAB-X1020 | 213d | 0d | Contract cost (BOQ x payment milestones) [58942 SAR]; Progress weight (fair EPC distribution, SAR value) [125240 SAR] | 125,240 | EWR | EAB | EWR | Standard | CON | CIVIL | ETECHS | - | - | MS5 | CON |
| EAB-C1020 |  | Civil: camera and ALPR pole foundations and poles - Abqaiq |  | 30d | 2028-07-20 | 2028-08-30 | EAB-C1010 SS+25d | 213d | 93d | Contract cost (BOQ x payment milestones) [47154 SAR]; Progress weight (fair EPC distribution, SAR value) [96100 SAR] | 96,100 | EWR | EAB | EWR | Standard | CON | CIVIL | ETECHS | - | - | MS5 | CON |
|  | INS | **Installation** |  |  | 2028-12-18 | 2029-01-22 |  |  |  |  |  |  |  |  |  |  |  |  |  |  |  |  |
| EAB-C2010 |  | Install UPS, network switches and field cabinets - Abqaiq |  | 8d | 2028-12-18 | 2028-12-27 | EAB-P1100 | 120d | 0d | Contract cost (BOQ x payment milestones) [56650 SAR]; Progress weight (fair EPC distribution, SAR value) [57660 SAR] | 57,660 | EWR | EAB | EWR | Standard | CON | UPSNET | ETECHS | - | - | MS5 | CON |
| EAB-C2020 |  | Cabling and termination (power, fibre, data) - Abqaiq |  | 13d | 2028-12-21 | 2029-01-08 | EAB-C2010 SS+3d, EAB-C1010 SS+28d | 120d | 0d | Contract cost (BOQ x payment milestones) [84975 SAR]; Progress weight (fair EPC distribution, SAR value) [115320 SAR] | 115,320 | EWR | EAB | EWR | Standard | CON | CCTV | ETECHS | - | - | MS5 | CON |
| EAB-C2040 |  | Install video management, video wall and control-room equipment - Abqaiq |  | 9d | 2028-12-28 | 2029-01-09 | EAB-C2010 | 129d | 9d | Contract cost (BOQ x payment milestones) [42488 SAR]; Progress weight (fair EPC distribution, SAR value) [57660 SAR] | 57,660 | EWR | EAB | EWR | Standard | CON | VMS | ETECHS | - | - | MS5 | CON |
| EAB-C2050 |  | Install access control and intercom - Abqaiq |  | 8d | 2029-01-02 | 2029-01-11 | EAB-C2010 FS+3d | 127d | 7d | Contract cost (BOQ x payment milestones) [28325 SAR]; Progress weight (fair EPC distribution, SAR value) [38440 SAR] | 38,440 | EWR | EAB | EWR | Standard | CON | ACC | ETECHS | - | - | MS5 | CON |
| EAB-C2030 |  | Install and aim CCTV cameras - Abqaiq |  | 10d | 2029-01-09 | 2029-01-22 | EAB-C2020, EAB-C1020 | 120d | 0d | Contract cost (BOQ x payment milestones) [70813 SAR]; Progress weight (fair EPC distribution, SAR value) [96100 SAR] | 96,100 | EWR | EAB | EWR | Standard | CON | CCTV | ETECHS | - | - | MS5 | CON |
|  | NHL | **Hail (NSR)** |  |  | 2028-06-15 | 2029-03-06 |  |  |  |  |  |  |  |  |  |  |  |  |  |  |  |  |
| NHL-C2100 |  | MS5 Installation complete (20%) - Hail | milestone | 0d | 2029-03-06 | 2029-03-06 | NHL-C2020, NHL-C2030, NHL-C2040, NHL-C2050, NHL-C1020 | 95d | 0d |  |  | NSR | NHL | NSR | Standard | MS | PM | ETECHS | - | - | MS5 | MS |
|  | ENA | **Enabling works** |  |  | 2028-06-15 | 2028-07-05 |  |  |  |  |  |  |  |  |  |  |  |  |  |  |  |  |
| NHL-X1010 |  | Enabling works: site preparation, setting out, temporary works and utilities clearance - Hail |  | 5d | 2028-06-15 | 2028-06-21 | NHL-E1010 SS+42d | 164d | 0d | Contract cost (BOQ x payment milestones) [8432 SAR]; Progress weight (fair EPC distribution, SAR value) [32860 SAR] | 32,860 | NSR | NHL | NSR | Standard | CON | CIVIL | ETECHS | - | - | MS5 | ENA |
| NHL-X1020 |  | Enabling works: cable routes, duct-bank and cabinet plinth preparation - Hail |  | 10d | 2028-06-22 | 2028-07-05 | NHL-X1010 | 164d | 0d | Contract cost (BOQ x payment milestones) [12648 SAR]; Progress weight (fair EPC distribution, SAR value) [48980 SAR] | 48,980 | NSR | NHL | NSR | Standard | CON | CIVIL | ETECHS | - | - | MS5 | ENA |
|  | CIV | **Civil works** |  |  | 2028-07-06 | 2028-11-01 |  |  |  |  |  |  |  |  |  |  |  |  |  |  |  |  |
| NHL-C1010 |  | Civil: platform trenches and duct banks - Hail |  | 59d | 2028-07-06 | 2028-09-26 | NHL-X1020 | 164d | 0d | Contract cost (BOQ x payment milestones) [105400 SAR]; Progress weight (fair EPC distribution, SAR value) [212040 SAR] | 212,040 | NSR | NHL | NSR | Standard | CON | CIVIL | ETECHS | - | - | MS5 | CON |
| NHL-C1020 |  | Civil: camera and ALPR pole foundations and poles - Hail |  | 47d | 2028-08-29 | 2028-11-01 | NHL-C1010 SS+38d | 164d | 69d | Contract cost (BOQ x payment milestones) [84320 SAR]; Progress weight (fair EPC distribution, SAR value) [163060 SAR] | 163,060 | NSR | NHL | NSR | Standard | CON | CIVIL | ETECHS | - | - | MS5 | CON |
|  | INS | **Installation** |  |  | 2029-01-08 | 2029-03-06 |  |  |  |  |  |  |  |  |  |  |  |  |  |  |  |  |
| NHL-C2010 |  | Install UPS, network switches and field cabinets - Hail |  | 11d | 2029-01-08 | 2029-01-22 | NHL-P1100 | 95d | 0d | Contract cost (BOQ x payment milestones) [93797 SAR]; Progress weight (fair EPC distribution, SAR value) [97960 SAR] | 97,960 | NSR | NHL | NSR | Standard | CON | UPSNET | ETECHS | - | - | MS5 | CON |
| NHL-C2020 |  | Cabling and termination (power, fibre, data) - Hail |  | 18d | 2029-01-14 | 2029-02-06 | NHL-C2010 SS+4d, NHL-C1010 SS+43d | 95d | 0d | Contract cost (BOQ x payment milestones) [140695 SAR]; Progress weight (fair EPC distribution, SAR value) [195920 SAR] | 195,920 | NSR | NHL | NSR | Standard | CON | CCTV | ETECHS | - | - | MS5 | CON |
| NHL-C2040 |  | Install video management, video wall and control-room equipment - Hail |  | 12d | 2029-01-23 | 2029-02-07 | NHL-C2010 | 108d | 13d | Contract cost (BOQ x payment milestones) [70348 SAR]; Progress weight (fair EPC distribution, SAR value) [97960 SAR] | 97,960 | NSR | NHL | NSR | Standard | CON | VMS | ETECHS | - | - | MS5 | CON |
| NHL-C2050 |  | Install access control and intercom - Hail |  | 11d | 2029-01-29 | 2029-02-19 | NHL-C2010 FS+4d | 105d | 10d | Contract cost (BOQ x payment milestones) [46898 SAR]; Progress weight (fair EPC distribution, SAR value) [65100 SAR] | 65,100 | NSR | NHL | NSR | Standard | CON | ACC | ETECHS | - | - | MS5 | CON |
| NHL-C2030 |  | Install and aim CCTV cameras - Hail |  | 14d | 2029-02-07 | 2029-03-06 | NHL-C2020, NHL-C1020 | 95d | 0d | Contract cost (BOQ x payment milestones) [117246 SAR]; Progress weight (fair EPC distribution, SAR value) [163060 SAR] | 163,060 | NSR | NHL | NSR | Standard | CON | CCTV | ETECHS | - | - | MS5 | CON |

| ID | WBS | Activity | Type | Duration | Start | Finish | Predecessors | Total float | Free float | Resources | Cost | Area | Station | Railway | Priority | EPC phase | Discipline | Responsibility | Design stage | Submittal or approval | Payment milestone | Programme phase |
| --- | --- | --- | --- | --- | --- | --- | --- | --- | --- | --- | --- | --- | --- | --- | --- | --- | --- | --- | --- | --- | --- | --- |
|  | NJF | **Al Jouf (NSR)** |  |  | 2028-08-16 | 2029-05-14 |  |  |  |  |  |  |  |  |  |  |  |  |  |  |  |  |
| NJF-C2100 |  | MS5 Installation complete (20%) - Al Jouf | milestone | 0d | 2029-05-14 | 2029-05-14 | NJF-C2020, NJF-C2030, NJF-C2040, NJF-C2050, NJF-C1020 | 51d | 0d |  |  | NSR | NJF | NSR | Standard | MS | PM | ETECHS | - | - | MS5 | MS |
|  | ENA | **Enabling works** |  |  | 2028-08-16 | 2028-09-05 |  |  |  |  |  |  |  |  |  |  |  |  |  |  |  |  |
| NJF-X1010 |  | Enabling works: site preparation, setting out, temporary works and utilities clearance - Al Jouf |  | 5d | 2028-08-16 | 2028-08-22 | NJF-E1010 SS+42d | 120d | 0d | Contract cost (BOQ x payment milestones) [8432 SAR]; Progress weight (fair EPC distribution, SAR value) [32860 SAR] | 32,860 | NSR | NJF | NSR | Standard | CON | CIVIL | ETECHS | - | - | MS5 | ENA |
| NJF-X1020 |  | Enabling works: cable routes, duct-bank and cabinet plinth preparation - Al Jouf |  | 10d | 2028-08-23 | 2028-09-05 | NJF-X1010 | 120d | 0d | Contract cost (BOQ x payment milestones) [12648 SAR]; Progress weight (fair EPC distribution, SAR value) [48980 SAR] | 48,980 | NSR | NJF | NSR | Standard | CON | CIVIL | ETECHS | - | - | MS5 | ENA |
|  | CIV | **Civil works** |  |  | 2028-09-06 | 2029-01-02 |  |  |  |  |  |  |  |  |  |  |  |  |  |  |  |  |
| NJF-C1010 |  | Civil: platform trenches and duct banks - Al Jouf |  | 59d | 2028-09-06 | 2028-11-27 | NJF-X1020 | 120d | 0d | Contract cost (BOQ x payment milestones) [105400 SAR]; Progress weight (fair EPC distribution, SAR value) [213280 SAR] | 213,280 | NSR | NJF | NSR | Standard | CON | CIVIL | ETECHS | - | - | MS5 | CON |
| NJF-C1020 |  | Civil: camera and ALPR pole foundations and poles - Al Jouf |  | 47d | 2028-10-30 | 2029-01-02 | NJF-C1010 SS+38d | 120d | 69d | Contract cost (BOQ x payment milestones) [84320 SAR]; Progress weight (fair EPC distribution, SAR value) [164300 SAR] | 164,300 | NSR | NJF | NSR | Standard | CON | CIVIL | ETECHS | - | - | MS5 | CON |
|  | INS | **Installation** |  |  | 2029-03-19 | 2029-05-14 |  |  |  |  |  |  |  |  |  |  |  |  |  |  |  |  |
| NJF-C2010 |  | Install UPS, network switches and field cabinets - Al Jouf |  | 11d | 2029-03-19 | 2029-04-02 | NJF-P1100 | 51d | 0d | Contract cost (BOQ x payment milestones) [94754 SAR]; Progress weight (fair EPC distribution, SAR value) [98580 SAR] | 98,580 | NSR | NJF | NSR | Standard | CON | UPSNET | ETECHS | - | - | MS5 | CON |
| NJF-C2020 |  | Cabling and termination (power, fibre, data) - Al Jouf |  | 18d | 2029-03-25 | 2029-04-17 | NJF-C2010 SS+4d, NJF-C1010 SS+43d | 51d | 0d | Contract cost (BOQ x payment milestones) [142131 SAR]; Progress weight (fair EPC distribution, SAR value) [197160 SAR] | 197,160 | NSR | NJF | NSR | Standard | CON | CCTV | ETECHS | - | - | MS5 | CON |
| NJF-C2040 |  | Install video management, video wall and control-room equipment - Al Jouf |  | 12d | 2029-04-03 | 2029-04-18 | NJF-C2010 | 64d | 13d | Contract cost (BOQ x payment milestones) [71065 SAR]; Progress weight (fair EPC distribution, SAR value) [98580 SAR] | 98,580 | NSR | NJF | NSR | Standard | CON | VMS | ETECHS | - | - | MS5 | CON |
| NJF-C2050 |  | Install access control and intercom - Al Jouf |  | 11d | 2029-04-09 | 2029-04-30 | NJF-C2010 FS+4d | 61d | 10d | Contract cost (BOQ x payment milestones) [47377 SAR]; Progress weight (fair EPC distribution, SAR value) [65720 SAR] | 65,720 | NSR | NJF | NSR | Standard | CON | ACC | ETECHS | - | - | MS5 | CON |
| NJF-C2030 |  | Install and aim CCTV cameras - Al Jouf |  | 14d | 2029-04-18 | 2029-05-14 | NJF-C2020, NJF-C1020 | 51d | 0d | Contract cost (BOQ x payment milestones) [118442 SAR]; Progress weight (fair EPC distribution, SAR value) [164300 SAR] | 164,300 | NSR | NJF | NSR | Standard | CON | CCTV | ETECHS | - | - | MS5 | CON |
|  | NQR | **Al Qurayyat (NSR)** |  |  | 2028-09-27 | 2029-06-25 |  |  |  |  |  |  |  |  |  |  |  |  |  |  |  |  |
| NQR-C2100 |  | MS5 Installation complete (20%) - Al Qurayyat | milestone | 0d | 2029-06-25 | 2029-06-25 | NQR-C2020, NQR-C2030, NQR-C2040, NQR-C2050, NQR-C1020 | 21d | 0d |  |  | NSR | NQR | NSR | Standard | MS | PM | ETECHS | - | - | MS5 | MS |
|  | ENA | **Enabling works** |  |  | 2028-09-27 | 2028-10-17 |  |  |  |  |  |  |  |  |  |  |  |  |  |  |  |  |
| NQR-X1010 |  | Enabling works: site preparation, setting out, temporary works and utilities clearance - Al Qurayyat |  | 5d | 2028-09-27 | 2028-10-03 | NQR-E1010 SS+42d | 90d | 0d | Contract cost (BOQ x payment milestones) [8432 SAR]; Progress weight (fair EPC distribution, SAR value) [32860 SAR] | 32,860 | NSR | NQR | NSR | Standard | CON | CIVIL | ETECHS | - | - | MS5 | ENA |
| NQR-X1020 |  | Enabling works: cable routes, duct-bank and cabinet plinth preparation - Al Qurayyat |  | 10d | 2028-10-04 | 2028-10-17 | NQR-X1010 | 90d | 0d | Contract cost (BOQ x payment milestones) [12648 SAR]; Progress weight (fair EPC distribution, SAR value) [48980 SAR] | 48,980 | NSR | NQR | NSR | Standard | CON | CIVIL | ETECHS | - | - | MS5 | ENA |
|  | CIV | **Civil works** |  |  | 2028-10-18 | 2029-02-20 |  |  |  |  |  |  |  |  |  |  |  |  |  |  |  |  |
| NQR-C1010 |  | Civil: platform trenches and duct banks - Al Qurayyat |  | 59d | 2028-10-18 | 2029-01-08 | NQR-X1020 | 90d | 0d | Contract cost (BOQ x payment milestones) [105400 SAR]; Progress weight (fair EPC distribution, SAR value) [212040 SAR] | 212,040 | NSR | NQR | NSR | Standard | CON | CIVIL | ETECHS | - | - | MS5 | CON |
| NQR-C1020 |  | Civil: camera and ALPR pole foundations and poles - Al Qurayyat |  | 47d | 2028-12-11 | 2029-02-20 | NQR-C1010 SS+38d | 90d | 69d | Contract cost (BOQ x payment milestones) [84320 SAR]; Progress weight (fair EPC distribution, SAR value) [163060 SAR] | 163,060 | NSR | NQR | NSR | Standard | CON | CIVIL | ETECHS | - | - | MS5 | CON |
|  | INS | **Installation** |  |  | 2029-05-07 | 2029-06-25 |  |  |  |  |  |  |  |  |  |  |  |  |  |  |  |  |
| NQR-C2010 |  | Install UPS, network switches and field cabinets - Al Qurayyat |  | 11d | 2029-05-07 | 2029-05-21 | NQR-P1100 | 21d | 0d | Contract cost (BOQ x payment milestones) [93797 SAR]; Progress weight (fair EPC distribution, SAR value) [97960 SAR] | 97,960 | NSR | NQR | NSR | Standard | CON | UPSNET | ETECHS | - | - | MS5 | CON |
| NQR-C2020 |  | Cabling and termination (power, fibre, data) - Al Qurayyat |  | 18d | 2029-05-13 | 2029-06-05 | NQR-C2010 SS+4d, NQR-C1010 SS+43d | 21d | 0d | Contract cost (BOQ x payment milestones) [140695 SAR]; Progress weight (fair EPC distribution, SAR value) [195920 SAR] | 195,920 | NSR | NQR | NSR | Standard | CON | CCTV | ETECHS | - | - | MS5 | CON |
| NQR-C2040 |  | Install video management, video wall and control-room equipment - Al Qurayyat |  | 12d | 2029-05-22 | 2029-06-06 | NQR-C2010 | 34d | 13d | Contract cost (BOQ x payment milestones) [70348 SAR]; Progress weight (fair EPC distribution, SAR value) [97960 SAR] | 97,960 | NSR | NQR | NSR | Standard | CON | VMS | ETECHS | - | - | MS5 | CON |
| NQR-C2050 |  | Install access control and intercom - Al Qurayyat |  | 11d | 2029-05-28 | 2029-06-11 | NQR-C2010 FS+4d | 31d | 10d | Contract cost (BOQ x payment milestones) [46898 SAR]; Progress weight (fair EPC distribution, SAR value) [65100 SAR] | 65,100 | NSR | NQR | NSR | Standard | CON | ACC | ETECHS | - | - | MS5 | CON |
| NQR-C2030 |  | Install and aim CCTV cameras - Al Qurayyat |  | 14d | 2029-06-06 | 2029-06-25 | NQR-C2020, NQR-C1020 | 21d | 0d | Contract cost (BOQ x payment milestones) [117246 SAR]; Progress weight (fair EPC distribution, SAR value) [163060 SAR] | 163,060 | NSR | NQR | NSR | Standard | CON | CCTV | ETECHS | - | - | MS5 | CON |

| ID | WBS | Activity | Type | Duration | Start | Finish | Predecessors | Total float | Free float | Resources | Cost | Area | Station | Railway | Priority | EPC phase | Discipline | Responsibility | Design stage | Submittal or approval | Payment milestone | Programme phase |
| --- | --- | --- | --- | --- | --- | --- | --- | --- | --- | --- | --- | --- | --- | --- | --- | --- | --- | --- | --- | --- | --- | --- |
|  | COM | **Commissioning and Handover** |  |  | 2027-11-08 | 2029-09-17 |  |  |  |  |  |  |  |  |  |  |  |  |  |  |  |  |
|  | NRY | **Riyadh (Thumamah) (NSR)** |  |  | 2027-11-16 | 2028-02-07 |  |  |  |  |  |  |  |  |  |  |  |  |  |  |  |  |
| NRY-T1100 |  | MS6 SAT complete (10%) - Riyadh (Thumamah) | milestone | 0d | 2027-12-15 | 2027-12-15 | NRY-T1020, NRY-T1130 | 443d | 23d |  |  | NSR | NRY | NSR | Priority 1 | MS | TC | SAR | - | - | MS6 | MS |
| NRY-T1130 |  | Mock-up approved - roll-out to other stations - Riyadh (Thumamah) | milestone | 0d | 2027-12-15 | 2027-12-15 | NRY-T1030 | 443d | 0d |  |  | NSR | NRY | NSR | Priority 1 | MS | TC | SAR | - | - | - | MS |
| NRY-T3100 |  | MS7 Station accepted - final acceptance and handover (10%) - Riyadh (Thumamah) | milestone | 0d | 2028-02-07 | 2028-02-07 | NRY-T3010 | 420d | 399d |  |  | NSR | NRY | NSR | Priority 1 | MS | TC | SAR | - | - | MS7 | MS |
|  | TST | **Testing and commissioning** |  |  | 2027-11-16 | 2027-12-06 |  |  |  |  |  |  |  |  |  |  |  |  |  |  |  |  |
| NRY-T1010 |  | Pre-commissioning and loop checks - Riyadh (Thumamah) |  | 6d | 2027-11-16 | 2027-11-23 | NRY-C2100 | 420d | 0d | Contract cost (BOQ x payment milestones) [135054 SAR]; Progress weight (fair EPC distribution, SAR value) [100440 SAR] | 100,440 | NSR | NRY | NSR | Priority 1 | COM | TC | ETECHS | - | - | MS6 | COM |
| NRY-T1020 |  | Site acceptance test (SAT) and commissioning - Riyadh (Thumamah) |  | 9d | 2027-11-24 | 2027-12-06 | NRY-T1010 | 420d | 0d | Contract cost (BOQ x payment milestones) [202582 SAR]; Progress weight (fair EPC distribution, SAR value) [117180 SAR] | 117,180 | NSR | NRY | NSR | Priority 1 | COM | TC | ETECHS | - | - | MS6 | COM |
|  | TRN | **Training** |  |  | 2027-12-07 | 2027-12-20 |  |  |  |  |  |  |  |  |  |  |  |  |  |  |  |  |
| NRY-T2010 |  | Operator and maintenance training - Riyadh (Thumamah) |  | 10d | 2027-12-07 | 2027-12-20 | NRY-T1020 | 440d | 20d | Contract cost (BOQ x payment milestones) [52212 SAR]; Progress weight (fair EPC distribution, SAR value) [66960 SAR] | 66,960 | NSR | NRY | NSR | Priority 1 | COM | TC | ETECHS | - | - | MS7 | COM |
|  | TOA | **Trial operation and acceptance** |  |  | 2027-12-07 | 2028-02-07 |  |  |  |  |  |  |  |  |  |  |  |  |  |  |  |  |
| NRY-T2020 |  | Trial operation (maximum 45 days) - Riyadh (Thumamah) |  | 30d | 2027-12-07 | 2028-01-17 | NRY-T1020 | 420d | 0d | Contract cost (BOQ x payment milestones) [121828 SAR]; Progress weight (fair EPC distribution, SAR value) [100440 SAR] | 100,440 | NSR | NRY | NSR | Priority 1 | COM | TC | SAR | - | - | MS7 | COM |
| NRY-T3010 |  | Taking-over application, SAR review and handover - Riyadh (Thumamah) |  | 15d | 2028-01-18 | 2028-02-07 | NRY-T1100, NRY-T2010, NRY-T2020, NRY-E1140, NRY-T1130 | 420d | 0d | Contract cost (BOQ x payment milestones) [104424 SAR]; Progress weight (fair EPC distribution, SAR value) [100440 SAR] | 100,440 | NSR | NRY | NSR | Priority 1 | COM | TC | SAR | - | - | MS7 | COM |
|  | MOK | **Mock-up approval** |  |  | 2027-11-16 | 2027-12-15 |  |  |  |  |  |  |  |  |  |  |  |  |  |  |  |  |
| NRY-T1030 |  | Mock-up approval: site visit and SAR approval of the executed works (roll-out to other stations) - Riyadh (Thumamah) |  | 22d | 2027-11-16 | 2027-12-15 | NRY-C2100 | 443d | 0d | Contract cost (BOQ x payment milestones) [10442 SAR]; Progress weight (fair EPC distribution, SAR value) [16740 SAR] | 16,740 | NSR | NRY | NSR | Priority 1 | COM | TC | SAR | - | Approval | MS6 | COM |
|  | HMK | **Makkah (HHR)** |  |  | 2028-04-25 | 2028-08-07 |  |  |  |  |  |  |  |  |  |  |  |  |  |  |  |  |
| HMK-T1100 |  | MS6 SAT complete (10%) - Makkah | milestone | 0d | 2028-06-05 | 2028-06-05 | HMK-T1020 | 330d | 30d |  |  | HHR | HMK | HHR | Priority 1 | MS | TC | SAR | - | - | MS6 | MS |
| HMK-T3100 |  | MS7 Station accepted - final acceptance and handover (10%) - Makkah | milestone | 0d | 2028-08-07 | 2028-08-07 | HMK-T3010 | 300d | 279d |  |  | HHR | HMK | HHR | Priority 1 | MS | TC | SAR | - | - | MS7 | MS |
|  | TST | **Testing and commissioning** |  |  | 2028-04-25 | 2028-06-05 |  |  |  |  |  |  |  |  |  |  |  |  |  |  |  |  |
| HMK-T1010 |  | Pre-commissioning and loop checks - Makkah |  | 10d | 2028-04-25 | 2028-05-15 | HMK-C2100 | 300d | 0d | Contract cost (BOQ x payment milestones) [388404 SAR]; Progress weight (fair EPC distribution, SAR value) [279620 SAR] | 279,620 | HHR | HMK | HHR | Priority 1 | COM | TC | ETECHS | - | - | MS6 | COM |
| HMK-T1020 |  | Site acceptance test (SAT) and commissioning - Makkah |  | 15d | 2028-05-16 | 2028-06-05 | HMK-T1010 | 300d | 0d | Contract cost (BOQ x payment milestones) [582605 SAR]; Progress weight (fair EPC distribution, SAR value) [372620 SAR] | 372,620 | HHR | HMK | HHR | Priority 1 | COM | TC | ETECHS | - | - | MS6 | COM |
|  | TRN | **Training** |  |  | 2028-06-06 | 2028-06-19 |  |  |  |  |  |  |  |  |  |  |  |  |  |  |  |  |
| HMK-T2010 |  | Operator and maintenance training - Makkah |  | 10d | 2028-06-06 | 2028-06-19 | HMK-T1020 | 320d | 20d | Contract cost (BOQ x payment milestones) [145651 SAR]; Progress weight (fair EPC distribution, SAR value) [186620 SAR] | 186,620 | HHR | HMK | HHR | Priority 1 | COM | TC | ETECHS | - | - | MS7 | COM |
|  | TOA | **Trial operation and acceptance** |  |  | 2028-06-06 | 2028-08-07 |  |  |  |  |  |  |  |  |  |  |  |  |  |  |  |  |
| HMK-T2020 |  | Trial operation (maximum 45 days) - Makkah |  | 30d | 2028-06-06 | 2028-07-17 | HMK-T1020 | 300d | 0d | Contract cost (BOQ x payment milestones) [339853 SAR]; Progress weight (fair EPC distribution, SAR value) [279620 SAR] | 279,620 | HHR | HMK | HHR | Priority 1 | COM | TC | SAR | - | - | MS7 | COM |
| HMK-T3010 |  | Taking-over application, SAR review and handover - Makkah |  | 15d | 2028-07-18 | 2028-08-07 | HMK-T1100, HMK-T2010, HMK-T2020, HMK-E1140 | 300d | 0d | Contract cost (BOQ x payment milestones) [291303 SAR]; Progress weight (fair EPC distribution, SAR value) [279620 SAR] | 279,620 | HHR | HMK | HHR | Priority 1 | COM | TC | SAR | - | - | MS7 | COM |

| ID | WBS | Activity | Type | Duration | Start | Finish | Predecessors | Total float | Free float | Resources | Cost | Area | Station | Railway | Priority | EPC phase | Discipline | Responsibility | Design stage | Submittal or approval | Payment milestone | Programme phase |
| --- | --- | --- | --- | --- | --- | --- | --- | --- | --- | --- | --- | --- | --- | --- | --- | --- | --- | --- | --- | --- | --- | --- |
|  | ERY | **Riyadh (Malaz) (EWR)** |  |  | 2027-11-08 | 2028-01-30 |  |  |  |  |  |  |  |  |  |  |  |  |  |  |  |  |
| ERY-T1100 |  | MS6 SAT complete (10%) - Riyadh (Malaz) | milestone | 0d | 2027-11-28 | 2027-11-28 | ERY-T1020 | 456d | 30d |  |  | EWR | ERY | EWR | Priority 2 | MS | TC | SAR | - | - | MS6 | MS |
| ERY-T3100 |  | MS7 Station accepted - final acceptance and handover (10%) - Riyadh (Malaz) | milestone | 0d | 2028-01-30 | 2028-01-30 | ERY-T3010 | 426d | 405d |  |  | EWR | ERY | EWR | Priority 2 | MS | TC | SAR | - | - | MS7 | MS |
|  | TST | **Testing and commissioning** |  |  | 2027-11-08 | 2027-11-28 |  |  |  |  |  |  |  |  |  |  |  |  |  |  |  |  |
| ERY-T1010 |  | Pre-commissioning and loop checks - Riyadh (Malaz) |  | 6d | 2027-11-08 | 2027-11-15 | ERY-C2100 | 426d | 0d | Contract cost (BOQ x payment milestones) [123661 SAR]; Progress weight (fair EPC distribution, SAR value) [89280 SAR] | 89,280 | EWR | ERY | EWR | Priority 2 | COM | TC | ETECHS | - | - | MS6 | COM |
| ERY-T1020 |  | Site acceptance test (SAT) and commissioning - Riyadh (Malaz) |  | 9d | 2027-11-16 | 2027-11-28 | ERY-T1010 | 426d | 0d | Contract cost (BOQ x payment milestones) [185491 SAR]; Progress weight (fair EPC distribution, SAR value) [118420 SAR] | 118,420 | EWR | ERY | EWR | Priority 2 | COM | TC | ETECHS | - | - | MS6 | COM |
|  | TRN | **Training** |  |  | 2027-11-29 | 2027-12-12 |  |  |  |  |  |  |  |  |  |  |  |  |  |  |  |  |
| ERY-T2010 |  | Operator and maintenance training - Riyadh (Malaz) |  | 10d | 2027-11-29 | 2027-12-12 | ERY-T1020 | 446d | 20d | Contract cost (BOQ x payment milestones) [46373 SAR]; Progress weight (fair EPC distribution, SAR value) [59520 SAR] | 59,520 | EWR | ERY | EWR | Priority 2 | COM | TC | ETECHS | - | - | MS7 | COM |
|  | TOA | **Trial operation and acceptance** |  |  | 2027-11-29 | 2028-01-30 |  |  |  |  |  |  |  |  |  |  |  |  |  |  |  |  |
| ERY-T2020 |  | Trial operation (maximum 45 days) - Riyadh (Malaz) |  | 30d | 2027-11-29 | 2028-01-09 | ERY-T1020 | 426d | 0d | Contract cost (BOQ x payment milestones) [108203 SAR]; Progress weight (fair EPC distribution, SAR value) [89280 SAR] | 89,280 | EWR | ERY | EWR | Priority 2 | COM | TC | SAR | - | - | MS7 | COM |
| ERY-T3010 |  | Taking-over application, SAR review and handover - Riyadh (Malaz) |  | 15d | 2028-01-10 | 2028-01-30 | ERY-T1100, ERY-T2010, ERY-T2020, ERY-E1140 | 426d | 0d | Contract cost (BOQ x payment milestones) [92746 SAR]; Progress weight (fair EPC distribution, SAR value) [89280 SAR] | 89,280 | EWR | ERY | EWR | Priority 2 | COM | TC | SAR | - | - | MS7 | COM |
|  | HJD | **Jeddah (HHR)** |  |  | 2028-08-21 | 2028-11-26 |  |  |  |  |  |  |  |  |  |  |  |  |  |  |  |  |
| HJD-T1100 |  | MS6 SAT complete (10%) - Jeddah | milestone | 0d | 2028-09-24 | 2028-09-24 | HJD-T1020 | 251d | 30d |  |  | HHR | HJD | HHR | Standard | MS | TC | SAR | - | - | MS6 | MS |
| HJD-T3100 |  | MS7 Station accepted - final acceptance and handover (10%) - Jeddah | milestone | 0d | 2028-11-26 | 2028-11-26 | HJD-T3010 | 221d | 200d |  |  | HHR | HJD | HHR | Standard | MS | TC | SAR | - | - | MS7 | MS |
|  | TST | **Testing and commissioning** |  |  | 2028-08-21 | 2028-09-24 |  |  |  |  |  |  |  |  |  |  |  |  |  |  |  |  |
| HJD-T1010 |  | Pre-commissioning and loop checks - Jeddah |  | 10d | 2028-08-21 | 2028-09-03 | HJD-C2100 | 221d | 0d | Contract cost (BOQ x payment milestones) [382035 SAR]; Progress weight (fair EPC distribution, SAR value) [275280 SAR] | 275,280 | HHR | HJD | HHR | Standard | COM | TC | ETECHS | - | - | MS6 | COM |
| HJD-T1020 |  | Site acceptance test (SAT) and commissioning - Jeddah |  | 15d | 2028-09-04 | 2028-09-24 | HJD-T1010 | 221d | 0d | Contract cost (BOQ x payment milestones) [573053 SAR]; Progress weight (fair EPC distribution, SAR value) [367040 SAR] | 367,040 | HHR | HJD | HHR | Standard | COM | TC | ETECHS | - | - | MS6 | COM |
|  | TRN | **Training** |  |  | 2028-09-25 | 2028-10-08 |  |  |  |  |  |  |  |  |  |  |  |  |  |  |  |  |
| HJD-T2010 |  | Operator and maintenance training - Jeddah |  | 10d | 2028-09-25 | 2028-10-08 | HJD-T1020 | 241d | 20d | Contract cost (BOQ x payment milestones) [143263 SAR]; Progress weight (fair EPC distribution, SAR value) [183520 SAR] | 183,520 | HHR | HJD | HHR | Standard | COM | TC | ETECHS | - | - | MS7 | COM |
|  | TOA | **Trial operation and acceptance** |  |  | 2028-09-25 | 2028-11-26 |  |  |  |  |  |  |  |  |  |  |  |  |  |  |  |  |
| HJD-T2020 |  | Trial operation (maximum 45 days) - Jeddah |  | 30d | 2028-09-25 | 2028-11-05 | HJD-T1020 | 221d | 0d | Contract cost (BOQ x payment milestones) [334281 SAR]; Progress weight (fair EPC distribution, SAR value) [275280 SAR] | 275,280 | HHR | HJD | HHR | Standard | COM | TC | SAR | - | - | MS7 | COM |
| HJD-T3010 |  | Taking-over application, SAR review and handover - Jeddah |  | 15d | 2028-11-06 | 2028-11-26 | HJD-T1100, HJD-T2010, HJD-T2020, HJD-E1140 | 221d | 0d | Contract cost (BOQ x payment milestones) [286526 SAR]; Progress weight (fair EPC distribution, SAR value) [275280 SAR] | 275,280 | HHR | HJD | HHR | Standard | COM | TC | SAR | - | - | MS7 | COM |
|  | EDM | **Dammam (EWR)** |  |  | 2028-06-08 | 2028-08-30 |  |  |  |  |  |  |  |  |  |  |  |  |  |  |  |  |
| EDM-T1100 |  | MS6 SAT complete (10%) - Dammam | milestone | 0d | 2028-06-28 | 2028-06-28 | EDM-T1020 | 313d | 30d |  |  | EWR | EDM | EWR | Standard | MS | TC | SAR | - | - | MS6 | MS |
| EDM-T3100 |  | MS7 Station accepted - final acceptance and handover (10%) - Dammam | milestone | 0d | 2028-08-30 | 2028-08-30 | EDM-T3010 | 283d | 262d |  |  | EWR | EDM | EWR | Standard | MS | TC | SAR | - | - | MS7 | MS |

| ID | WBS | Activity | Type | Duration | Start | Finish | Predecessors | Total float | Free float | Resources | Cost | Area | Station | Railway | Priority | Discipline | Responsibility | EPC phase | Design stage | Submittal or approval | Programme phase | Payment milestone |
| --- | --- | --- | --- | --- | --- | --- | --- | --- | --- | --- | --- | --- | --- | --- | --- | --- | --- | --- | --- | --- | --- | --- |
|  | TST | **Testing and commissioning** |  |  | 2028-06-08 | 2028-06-28 |  |  |  |  |  |  |  |  |  |  |  |  |  |  |  |  |
| EDM-T1010 |  | Pre-commissioning and loop checks - Dammam |  | 6d | 2028-06-08 | 2028-06-15 | EDM-C2100 | 283d | 0d | Contract cost (BOQ x payment milestones) [127500 SAR]; Progress weight (fair EPC distribution, SAR value) [91760 SAR] | 91,760 | EWR | EDM | EWR | Standard | TC | ETECHS | COM | - | - | COM | MS6 |
| EDM-T1020 |  | Site acceptance test (SAT) and commissioning - Dammam |  | 9d | 2028-06-18 | 2028-06-28 | EDM-T1010 | 283d | 0d | Contract cost (BOQ x payment milestones) [191251 SAR]; Progress weight (fair EPC distribution, SAR value) [122140 SAR] | 122,140 | EWR | EDM | EWR | Standard | TC | ETECHS | COM | - | - | COM | MS6 |
|  | TRN | **Training** |  |  | 2028-06-29 | 2028-07-12 |  |  |  |  |  |  |  |  |  |  |  |  |  |  |  |  |
| EDM-T2010 |  | Operator and maintenance training - Dammam |  | 10d | 2028-06-29 | 2028-07-12 | EDM-T1020 | 303d | 20d | Contract cost (BOQ x payment milestones) [47813 SAR]; Progress weight (fair EPC distribution, SAR value) [61380 SAR] | 61,380 | EWR | EDM | EWR | Standard | TC | ETECHS | COM | - | - | COM | MS7 |
|  | TOA | **Trial operation and acceptance** |  |  | 2028-06-29 | 2028-08-30 |  |  |  |  |  |  |  |  |  |  |  |  |  |  |  |  |
| EDM-T2020 |  | Trial operation (maximum 45 days) - Dammam |  | 30d | 2028-06-29 | 2028-08-09 | EDM-T1020 | 283d | 0d | Contract cost (BOQ x payment milestones) [111563 SAR]; Progress weight (fair EPC distribution, SAR value) [91760 SAR] | 91,760 | EWR | EDM | EWR | Standard | TC | SAR | COM | - | - | COM | MS7 |
| EDM-T3010 |  | Taking-over application, SAR review and handover - Dammam |  | 15d | 2028-08-10 | 2028-08-30 | EDM-T1100, EDM-T2010, EDM-T2020, EDM-E1140 | 283d | 0d | Contract cost (BOQ x payment milestones) [95625 SAR]; Progress weight (fair EPC distribution, SAR value) [91760 SAR] | 91,760 | EWR | EDM | EWR | Standard | TC | SAR | COM | - | - | COM | MS7 |
|  | NQS | **Al Qassim (NSR)** |  |  | 2028-08-03 | 2028-10-25 |  |  |  |  |  |  |  |  |  |  |  |  |  |  |  |  |
| NQS-T1100 |  | MS6 SAT complete (10%) - Al Qassim | milestone | 0d | 2028-08-23 | 2028-08-23 | NQS-T1020 | 273d | 30d |  |  | NSR | NQS | NSR | Standard | TC | SAR | MS | - | - | MS | MS6 |
| NQS-T3100 |  | MS7 Station accepted - final acceptance and handover (10%) - Al Qassim | milestone | 0d | 2028-10-25 | 2028-10-25 | NQS-T3010 | 243d | 222d |  |  | NSR | NQS | NSR | Standard | TC | SAR | MS | - | - | MS | MS7 |
|  | TST | **Testing and commissioning** |  |  | 2028-08-03 | 2028-08-23 |  |  |  |  |  |  |  |  |  |  |  |  |  |  |  |  |
| NQS-T1010 |  | Pre-commissioning and loop checks - Al Qassim |  | 6d | 2028-08-03 | 2028-08-10 | NQS-C2100 | 243d | 0d | Contract cost (BOQ x payment milestones) [135957 SAR]; Progress weight (fair EPC distribution, SAR value) [97960 SAR] | 97,960 | NSR | NQS | NSR | Standard | TC | ETECHS | COM | - | - | COM | MS6 |
| NQS-T1020 |  | Site acceptance test (SAT) and commissioning - Al Qassim |  | 9d | 2028-08-13 | 2028-08-23 | NQS-T1010 | 243d | 0d | Contract cost (BOQ x payment milestones) [203935 SAR]; Progress weight (fair EPC distribution, SAR value) [130820 SAR] | 130,820 | NSR | NQS | NSR | Standard | TC | ETECHS | COM | - | - | COM | MS6 |
|  | TRN | **Training** |  |  | 2028-08-24 | 2028-09-06 |  |  |  |  |  |  |  |  |  |  |  |  |  |  |  |  |
| NQS-T2010 |  | Operator and maintenance training - Al Qassim |  | 10d | 2028-08-24 | 2028-09-06 | NQS-T1020 | 263d | 20d | Contract cost (BOQ x payment milestones) [50984 SAR]; Progress weight (fair EPC distribution, SAR value) [65100 SAR] | 65,100 | NSR | NQS | NSR | Standard | TC | ETECHS | COM | - | - | COM | MS7 |
|  | TOA | **Trial operation and acceptance** |  |  | 2028-08-24 | 2028-10-25 |  |  |  |  |  |  |  |  |  |  |  |  |  |  |  |  |
| NQS-T2020 |  | Trial operation (maximum 45 days) - Al Qassim |  | 30d | 2028-08-24 | 2028-10-04 | NQS-T1020 | 243d | 0d | Contract cost (BOQ x payment milestones) [118962 SAR]; Progress weight (fair EPC distribution, SAR value) [97960 SAR] | 97,960 | NSR | NQS | NSR | Standard | TC | SAR | COM | - | - | COM | MS7 |
| NQS-T3010 |  | Taking-over application, SAR review and handover - Al Qassim |  | 15d | 2028-10-05 | 2028-10-25 | NQS-T1100, NQS-T2010, NQS-T2020, NQS-E1140 | 243d | 0d | Contract cost (BOQ x payment milestones) [101967 SAR]; Progress weight (fair EPC distribution, SAR value) [97960 SAR] | 97,960 | NSR | NQS | NSR | Standard | TC | SAR | COM | - | - | COM | MS7 |
|  | EHF | **Hufuf (EWR)** |  |  | 2028-07-26 | 2028-10-17 |  |  |  |  |  |  |  |  |  |  |  |  |  |  |  |  |
| EHF-T1100 |  | MS6 SAT complete (10%) - Hufuf | milestone | 0d | 2028-08-15 | 2028-08-15 | EHF-T1020 | 279d | 30d |  |  | EWR | EHF | EWR | Standard | TC | SAR | MS | - | - | MS | MS6 |
| EHF-T3100 |  | MS7 Station accepted - final acceptance and handover (10%) - Hufuf | milestone | 0d | 2028-10-17 | 2028-10-17 | EHF-T3010 | 249d | 228d |  |  | EWR | EHF | EWR | Standard | TC | SAR | MS | - | - | MS | MS7 |
|  | TST | **Testing and commissioning** |  |  | 2028-07-26 | 2028-08-15 |  |  |  |  |  |  |  |  |  |  |  |  |  |  |  |  |
| EHF-T1010 |  | Pre-commissioning and loop checks - Hufuf |  | 6d | 2028-07-26 | 2028-08-02 | EHF-C2100 | 249d | 0d | Contract cost (BOQ x payment milestones) [113140 SAR]; Progress weight (fair EPC distribution, SAR value) [81220 SAR] | 81,220 | EWR | EHF | EWR | Standard | TC | ETECHS | COM | - | - | COM | MS6 |
| EHF-T1020 |  | Site acceptance test (SAT) and commissioning - Hufuf |  | 9d | 2028-08-03 | 2028-08-15 | EHF-T1010 | 249d | 0d | Contract cost (BOQ x payment milestones) [169710 SAR]; Progress weight (fair EPC distribution, SAR value) [108500 SAR] | 108,500 | EWR | EHF | EWR | Standard | TC | ETECHS | COM | - | - | COM | MS6 |

| ID | WBS | Activity | Type | Duration | Start | Finish | Predecessors | Total float | Free float | Resources | Cost | Area | Station | Railway | Priority | Discipline | Responsibility | EPC phase | Design stage | Submittal or approval | Programme phase | Payment milestone |
| --- | --- | --- | --- | --- | --- | --- | --- | --- | --- | --- | --- | --- | --- | --- | --- | --- | --- | --- | --- | --- | --- | --- |
|  | TRN | **Training** |  |  | 2028-08-16 | 2028-08-29 |  |  |  |  |  |  |  |  |  |  |  |  |  |  |  |  |
| EHF-T2010 |  | Operator and maintenance training - Hufuf |  | 10d | 2028-08-16 | 2028-08-29 | EHF-T1020 | 269d | 20d | Contract cost (BOQ x payment milestones) [42428 SAR]; Progress weight (fair EPC distribution, SAR value) [54560 SAR] | 54,560 | EWR | EHF | EWR | Standard | TC | ETECHS | COM | - | - | COM | MS7 |
|  | TOA | **Trial operation and acceptance** |  |  | 2028-08-16 | 2028-10-17 |  |  |  |  |  |  |  |  |  |  |  |  |  |  |  |  |
| EHF-T2020 |  | Trial operation (maximum 45 days) - Hufuf |  | 30d | 2028-08-16 | 2028-09-26 | EHF-T1020 | 249d | 0d | Contract cost (BOQ x payment milestones) [98998 SAR]; Progress weight (fair EPC distribution, SAR value) [81220 SAR] | 81,220 | EWR | EHF | EWR | Standard | TC | SAR | COM | - | - | COM | MS7 |
| EHF-T3010 |  | Taking-over application, SAR review and handover - Hufuf |  | 15d | 2028-09-27 | 2028-10-17 | EHF-T1100, EHF-T2010, EHF-T2020, EHF-E1140 | 249d | 0d | Contract cost (BOQ x payment milestones) [84855 SAR]; Progress weight (fair EPC distribution, SAR value) [81220 SAR] | 81,220 | EWR | EHF | EWR | Standard | TC | SAR | COM | - | - | COM | MS7 |
|  | NMJ | **Al Majma'ah (NSR)** |  |  | 2028-09-13 | 2028-12-05 |  |  |  |  |  |  |  |  |  |  |  |  |  |  |  |  |
| NMJ-T1100 |  | MS6 SAT complete (10%) - Al Majma'ah | milestone | 0d | 2028-10-03 | 2028-10-03 | NMJ-T1020 | 244d | 30d |  |  | NSR | NMJ | NSR | Standard | TC | SAR | MS | - | - | MS | MS6 |
| NMJ-T3100 |  | MS7 Station accepted - final acceptance and handover (10%) - Al Majma'ah | milestone | 0d | 2028-12-05 | 2028-12-05 | NMJ-T3010 | 214d | 193d |  |  | NSR | NMJ | NSR | Standard | TC | SAR | MS | - | - | MS | MS7 |
|  | TST | **Testing and commissioning** |  |  | 2028-09-13 | 2028-10-03 |  |  |  |  |  |  |  |  |  |  |  |  |  |  |  |  |
| NMJ-T1010 |  | Pre-commissioning and loop checks - Al Majma'ah |  | 6d | 2028-09-13 | 2028-09-20 | NMJ-C2100 | 214d | 0d | Contract cost (BOQ x payment milestones) [135957 SAR]; Progress weight (fair EPC distribution, SAR value) [97960 SAR] | 97,960 | NSR | NMJ | NSR | Standard | TC | ETECHS | COM | - | - | COM | MS6 |
| NMJ-T1020 |  | Site acceptance test (SAT) and commissioning - Al Majma'ah |  | 9d | 2028-09-21 | 2028-10-03 | NMJ-T1010 | 214d | 0d | Contract cost (BOQ x payment milestones) [203935 SAR]; Progress weight (fair EPC distribution, SAR value) [130820 SAR] | 130,820 | NSR | NMJ | NSR | Standard | TC | ETECHS | COM | - | - | COM | MS6 |
|  | TRN | **Training** |  |  | 2028-10-04 | 2028-10-17 |  |  |  |  |  |  |  |  |  |  |  |  |  |  |  |  |
| NMJ-T2010 |  | Operator and maintenance training - Al Majma'ah |  | 10d | 2028-10-04 | 2028-10-17 | NMJ-T1020 | 234d | 20d | Contract cost (BOQ x payment milestones) [50984 SAR]; Progress weight (fair EPC distribution, SAR value) [65100 SAR] | 65,100 | NSR | NMJ | NSR | Standard | TC | ETECHS | COM | - | - | COM | MS7 |
|  | TOA | **Trial operation and acceptance** |  |  | 2028-10-04 | 2028-12-05 |  |  |  |  |  |  |  |  |  |  |  |  |  |  |  |  |
| NMJ-T2020 |  | Trial operation (maximum 45 days) - Al Majma'ah |  | 30d | 2028-10-04 | 2028-11-14 | NMJ-T1020 | 214d | 0d | Contract cost (BOQ x payment milestones) [118962 SAR]; Progress weight (fair EPC distribution, SAR value) [97960 SAR] | 97,960 | NSR | NMJ | NSR | Standard | TC | SAR | COM | - | - | COM | MS7 |
| NMJ-T3010 |  | Taking-over application, SAR review and handover - Al Majma'ah |  | 15d | 2028-11-15 | 2028-12-05 | NMJ-T1100, NMJ-T2010, NMJ-T2020, NMJ-E1140 | 214d | 0d | Contract cost (BOQ x payment milestones) [101967 SAR]; Progress weight (fair EPC distribution, SAR value) [97960 SAR] | 97,960 | NSR | NMJ | NSR | Standard | TC | SAR | COM | - | - | COM | MS7 |
|  | HKA | **KAEC (HHR)** |  |  | 2029-03-28 | 2029-07-10 |  |  |  |  |  |  |  |  |  |  |  |  |  |  |  |  |
| HKA-T1100 |  | MS6 SAT complete (10%) - KAEC | milestone | 0d | 2029-05-08 | 2029-05-08 | HKA-T1020 | 100d | 30d |  |  | HHR | HKA | HHR | Standard | TC | SAR | MS | - | - | MS | MS6 |
| HKA-T3100 |  | MS7 Station accepted - final acceptance and handover (10%) - KAEC | milestone | 0d | 2029-07-10 | 2029-07-10 | HKA-T3010 | 70d | 49d |  |  | HHR | HKA | HHR | Standard | TC | SAR | MS | - | - | MS | MS7 |
|  | TST | **Testing and commissioning** |  |  | 2029-03-28 | 2029-05-08 |  |  |  |  |  |  |  |  |  |  |  |  |  |  |  |  |
| HKA-T1010 |  | Pre-commissioning and loop checks - KAEC |  | 10d | 2029-03-28 | 2029-04-10 | HKA-C2100 | 70d | 0d | Contract cost (BOQ x payment milestones) [222575 SAR]; Progress weight (fair EPC distribution, SAR value) [159960 SAR] | 159,960 | HHR | HKA | HHR | Standard | TC | ETECHS | COM | - | - | COM | MS6 |
| HKA-T1020 |  | Site acceptance test (SAT) and commissioning - KAEC |  | 15d | 2029-04-11 | 2029-05-08 | HKA-T1010 | 70d | 0d | Contract cost (BOQ x payment milestones) [333863 SAR]; Progress weight (fair EPC distribution, SAR value) [213900 SAR] | 213,900 | HHR | HKA | HHR | Standard | TC | ETECHS | COM | - | - | COM | MS6 |
|  | TRN | **Training** |  |  | 2029-05-09 | 2029-05-22 |  |  |  |  |  |  |  |  |  |  |  |  |  |  |  |  |
| HKA-T2010 |  | Operator and maintenance training - KAEC |  | 10d | 2029-05-09 | 2029-05-22 | HKA-T1020 | 90d | 20d | Contract cost (BOQ x payment milestones) [83466 SAR]; Progress weight (fair EPC distribution, SAR value) [106640 SAR] | 106,640 | HHR | HKA | HHR | Standard | TC | ETECHS | COM | - | - | COM | MS7 |

| ID | WBS | Activity | Type | Duration | Start | Finish | Predecessors | Total float | Free float | Resources | Cost | Area | Station | Railway | Priority | Discipline | Responsibility | EPC phase | Design stage | Submittal or approval | Programme phase | Payment milestone |
| --- | --- | --- | --- | --- | --- | --- | --- | --- | --- | --- | --- | --- | --- | --- | --- | --- | --- | --- | --- | --- | --- | --- |
|  | TOA | **Trial operation and acceptance** |  |  | 2029-05-09 | 2029-07-10 |  |  |  |  |  |  |  |  |  |  |  |  |  |  |  |  |
| HKA-T2020 |  | Trial operation (maximum 45 days) - KAEC |  | 30d | 2029-05-09 | 2029-06-19 | HKA-T1020 | 70d | 0d | Contract cost (BOQ x payment milestones) [194753 SAR]; Progress weight (fair EPC distribution, SAR value) [159960 SAR] | 159,960 | HHR | HKA | HHR | Standard | TC | SAR | COM | - | - | COM | MS7 |
| HKA-T3010 |  | Taking-over application, SAR review and handover - KAEC |  | 15d | 2029-06-20 | 2029-07-10 | HKA-T1100, HKA-T2010, HKA-T2020, HKA-E1140 | 70d | 0d | Contract cost (BOQ x payment milestones) [166931 SAR]; Progress weight (fair EPC distribution, SAR value) [159960 SAR] | 159,960 | HHR | HKA | HHR | Standard | TC | SAR | COM | - | - | COM | MS7 |
|  | HMD | **Madinah (HHR)** |  |  | 2029-04-03 | 2029-07-16 |  |  |  |  |  |  |  |  |  |  |  |  |  |  |  |  |
| HMD-T1100 |  | MS6 SAT complete (10%) - Madinah | milestone | 0d | 2029-05-14 | 2029-05-14 | HMD-T1020 | 96d | 30d |  |  | HHR | HMD | HHR | Standard | TC | SAR | MS | - | - | MS | MS6 |
| HMD-T3100 |  | MS7 Station accepted - final acceptance and handover (10%) - Madinah | milestone | 0d | 2029-07-16 | 2029-07-16 | HMD-T3010 | 66d | 45d |  |  | HHR | HMD | HHR | Standard | TC | SAR | MS | - | - | MS | MS7 |
|  | TST | **Testing and commissioning** |  |  | 2029-04-03 | 2029-05-14 |  |  |  |  |  |  |  |  |  |  |  |  |  |  |  |  |
| HMD-T1010 |  | Pre-commissioning and loop checks - Madinah |  | 10d | 2029-04-03 | 2029-04-16 | HMD-C2100 | 66d | 0d | Contract cost (BOQ x payment milestones) [222485 SAR]; Progress weight (fair EPC distribution, SAR value) [159960 SAR] | 159,960 | HHR | HMD | HHR | Standard | TC | ETECHS | COM | - | - | COM | MS6 |
| HMD-T1020 |  | Site acceptance test (SAT) and commissioning - Madinah |  | 15d | 2029-04-17 | 2029-05-14 | HMD-T1010 | 66d | 0d | Contract cost (BOQ x payment milestones) [333728 SAR]; Progress weight (fair EPC distribution, SAR value) [213280 SAR] | 213,280 | HHR | HMD | HHR | Standard | TC | ETECHS | COM | - | - | COM | MS6 |
|  | TRN | **Training** |  |  | 2029-05-15 | 2029-05-28 |  |  |  |  |  |  |  |  |  |  |  |  |  |  |  |  |
| HMD-T2010 |  | Operator and maintenance training - Madinah |  | 10d | 2029-05-15 | 2029-05-28 | HMD-T1020 | 86d | 20d | Contract cost (BOQ x payment milestones) [83432 SAR]; Progress weight (fair EPC distribution, SAR value) [106640 SAR] | 106,640 | HHR | HMD | HHR | Standard | TC | ETECHS | COM | - | - | COM | MS7 |
|  | TOA | **Trial operation and acceptance** |  |  | 2029-05-15 | 2029-07-16 |  |  |  |  |  |  |  |  |  |  |  |  |  |  |  |  |
| HMD-T2020 |  | Trial operation (maximum 45 days) - Madinah |  | 30d | 2029-05-15 | 2029-06-25 | HMD-T1020 | 66d | 0d | Contract cost (BOQ x payment milestones) [194675 SAR]; Progress weight (fair EPC distribution, SAR value) [159960 SAR] | 159,960 | HHR | HMD | HHR | Standard | TC | SAR | COM | - | - | COM | MS7 |
| HMD-T3010 |  | Taking-over application, SAR review and handover - Madinah |  | 15d | 2029-06-26 | 2029-07-16 | HMD-T1100, HMD-T2010, HMD-T2020, HMD-E1140 | 66d | 0d | Contract cost (BOQ x payment milestones) [166864 SAR]; Progress weight (fair EPC distribution, SAR value) [159960 SAR] | 159,960 | HHR | HMD | HHR | Standard | TC | SAR | COM | - | - | COM | MS7 |
|  | EAB | **Abqaiq (EWR)** |  |  | 2029-01-23 | 2029-05-01 |  |  |  |  |  |  |  |  |  |  |  |  |  |  |  |  |
| EAB-T1100 |  | MS6 SAT complete (10%) - Abqaiq | milestone | 0d | 2029-02-19 | 2029-02-19 | EAB-T1020 | 150d | 30d |  |  | EWR | EAB | EWR | Standard | TC | SAR | MS | - | - | MS | MS6 |
| EAB-T3100 |  | MS7 Station accepted - final acceptance and handover (10%) - Abqaiq | milestone | 0d | 2029-05-01 | 2029-05-01 | EAB-T3010 | 120d | 99d |  |  | EWR | EAB | EWR | Standard | TC | SAR | MS | - | - | MS | MS7 |
|  | TST | **Testing and commissioning** |  |  | 2029-01-23 | 2029-02-19 |  |  |  |  |  |  |  |  |  |  |  |  |  |  |  |  |
| EAB-T1010 |  | Pre-commissioning and loop checks - Abqaiq |  | 6d | 2029-01-23 | 2029-01-30 | EAB-C2100 | 120d | 0d | Contract cost (BOQ x payment milestones) [80227 SAR]; Progress weight (fair EPC distribution, SAR value) [57660 SAR] | 57,660 | EWR | EAB | EWR | Standard | TC | ETECHS | COM | - | - | COM | MS6 |
| EAB-T1020 |  | Site acceptance test (SAT) and commissioning - Abqaiq |  | 9d | 2029-01-31 | 2029-02-19 | EAB-T1010 | 120d | 0d | Contract cost (BOQ x payment milestones) [120341 SAR]; Progress weight (fair EPC distribution, SAR value) [76880 SAR] | 76,880 | EWR | EAB | EWR | Standard | TC | ETECHS | COM | - | - | COM | MS6 |
|  | TRN | **Training** |  |  | 2029-02-20 | 2029-03-06 |  |  |  |  |  |  |  |  |  |  |  |  |  |  |  |  |
| EAB-T2010 |  | Operator and maintenance training - Abqaiq |  | 10d | 2029-02-20 | 2029-03-06 | EAB-T1020 | 140d | 20d | Contract cost (BOQ x payment milestones) [30085 SAR]; Progress weight (fair EPC distribution, SAR value) [38440 SAR] | 38,440 | EWR | EAB | EWR | Standard | TC | ETECHS | COM | - | - | COM | MS7 |
|  | TOA | **Trial operation and acceptance** |  |  | 2029-02-20 | 2029-05-01 |  |  |  |  |  |  |  |  |  |  |  |  |  |  |  |  |
| EAB-T2020 |  | Trial operation (maximum 45 days) - Abqaiq |  | 30d | 2029-02-20 | 2029-04-03 | EAB-T1020 | 120d | 0d | Contract cost (BOQ x payment milestones) [70199 SAR]; Progress weight (fair EPC distribution, SAR value) [57660 SAR] | 57,660 | EWR | EAB | EWR | Standard | TC | SAR | COM | - | - | COM | MS7 |
| EAB-T3010 |  | Taking-over application, SAR review and handover - Abqaiq |  | 15d | 2029-04-04 | 2029-05-01 | EAB-T1100, EAB-T2010, EAB-T2020, EAB-E1140 | 120d | 0d | Contract cost (BOQ x payment milestones) [60170 SAR]; Progress weight (fair EPC distribution, SAR value) [57660 SAR] | 57,660 | EWR | EAB | EWR | Standard | TC | SAR | COM | - | - | COM | MS7 |

| ID | WBS | Activity | Type | Duration | Start | Finish | Predecessors | Total float | Free float | Resources | Cost | Area | Station | Railway | Priority | EPC phase | Discipline | Responsibility | Design stage | Submittal or approval | Payment milestone | Programme phase |
| --- | --- | --- | --- | --- | --- | --- | --- | --- | --- | --- | --- | --- | --- | --- | --- | --- | --- | --- | --- | --- | --- | --- |
|  | NHL | **Hail (NSR)** |  |  | 2029-03-07 | 2029-06-05 |  |  |  |  |  |  |  |  |  |  |  |  |  |  |  |  |
| NHL-T1100 |  | MS6 SAT complete (10%) - Hail | milestone | 0d | 2029-03-27 | 2029-03-27 | NHL-T1020 | 125d | 30d |  |  | NSR | NHL | NSR | Standard | MS | TC | SAR | - | - | MS6 | MS |
| NHL-T3100 |  | MS7 Station accepted - final acceptance and handover (10%) - Hail | milestone | 0d | 2029-06-05 | 2029-06-05 | NHL-T3010 | 95d | 74d |  |  | NSR | NHL | NSR | Standard | MS | TC | SAR | - | - | MS7 | MS |
|  | TST | **Testing and commissioning** |  |  | 2029-03-07 | 2029-03-27 |  |  |  |  |  |  |  |  |  |  |  |  |  |  |  |  |
| NHL-T1010 |  | Pre-commissioning and loop checks - Hail |  | 6d | 2029-03-07 | 2029-03-14 | NHL-C2100 | 95d | 0d | Contract cost (BOQ x payment milestones) [135957 SAR]; Progress weight (fair EPC distribution, SAR value) [97960 SAR] | 97,960 | NSR | NHL | NSR | Standard | COM | TC | ETECHS | - | - | MS6 | COM |
| NHL-T1020 |  | Site acceptance test (SAT) and commissioning - Hail |  | 9d | 2029-03-15 | 2029-03-27 | NHL-T1010 | 95d | 0d | Contract cost (BOQ x payment milestones) [203935 SAR]; Progress weight (fair EPC distribution, SAR value) [130820 SAR] | 130,820 | NSR | NHL | NSR | Standard | COM | TC | ETECHS | - | - | MS6 | COM |
|  | TRN | **Training** |  |  | 2029-03-28 | 2029-04-10 |  |  |  |  |  |  |  |  |  |  |  |  |  |  |  |  |
| NHL-T2010 |  | Operator and maintenance training - Hail |  | 10d | 2029-03-28 | 2029-04-10 | NHL-T1020 | 115d | 20d | Contract cost (BOQ x payment milestones) [50984 SAR]; Progress weight (fair EPC distribution, SAR value) [65100 SAR] | 65,100 | NSR | NHL | NSR | Standard | COM | TC | ETECHS | - | - | MS7 | COM |
|  | TOA | **Trial operation and acceptance** |  |  | 2029-03-28 | 2029-06-05 |  |  |  |  |  |  |  |  |  |  |  |  |  |  |  |  |
| NHL-T2020 |  | Trial operation (maximum 45 days) - Hail |  | 30d | 2029-03-28 | 2029-05-15 | NHL-T1020 | 95d | 0d | Contract cost (BOQ x payment milestones) [118962 SAR]; Progress weight (fair EPC distribution, SAR value) [97960 SAR] | 97,960 | NSR | NHL | NSR | Standard | COM | TC | SAR | - | - | MS7 | COM |
| NHL-T3010 |  | Taking-over application, SAR review and handover - Hail |  | 15d | 2029-05-16 | 2029-06-05 | NHL-T1100, NHL-T2010, NHL-T2020, NHL-E1140 | 95d | 0d | Contract cost (BOQ x payment milestones) [101967 SAR]; Progress weight (fair EPC distribution, SAR value) [97960 SAR] | 97,960 | NSR | NHL | NSR | Standard | COM | TC | SAR | - | - | MS7 | COM |
|  | NJF | **Al Jouf (NSR)** |  |  | 2029-05-15 | 2029-08-06 |  |  |  |  |  |  |  |  |  |  |  |  |  |  |  |  |
| NJF-T1100 |  | MS6 SAT complete (10%) - Al Jouf | milestone | 0d | 2029-06-04 | 2029-06-04 | NJF-T1020 | 81d | 30d |  |  | NSR | NJF | NSR | Standard | MS | TC | SAR | - | - | MS6 | MS |
| NJF-T3100 |  | MS7 Station accepted - final acceptance and handover (10%) - Al Jouf | milestone | 0d | 2029-08-06 | 2029-08-06 | NJF-T3010 | 51d | 30d |  |  | NSR | NJF | NSR | Standard | MS | TC | SAR | - | - | MS7 | MS |
|  | TST | **Testing and commissioning** |  |  | 2029-05-15 | 2029-06-04 |  |  |  |  |  |  |  |  |  |  |  |  |  |  |  |  |
| NJF-T1010 |  | Pre-commissioning and loop checks - Al Jouf |  | 6d | 2029-05-15 | 2029-05-22 | NJF-C2100 | 51d | 0d | Contract cost (BOQ x payment milestones) [136914 SAR]; Progress weight (fair EPC distribution, SAR value) [98580 SAR] | 98,580 | NSR | NJF | NSR | Standard | COM | TC | ETECHS | - | - | MS6 | COM |
| NJF-T1020 |  | Site acceptance test (SAT) and commissioning - Al Jouf |  | 9d | 2029-05-23 | 2029-06-04 | NJF-T1010 | 51d | 0d | Contract cost (BOQ x payment milestones) [205371 SAR]; Progress weight (fair EPC distribution, SAR value) [131440 SAR] | 131,440 | NSR | NJF | NSR | Standard | COM | TC | ETECHS | - | - | MS6 | COM |
|  | TRN | **Training** |  |  | 2029-06-05 | 2029-06-18 |  |  |  |  |  |  |  |  |  |  |  |  |  |  |  |  |
| NJF-T2010 |  | Operator and maintenance training - Al Jouf |  | 10d | 2029-06-05 | 2029-06-18 | NJF-T1020 | 71d | 20d | Contract cost (BOQ x payment milestones) [51343 SAR]; Progress weight (fair EPC distribution, SAR value) [65720 SAR] | 65,720 | NSR | NJF | NSR | Standard | COM | TC | ETECHS | - | - | MS7 | COM |
|  | TOA | **Trial operation and acceptance** |  |  | 2029-06-05 | 2029-08-06 |  |  |  |  |  |  |  |  |  |  |  |  |  |  |  |  |
| NJF-T2020 |  | Trial operation (maximum 45 days) - Al Jouf |  | 30d | 2029-06-05 | 2029-07-16 | NJF-T1020 | 51d | 0d | Contract cost (BOQ x payment milestones) [119800 SAR]; Progress weight (fair EPC distribution, SAR value) [98580 SAR] | 98,580 | NSR | NJF | NSR | Standard | COM | TC | SAR | - | - | MS7 | COM |
| NJF-T3010 |  | Taking-over application, SAR review and handover - Al Jouf |  | 15d | 2029-07-17 | 2029-08-06 | NJF-T1100, NJF-T2010, NJF-T2020, NJF-E1140 | 51d | 0d | Contract cost (BOQ x payment milestones) [102685 SAR]; Progress weight (fair EPC distribution, SAR value) [98580 SAR] | 98,580 | NSR | NJF | NSR | Standard | COM | TC | SAR | - | - | MS7 | COM |
|  | NQR | **Al Qurayyat (NSR)** |  |  | 2029-06-26 | 2029-09-17 |  |  |  |  |  |  |  |  |  |  |  |  |  |  |  |  |
| NQR-T1100 |  | MS6 SAT complete (10%) - Al Qurayyat | milestone | 0d | 2029-07-16 | 2029-07-16 | NQR-T1020 | 51d | 30d |  |  | NSR | NQR | NSR | Standard | MS | TC | SAR | - | - | MS6 | MS |
| NQR-T3100 |  | MS7 Station accepted - final acceptance and handover (10%) - Al Qurayyat | milestone | 0d | 2029-09-17 | 2029-09-17 | NQR-T3010 | 21d | 0d |  |  | NSR | NQR | NSR | Standard | MS | TC | SAR | - | - | MS7 | MS |

| ID | WBS | Activity | Duration | Start | Finish | Predecessors | Total float | Free float | Resources | Cost | Area | Station | Railway | Priority | Discipline | Responsibility | EPC phase | Design stage | Submittal or approval | Programme phase | Payment milestone |
| --- | --- | --- | --- | --- | --- | --- | --- | --- | --- | --- | --- | --- | --- | --- | --- | --- | --- | --- | --- | --- | --- |
|  | TST | **Testing and commissioning** |  | 2029-06-26 | 2029-07-16 |  |  |  |  |  |  |  |  |  |  |  |  |  |  |  |  |
| NQR-T1010 |  | Pre-commissioning and loop checks - Al Qurayyat | 6d | 2029-06-26 | 2029-07-03 | NQR-C2100 | 21d | 0d | Contract cost (BOQ x payment milestones) [135957 SAR]; Progress weight (fair EPC distribution, SAR value) [97960 SAR] | 97,960 | NSR | NQR | NSR | Standard | TC | ETECHS | COM | - | - | COM | MS6 |
| NQR-T1020 |  | Site acceptance test (SAT) and commissioning - Al Qurayyat | 9d | 2029-07-04 | 2029-07-16 | NQR-T1010 | 21d | 0d | Contract cost (BOQ x payment milestones) [203935 SAR]; Progress weight (fair EPC distribution, SAR value) [130820 SAR] | 130,820 | NSR | NQR | NSR | Standard | TC | ETECHS | COM | - | - | COM | MS6 |
|  | TRN | **Training** |  | 2029-07-17 | 2029-07-30 |  |  |  |  |  |  |  |  |  |  |  |  |  |  |  |  |
| NQR-T2010 |  | Operator and maintenance training - Al Qurayyat | 10d | 2029-07-17 | 2029-07-30 | NQR-T1020 | 41d | 20d | Contract cost (BOQ x payment milestones) [50984 SAR]; Progress weight (fair EPC distribution, SAR value) [65100 SAR] | 65,100 | NSR | NQR | NSR | Standard | TC | ETECHS | COM | - | - | COM | MS7 |
|  | TOA | **Trial operation and acceptance** |  | 2029-07-17 | 2029-09-17 |  |  |  |  |  |  |  |  |  |  |  |  |  |  |  |  |
| NQR-T2020 |  | Trial operation (maximum 45 days) - Al Qurayyat | 30d | 2029-07-17 | 2029-08-27 | NQR-T1020 | 21d | 0d | Contract cost (BOQ x payment milestones) [118962 SAR]; Progress weight (fair EPC distribution, SAR value) [97960 SAR] | 97,960 | NSR | NQR | NSR | Standard | TC | SAR | COM | - | - | COM | MS7 |
| NQR-T3010 |  | Taking-over application, SAR review and handover - Al Qurayyat | 15d | 2029-08-28 | 2029-09-17 | NQR-T1100, NQR-T2010, NQR-T2020, NQR-E1140 | 21d | 0d | Contract cost (BOQ x payment milestones) [101967 SAR]; Progress weight (fair EPC distribution, SAR value) [97960 SAR] | 97,960 | NSR | NQR | NSR | Standard | TC | SAR | COM | - | - | COM | MS7 |

## Activity codes

| Code | Value | Meaning |
| --- | --- | --- |
| Area | PRJ | Project level |
| Design stage | - | Not a design stage |
| Design stage | As-built | As-built and O&M |
| Design stage | Concept | Concept design |
| Design stage | Detailed | Detailed design |
| Design stage | HCIS | HCIS documentation |
| Design stage | IFC | IFC and shop drawings |
| Design stage | POC | Proof of concept |
| Design stage | Preliminary | Preliminary design |
| Design stage | Survey | Site survey |
| Discipline | ACC | Access control and intercom |
| Discipline | CCTV | CCTV system |
| Discipline | CIVIL | Civil works |
| Discipline | DOCS | Design documentation |
| Discipline | PM | Project management and logistics |
| Discipline | TC | Testing, commissioning and handover |
| Discipline | UPSNET | UPS, network and cabinets |
| Discipline | VMS | Video management and wall |
| EPC phase | COM | Commissioning and handover |
| EPC phase | CON | Construction |
| EPC phase | ENG | Engineering |
| EPC phase | MS | Milestone |
| EPC phase | PMG | Project management |
| EPC phase | PRO | Procurement |
| Payment milestone | - | Not a payment milestone |
| Payment milestone | MS1 | MS1 Mobilization |
| Payment milestone | MS2 | MS2 Engineering submittal |
| Payment milestone | MS3 | MS3 SAR approval of engineering |
| Payment milestone | MS4 | MS4 Material delivery |
| Payment milestone | MS5 | MS5 Installation |
| Payment milestone | MS6 | MS6 Testing and commissioning (SAT) |
| Payment milestone | MS7 | MS7 Final acceptance and handover |
| Priority | Priority 1 | Priority 1 - Makkah and Riyadh (Thumamah) |
| Priority | Priority 2 | Priority 2 - Riyadh (Malaz) |
| Programme phase | COM | Testing, commissioning and handover |
| Programme phase | CON | Construction and installation |
| Programme phase | DES | Design including survey (months 3-6) |
| Programme phase | ENA | Enabling works |
| Programme phase | MOB | Mobilization and survey permit (months 1-2) |
| Programme phase | MS | Milestones |
| Programme phase | PMG | Project management and closeout |
| Programme phase | POC | Proof of concept - Riyadh (Thumamah) |
| Programme phase | PRO | Procurement and supply |
| Railway | ALL | All railways |
| Responsibility | SAR/HCIS | SAR and HCIS |
| Station | EAB | Abqaiq (EWR) |
| Station | EDM | Dammam (EWR) |
| Station | EHF | Hufuf (EWR) |
| Station | ERY | Riyadh (Malaz) (EWR) |
| Station | HJD | Jeddah (HHR) |
| Station | HKA | KAEC (HHR) |
| Station | HMD | Madinah (HHR) |
| Station | HMK | Makkah (HHR) |
| Station | NHL | Hail (NSR) |
| Station | NJF | Al Jouf (NSR) |
| Station | NMJ | Al Majma'ah (NSR) |
| Station | NQR | Al Qurayyat (NSR) |
| Station | NQS | Al Qassim (NSR) |
| Station | NRY | Riyadh (Thumamah) (NSR) |
| Station | PRJ | Project level |
| Submittal or approval | - | Not applicable |
